| entry | phase | location | area | trade | activity_code | activity_name | start | finish |
| --- | --- | --- | --- | --- | --- | --- | --- | --- |
| 1 | Weather Days | Weather | Weather | McGough | WD | Weather Days (3 days per month) | 25-Sep-2026 | 04-Jan-2027 |
| 2 | Milestone | All | Building | McGough | M-10 | SWPPP | 27-Mar-2025 | 09-Apr-2025 |
| 3 | Milestone | All | Building | McGough | M-11 | Substantial Completion | 05-May-2027 | 05-May-2027 |
| 4 | Submittals | All | Shop Drawings | McGough | SUB-27 | Submit Store Front Shop Drawings | 03-Oct-2025 | 16-Oct-2025 |
| 5 | Milestone | Design | Building | Architect | M-1 | DD 1 Safety & Risk Assessment | 04-Sep-2024 | 05-Sep-2024 |
| 6 | Milestone | Design | Building | Architect | M-2 | DD 2 | 19-Sep-2024 | 19-Sep-2024 |
| 7 | Milestone | Design | Building | Architect | M-3 | DD 3 | 17-Oct-2024 | 17-Oct-2024 |
| 8 | Milestone | Design | Building | Architect | M-4 | Architect - DD 4 | 14-Nov-2024 | 14-Nov-2024 |
| 9 | Milestone | Design | Building | Architect | M-5 | DD Package Submission Owner & Cost Estimator | 11-Dec-2024 | 18-Dec-2024 |
| 10 | Milestone | Design | Building | Architect | M-6 | Early Site Utility, Grading, Foundation Package & Underfloor MEP | 19-Dec-2024 | 26-Mar-2025 |
| 11 | Milestone | Design | Building | Architect | M-7 | Start CD Package | 19-Dec-2024 | 19-Dec-2024 |
| 12 | Submittals | All | Product Data | McGough | SUB-28 | Submit Store Front Product Data | 10-Mar-2025 | 21-Mar-2025 |
| 13 | Submittals | All | Shop Drawings | McGough | SUB-29 | Submit Steel Structure Shop Drawings | 03-Oct-2025 | 16-Oct-2025 |
| 14 | Milestone | Design | Building | Owner | OW-6 | Owner Comments Due | 30-Jan-2025 | 12-Feb-2025 |
| 15 | Milestone | Design | Building | Owner | OW-5 | Owner DD & GMP Signoff | 13-Feb-2025 | 03-Mar-2025 |
| 16 | Milestone | Design | Building | Owner | OW-4 | DD Final Page Turn & Owner Sign-off | 26-Feb-2025 | 26-Feb-2025 |
| 17 | Milestone | Design | Building | Owner | OW-3 | Issue Complete CD Package | 27-Mar-2025 | 09-Jul-2025 |
| 18 | Milestone | Design | Building | Architect | M-8 | Review of Early Site Utility, Grading, Foundation Package & Underfloor MEP for Contracts | 27-Mar-2025 | 22-May-2025 |
| 19 | Milestone | Design | Building | Architect | M-9 | Review of CD to Issue Contracts | 10-Jul-2025 | 04-Sep-2025 |
| 20 | Submittals | All | Product Data | McGough | SUB-30 | Submit Steel Structure Product Data | 10-Mar-2025 | 21-Mar-2025 |
| 21 | Submittals | All | Shop Drawings | McGough | SUB-31 | Submit Security Glazing Shop Drawings | 03-Oct-2025 | 16-Oct-2025 |
| 22 | Submittals | All | Product Data | McGough | SUB-32 | Submit Security Glazing Product Data | 10-Mar-2025 | 21-Mar-2025 |
| 23 | Submittals | All | Shop Drawings | McGough | SUB-33 | Submit Overhead Door Shop Drawings | 03-Oct-2025 | 16-Oct-2025 |
| 24 | Submittals | All | Product Data | McGough | SUB-34 | Submit Overhead Door Product Data | 10-Mar-2025 | 21-Mar-2025 |
| 25 | Submittals | All | Shop Drawings | McGough | SUB-35 | Submit Kitchen Equipment Shop Drawings | 03-Oct-2025 | 16-Oct-2025 |
| 26 | Submittals | All | Product Data | McGough | SUB-36 | Submit Kitchen Equipment Product Data | 10-Mar-2025 | 21-Mar-2025 |
| 27 | Submittals | All | Shop Drawings | McGough | SUB-37 | Submit Generator Shop Drawings | 23-Jun-2025 | 07-Jul-2025 |
| 28 | Submittals | All | Product Data | McGough | SUB-38 | Submit Generator Product Data | 10-Mar-2025 | 21-Mar-2025 |
| 29 | Submittals | All | Shop Drawings | McGough | SUB-39 | Submit Electrical Switchgear Shop Drawings | 23-Jun-2025 | 07-Jul-2025 |
| 30 | Submittals | All | Product Data | McGough | SUB-40 | Submit Electrical Switchgear Product Data | 10-Mar-2025 | 21-Mar-2025 |
| 31 | Submittals | All | Shop Drawings | McGough | SUB-41 | Submit Curtainwall Shop Drawings | 03-Oct-2025 | 16-Oct-2025 |
| 32 | Submittals | All | Product Data | McGough | SUB-42 | Submit Curtainwall Product Data | 10-Mar-2025 | 21-Mar-2025 |
| 33 | Submittals | All | Shop Drawings | McGough | SUB-43 | Submit Chiller Shop Drawings | 23-Jun-2025 | 07-Jul-2025 |
| 34 | Submittals | All | Product Data | McGough | SUB-44 | Submit Chiller Product Data | 10-Mar-2025 | 21-Mar-2025 |
| 35 | Submittals | All | Shop Drawings | McGough | SUB-45 | Submit Boilers Shop Drawings | 23-Jun-2025 | 07-Jul-2025 |
| 36 | Submittals | All | Product Data | McGough | SUB-46 | Submit Boilers Product Data | 10-Mar-2025 | 21-Mar-2025 |
| 37 | Submittals | All | Shop Drawings | McGough | SUB-47 | Submit ATS Shop Drawings | 23-Jun-2025 | 07-Jul-2025 |
| 38 | Submittals | All | Product Data | McGough | SUB-48 | Submit ATS Product Data | 10-Mar-2025 | 21-Mar-2025 |
| 39 | Procurement | Procurement | Material | Owner | OW-2 | Procure Transformer (by others) | 18-Dec-2024 | 08-Aug-2025 |
| 40 | Procurement | Procurement | Material | Electrical | EL-1 | Procure & Fabricate Generator | 15-Jul-2025 | 29-Jul-2026 |
| 41 | Procurement | Procurement | Material | Electrical | EL-2 | Procure & Fabricate Electrical Switchgear | 15-Jul-2025 | 29-Jul-2026 |
| 42 | Procurement | Procurement | Material | Electrical | EL-3 | Procure & Fabricate ATS | 15-Jul-2025 | 29-Jul-2026 |
| 43 | Interiors | RI & Finishes | Zone 1 | Mechanical | MEC-2 | Hook-up/Final Connections Chillers - Mechanical Yard | 12-May-2026 | 02-Jun-2026 |
| 44 | Interiors | RI & Finishes | Zone 5 | Mechanical | MEC-1 | Install AHU 1 (Roof) - Zone 5 | 07-Oct-2026 | 13-Oct-2026 |
| 45 | Interiors | RI & Finishes | Zone 6 | Mechanical | MEC-1 | Install AHU 2 (Roof) - Zone 6 | 14-Oct-2026 | 20-Oct-2026 |
| 46 | Procurement | Procurement | Material | Steel | SL-1 | Procure & Fabricate Structural Steel | 24-Oct-2025 | 13-Jan-2026 |
| 47 | Procurement | Procurement | Material | Glass/Glazing | PRO-1 | Procure & Fabricate Security Glazing | 24-Oct-2025 | 24-Feb-2026 |
| 48 | Procurement | Procurement | Material | OH Door | PRO-26 | Procure & Fabricate Overhead Door (4) | 24-Oct-2025 | 10-Mar-2026 |
| 49 | Procurement | Procurement | Material | Glass/Glazing | PRO-2 | Procure & Fabricate Curtainwall | 24-Oct-2025 | 24-Mar-2026 |
| 50 | Procurement | Procurement | Material | Glass/Glazing | PRO-3 | Procure & Fabricate Store Fronts | 24-Oct-2025 | 24-Mar-2026 |
| 51 | Procurement | Procurement | Material | Doors & Hardware | DOOR-3 | Procure & Fabricate Antiligature Door Hardware/Kingsway Kits | 28-Jan-2026 | 18-Jun-2026 |
| 52 | Procurement | Procurement | Material | Kitchen Equip | PRO-4 | Procure & Fabricate Kitchen Equipment | 02-Feb-2026 | 27-Apr-2026 |
| 53 | Submittals | All | Shop Drawings | McGough | SUB-49 | Submit Antiligature Door Hardware/Kingsway Kits Shop Drawings | 03-Oct-2025 | 16-Oct-2025 |
| 54 | Submittals | All | Product Data | McGough | SUB-50 | Submit Antiligature Door Hardware/Kingsway Kits Product Data | 10-Mar-2025 | 21-Mar-2025 |
| 55 | Submittals | All | Shop Drawings | McGough | SUB-51 | Submit AHU Shop Drawings | 23-Jun-2025 | 07-Jul-2025 |
| 56 | Submittals | All | Product Data | McGough | SUB-52 | Submit AHU Product Data | 10-Mar-2025 | 21-Mar-2025 |
| 57 | Interiors | RI & Finishes | Zone 6 | McGough | MG-1 | QA/QC Complete List - Zone 6 | 29-Apr-2027 | 05-May-2027 |
| 58 | Interiors | RI & Finishes | Zone 5 | McGough | MG-1 | QA/QC Complete List - Zone 5 | 23-Feb-2027 | 01-Mar-2027 |
| 59 | Submittals | All | Shop Drawings | Architect | SUB-1 | Owner Approve Chiller Shop Drawings | 08-Jul-2025 | 14-Jul-2025 |
| 60 | Submittals | All | Shop Drawings | Architect | SUB-2 | Owner Approve AHU Shop Drawings | 08-Jul-2025 | 14-Jul-2025 |
| 61 | Submittals | All | Shop Drawings | Architect | SUB-3 | Owner Approve Generator Shop Drawings | 08-Jul-2025 | 14-Jul-2025 |
| 62 | Submittals | All | Shop Drawings | Architect | SUB-4 | Owner Approve Electrical Switchgear Shop Drawings | 08-Jul-2025 | 14-Jul-2025 |
| 63 | Submittals | All | Shop Drawings | Architect | SUB-5 | Owner Approve ATS Shop Drawings | 08-Jul-2025 | 14-Jul-2025 |
| 64 | Submittals | All | Shop Drawings | Architect | SUB-6 | Owner Approve Boilers Shop Drawings | 08-Jul-2025 | 14-Jul-2025 |
| 65 | Interiors | RI & Finishes | Zone 4 | McGough | MG-1 | QA/QC Complete List - Zone 4 | 28-Aug-2026 | 03-Sep-2026 |
| 66 | Interiors | RI & Finishes | Zone 3 | McGough | MG-1 | QA/QC Complete List - Zone 3 | 17-Jul-2026 | 23-Jul-2026 |
| 67 | Interiors | RI & Finishes | Zone 2 | McGough | MG-1 | QA/QC Complete List - Zone 2 | 14-Jul-2026 | 20-Jul-2026 |
| 68 | Interiors | RI & Finishes | Zone 1 | McGough | MG-1 | QA/QC Complete List - Zone 1 | 22-Jul-2026 | 18-Aug-2026 |
| 69 | Procurement | All | Pre-Qual | McGough | PRO-5 | Pre-Qual Structural Steel Sub | 18-Dec-2024 | 27-Dec-2024 |
| 70 | Procurement | All | Pre-Qual | McGough | PRO-6 | Pre-Qual Store Fronts Sub | 18-Dec-2024 | 27-Dec-2024 |

| entry | phase | location | area | trade | activity_code | activity_name | start | finish |
| --- | --- | --- | --- | --- | --- | --- | --- | --- |
| 71 | Procurement | All | Pre-Qual | McGough | PRO-7 | Pre-Qual Security Glazing Sub | 18-Dec-2024 | 27-Dec-2024 |
| 72 | Submittals | All | Shop Drawings | Architect | SUB-7 | Owner Approve Curtainwall Shop Drawings | 17-Oct-2025 | 23-Oct-2025 |
| 73 | Submittals | All | Shop Drawings | Architect | SUB-8 | Owner Approve Store Front Shop Drawings | 17-Oct-2025 | 23-Oct-2025 |
| 74 | Submittals | All | Shop Drawings | Architect | SUB-9 | Owner Approve Security Glazing Shop Drawings | 17-Oct-2025 | 23-Oct-2025 |
| 75 | Submittals | All | Shop Drawings | Architect | SUB-10 | Owner Approve Steel Structure Shop Drawings | 17-Oct-2025 | 23-Oct-2025 |
| 76 | Submittals | All | Shop Drawings | Architect | SUB-11 | Owner Approve Overhead Door Shop Drawings | 17-Oct-2025 | 23-Oct-2025 |
| 77 | Submittals | All | Shop Drawings | Architect | SUB-12 | Owner Approve Kitchen Equipment Shop Drawings | 17-Oct-2025 | 23-Oct-2025 |
| 78 | Submittals | All | Shop Drawings | Architect | SUB-13 | Owner Approve Antiligature Door Hardware/Kingsway Kits Shop Drawings | 17-Oct-2025 | 23-Oct-2025 |
| 79 | Procurement | All | Pre-Qual | McGough | PRO-8 | Pre-Qual Overhead Door Sub | 18-Dec-2024 | 27-Dec-2024 |
| 80 | Procurement | All | Pre-Qual | McGough | PRO-9 | Pre-Qual Mechanical Sub | 27-Mar-2025 | 02-Apr-2025 |
| 81 | Procurement | All | Pre-Qual | McGough | PRO-10 | Pre-Qual Kitchen Equipment Sub | 18-Dec-2024 | 27-Dec-2024 |
| 82 | Procurement | All | Pre-Qual | McGough | PRO-11 | Pre-Qual Electrical Sub | 27-Mar-2025 | 02-Apr-2025 |
| 83 | Procurement | All | Pre-Qual | McGough | PRO-12 | Pre-Qual Antiligature Door Hardware/Kingsway Kits Sub | 18-Dec-2024 | 27-Dec-2024 |
| 84 | Permits | Permits | Permits | McGough | PER-1 | Permitting - TXDot | 15-Jan-2025 | 21-May-2025 |
| 85 | Interiors | RI & Finishes | Zone 6 | McGough | MG-2 | OH MEPF Inspections - Zone 6 | 05-Jun-2026 | 05-Jun-2026 |
| 86 | Interiors | RI & Finishes | Zone 5 | McGough | MG-2 | OH MEPF Inspections - Zone 5 | 21-May-2026 | 21-May-2026 |
| 87 | Interiors | RI & Finishes | Zone 4 | McGough | MG-2 | OH MEPF Inspections - Zone 4 | 07-May-2026 | 07-May-2026 |
| 88 | Interiors | RI & Finishes | Zone 3 | McGough | MG-2 | OH MEPF Inspections - Zone 3 | 09-Apr-2026 | 09-Apr-2026 |
| 89 | Interiors | RI & Finishes | Zone 2 | McGough | MG-2 | OH MEPF Inspections - Zone 2 | 09-Apr-2026 | 09-Apr-2026 |
| 90 | Interiors | RI & Finishes | Zone 1 | McGough | MG-2 | OH MEPF Inspections - Zone 1 | 25-Mar-2026 | 25-Mar-2026 |
| 91 | Milestone | All | Building | McGough | MG-3 | Mobilization | 27-Mar-2025 | 09-Apr-2025 |
| 92 | Submittals | All | Product Data | Architect | SUB-14 | Owner Approve Curtainwall Product Data | 24-Mar-2025 | 28-Mar-2025 |
| 93 | Submittals | All | Product Data | Architect | SUB-15 | Owner Approve Store Front Product Data | 24-Mar-2025 | 28-Mar-2025 |
| 94 | Submittals | All | Product Data | Architect | SUB-16 | Owner Approve Security Glazing Product Data | 24-Mar-2025 | 28-Mar-2025 |
| 95 | Submittals | All | Product Data | Architect | SUB-17 | Owner Approve Steel Structure Product Data | 24-Mar-2025 | 28-Mar-2025 |
| 96 | Submittals | All | Product Data | Architect | SUB-18 | Owner Approve Overhead Door Product Data | 24-Mar-2025 | 28-Mar-2025 |
| 97 | Submittals | All | Product Data | Architect | SUB-19 | Owner Approve Chiller Product Data | 24-Mar-2025 | 28-Mar-2025 |
| 98 | Submittals | All | Product Data | Architect | SUB-20 | Owner Approve AHU Product Data | 24-Mar-2025 | 28-Mar-2025 |
| 99 | Submittals | All | Product Data | Architect | SUB-21 | Owner Approve Generator Product Data | 24-Mar-2025 | 28-Mar-2025 |
| 100 | Submittals | All | Product Data | Architect | SUB-22 | Owner Approve Kitchen Equipment Product Data | 24-Mar-2025 | 28-Mar-2025 |
| 101 | Submittals | All | Product Data | Architect | SUB-23 | Owner Approve Electrical Switchgear Product Data | 24-Mar-2025 | 28-Mar-2025 |
| 102 | Submittals | All | Product Data | Architect | SUB-24 | Owner Approve ATS Product Data | 24-Mar-2025 | 28-Mar-2025 |
| 103 | Submittals | All | Product Data | Architect | SUB-25 | Owner Approve Boilers Product Data | 24-Mar-2025 | 28-Mar-2025 |
| 104 | Submittals | All | Product Data | Architect | SUB-26 | Owner Approve Antiligature Door Hardware/Kingsway Kits Product Data | 24-Mar-2025 | 28-Mar-2025 |
| 105 | Procurement | All | Pre-Qual | McGough | MG-4 | McGough - Pre-Qual Curtainwall Sub | 18-Dec-2024 | 27-Dec-2024 |
| 106 | Sitework | Excavation | All | Site | SITE-1 | Backfill Select Fill - Building Pad | 12-Aug-2025 | 02-Sep-2025 |
| 107 | Sitework | Outsite | Clear & Grub | Site | SITE-2 | Clear & Grub - Building Foot Print | 23-Jun-2025 | 28-Jul-2025 |
| 108 | Sitework | Excavation | All | Site | SITE-3 | Excavate - Building Pad | 29-Jul-2025 | 11-Aug-2025 |
| 109 | Sitework | West | Playa Lake | Site | SITE-4 | Excavate - Playa Lake West | 19-Aug-2025 | 02-Sep-2025 |
| 110 | Sitework | East | Playa Lake East | Site | SITE-5 | Expand (Excavate) Existing Slopes - Playa Lake East | 29-Jul-2025 | 11-Aug-2025 |
| 111 | Sitework | West | Playa Lake | Site | SITE-6 | Grade Slopes - Playa Lake West | 03-Sep-2025 | 09-Sep-2025 |
| 112 | Sitework | East | Playa Lake East | Site | SITE-7 | Install 12" HDPE Pipe - Playa Lake East | 29-Sep-2025 | 02-Oct-2025 |
| 113 | Sitework | East | Playa Lake East | Site | SITE-7 | Install 15" HDPE Pipe - Playa Lake East | 03-Oct-2025 | 16-Oct-2025 |
| 114 | Sitework | East | Playa Lake East | Site | SITE-7 | Install 18" HDPE Pipe - Playa Lake East | 15-Sep-2025 | 26-Sep-2025 |
| 115 | Sitework | East | Playa Lake East | Site | SITE-7 | Install 24" HDPE Pipe - Playa Lake East | 08-Sep-2025 | 12-Sep-2025 |
| 116 | Sitework | East | Playa Lake East | Site | SITE-7 | Install 30" HDPE Pipe - Playa Lake East | 03-Sep-2025 | 05-Sep-2025 |
| 117 | Sitework | East | Playa Lake East | Site | SITE-8 | Install Concrete Pilot Channel - Playa Lake East | 12-Aug-2025 | 02-Sep-2025 |
| 118 | Sitework | East | Playa Lake East | Site | SITE-9 | Install Inlets (5) - Playa Lake East | 03-Oct-2025 | 23-Oct-2025 |
| 119 | Sitework | East | Playa Lake | Site | SITE-10 | Install Manholes (3) - Playa Lake East | 24-Oct-2025 | 13-Nov-2025 |
| 120 | Sitework | East | Playa Lake East | Site | SITE-11 | Install Precast Discharge w/Rip Rap - Playa Lake East | 03-Sep-2025 | 04-Sep-2025 |
| 121 | Sitework | East | Playa Lake East | Site | SITE-12 | Regrade Slopes - Playa Lake East | 12-Aug-2025 | 18-Aug-2025 |
| 122 | Utilities | All | All | Utilities | UT-1 | Excavate, Install & Backfill 8" Water Line From Peach Ave | 10-Apr-2025 | 08-May-2025 |
| 123 | Utilities | All | All | Utilities | UT-1 | Excavate, Install & Backfill 4" Gas Service From Peach Ave | 10-Apr-2025 | 08-May-2025 |
| 124 | Utilities | All | All | Utilities | UT-2 | Install 8" Waste Water From Peach Ave | 10-Apr-2025 | 07-Jul-2025 |
| 125 | Utilities | All | All | Utilities | UT-3 | Install Electric Utility Trench (Proposed) (Includes Excavate, Backfill, & Flowable Fill) | 10-Apr-2025 | 25-Jul-2025 |
| 126 | Utilities | All | All | Utilities | UT-4 | Install Fiber Line (Includes Trenching) | 09-May-2025 | 22-May-2025 |
| 127 | Sitework | Site | All | Concrete | CON-1 | Site Paving | 29-Jul-2025 | 06-Mar-2026 |
| 128 | Landscape | Hardscape | All | Landscape | LAN-1 | Hardscape/Landscaping | 06-Jul-2026 | 23-Dec-2026 |
| 129 | Foundations | Deep Structural | Deep Structural | Piler | PI-1 | Install Piers (24') - Zone 1 | 03-Sep-2025 | 09-Sep-2025 |
| 130 | Foundations | Deep Structural | Deep Structural | Piler | PI-1 | Install Piers (24') - Zone 2 | 10-Sep-2025 | 16-Sep-2025 |
| 131 | Foundations | Deep Structural | Deep Structural | Piler | PI-1 | Install Piers (24') - Zone 3 | 17-Sep-2025 | 23-Sep-2025 |
| 132 | Foundations | Deep Structural | Deep Structural | Piler | PI-1 | Install Piers (24') - Zone 4 | 24-Sep-2025 | 30-Sep-2025 |
| 133 | Foundations | Deep Structural | Deep Structural | Piler | PI-1 | Install Piers (24') - Zone 5 | 01-Oct-2025 | 07-Oct-2025 |
| 134 | Foundations | Deep Structural | Deep Structural | Piler | PI-2 | Install Pile Caps (30) - All Zones | 01-Oct-2025 | 21-Oct-2025 |
| 135 | Foundations | Deep Structural | Deep Structural | Piler | PI-1 | Install Piers (24') - Zone 6 | 08-Oct-2025 | 14-Oct-2025 |
| 136 | Foundations | Grade Beams | Grade Beams | Concrete | CON-2 | F/R/P Grade Beams - East (Zones 1 & 3) | 24-Sep-2025 | 14-Oct-2025 |
| 137 | Foundations | Grade Beams | Grade Beams | Concrete | CON-3 | F/R/P Grade Beams - South (Zones 1, 2 & 6) | 15-Oct-2025 | 04-Nov-2025 |
| 138 | Foundations | Grade Beams | Grade Beams | Concrete | CON-4 | F/R/P Grade Beams - West (Zones 5 & 6) | 05-Nov-2025 | 25-Nov-2025 |
| 139 | Foundations | Grade Beams | Grade Beams | Concrete | CON-5 | F/R/P Grade Beams - North (Zones 3, 4 & 5) | 26-Nov-2025 | 18-Dec-2025 |
| 140 | Foundations | Grade Beams | Grade Beams | Concrete | CON-6 | F/R/P Internal Grade Beams | 19-Dec-2025 | 16-Jan-2026 |

| entry | phase | location | area | trade | activity_code | activity_name | start | finish |
| --- | --- | --- | --- | --- | --- | --- | --- | --- |
| 141 | Foundations | Slabs | Zone 1 | Concrete | CON-7 | F/R/P Slab on Grade - Zone 1 | 26-Nov-2025 | 18-Dec-2025 |
| 142 | Foundations | Slabs | Zone 2 | Concrete | CON-8 | F/R/P Slab on Grade - Zone 2 | 19-Jan-2026 | 06-Feb-2026 |
| 143 | Foundations | Slabs | Zone 3 | Concrete | CON-9 | F/R/P Slab on Grade - Zone 3 | 16-Feb-2026 | 27-Feb-2026 |
| 144 | Foundations | Slabs | Zone 4 | Concrete | CON-10 | F/R/P Slab on Grade - Zone 4 | 16-Mar-2026 | 27-Mar-2026 |
| 145 | Foundations | Slabs | Zone 5 | Concrete | CON-11 | F/R/P Slab on Grade - Zone 5 | 28-Apr-2026 | 18-May-2026 |
| 146 | Foundations | Slabs | Zone 6 | Concrete | CON-12 | F/R/P Slab on Grade - Zone 6 | 10-Jun-2026 | 30-Jun-2026 |
| 147 | Foundations | Underground Strucuture | Zone 1 | Elect & Plumb | ELPL-1 | Under Slab MEP - Zone 1 | 15-Oct-2025 | 25-Nov-2025 |
| 148 | Foundations | Underground Strucuture | Mechanical Yard | Elect & Plumb | ELPL-2 | Underground MEP - Mechanical Yard | 15-Oct-2025 | 16-Jan-2026 |
| 149 | Foundations | Underground Strucuture | Zone 2 | Elect & Plumb | ELPL-1 | Under Slab MEP - Zone 2 | 26-Nov-2025 | 16-Jan-2026 |
| 150 | Foundations | Underground Strucuture | Zone 3 | Elect & Plumb | ELPL-1 | Under Slab MEP - Zone 3 | 19-Jan-2026 | 13-Feb-2026 |
| 151 | Foundations | Underground Strucuture | Zone 4 | Elect & Plumb | ELPL-1 | Under Slab MEP - Zone 4 | 16-Feb-2026 | 13-Mar-2026 |
| 152 | Foundations | Underground Strucuture | Zone 5 | Elect & Plumb | ELPL-1 | Under Slab MEP - Zone 5 | 16-Mar-2026 | 27-Apr-2026 |
| 153 | Foundations | Underground Strucuture | Zone 6 | Elect & Plumb | ELPL-1 | Under Slab MEP - Zone 6 | 28-Apr-2026 | 09-Jun-2026 |
| 154 | Foundations | Underground Strucuture | Zone 7A | Elect & Plumb | ELPL-3 | Underground MEP - Zone 7A | 10-Jun-2026 | 30-Jun-2026 |
| 155 | Foundations | Underground Strucuture | Zone 7B | Elect & Plumb | ELPL-3 | Underground MEP - Zone 7B | 01-Jul-2026 | 22-Jul-2026 |
| 156 | Interiors | Above Grade Structures | Zone 1 | Steel | SL-2 | Steel Framing & Decking - Zone 1 | 14-Jan-2026 | 27-Jan-2026 |
| 157 | Interiors | Above Grade Structures | Zone 2 | Steel | SL-2 | Steel Framing & Decking - Zone 2 | 28-Jan-2026 | 10-Feb-2026 |
| 158 | Interiors | Above Grade Structures | Zone 3 | Steel | SL-2 | Steel Framing & Decking - Zone 3 | 11-Feb-2026 | 24-Feb-2026 |
| 159 | Interiors | Above Grade Structures | Zone 4 | Steel | SL-2 | Steel Framing & Decking - Zone 4 | 25-Feb-2026 | 10-Mar-2026 |
| 160 | Interiors | Above Grade Structures | Zone 5 | Steel | SL-2 | Steel Framing & Decking - Zone 5 | 11-Mar-2026 | 24-Mar-2026 |
| 161 | Interiors | Above Grade Structures | Zone 6 | Steel | SL-2 | Steel Framing & Decking - Zone 6 | 25-Mar-2026 | 08-Apr-2026 |
| 162 | Interiors | RI & Finishes | Zone 1 | Framer | FR-1 | Ceiling Trim Out - Zone 1 | 30-Apr-2026 | 08-May-2026 |
| 163 | Interiors | RI & Finishes | Zone 3 | Framer | FR-1 | Ceiling Trim Out - Zone 3 | 29-May-2026 | 08-Jun-2026 |
| 164 | Exteriors | Building Envelope | North Elevation | Weatherproofer | WP-1 | Exterior Weatherproof - North Elevation | 21-May-2026 | 28-May-2026 |
| 165 | Exteriors | Building Envelope | North Elevation | Glass/Glazing | GLA-1 | Curatinwall - North Elevation | 29-May-2026 | 11-Jun-2026 |
| 166 | Exteriors | Building Envelope | North Elevation | Masonry | MAS-1 | Masonry - North Elevation | 29-May-2026 | 25-Jun-2026 |
| 167 | Exteriors | Building Envelope | North Elevation | Glass/Glazing | GLA-2 | Store Front/Glass/Glazing - North Elevation | 26-Jun-2026 | 24-Jul-2026 |
| 168 | Interiors | RI & Finishes | Zone 1 | Framer | FR-2 | Close Ceiling - Zone 1 | 12-May-2026 | 14-May-2026 |
| 169 | Interiors | RI & Finishes | Zone 3 | Framer | FR-2 | Close Ceilings - Zone 3 | 10-Jun-2026 | 12-Jun-2026 |
| 170 | Exteriors | Building Envelope | North Elevation | Weatherproofer | WP-1 | Exterior Weatherproof - West Elevation | 05-Jun-2026 | 11-Jun-2026 |
| 171 | Exteriors | Building Envelope | North Elevation | Cladding | CLA-1 | Exterior Metal Panels - West Elevation | 12-Jun-2026 | 02-Jul-2026 |
| 172 | Exteriors | Building Envelope | North Elevation | Masonry | MAS-2 | Exterior Masonry - West Elevation | 06-Jul-2026 | 31-Jul-2026 |
| 173 | Exteriors | Building Envelope | North Elevation | Glass/Glazing | GLA-2 | Store Front/Glass/Glazing - West Elevation | 03-Aug-2026 | 28-Aug-2026 |
| 174 | Exteriors | Building Envelope | North Elevation | Framer | FR-3 | Exterior Framing - East Elevation | 09-Apr-2026 | 22-Apr-2026 |
| 175 | Exteriors | Building Envelope | North Elevation | Framer | FR-3 | Exterior Framing - North Elevation | 23-Apr-2026 | 06-May-2026 |
| 176 | Exteriors | Building Envelope | North Elevation | Weatherproofer | WP-1 | Exterior Weatherproof - South Elevation | 23-Apr-2026 | 29-Apr-2026 |
| 177 | Exteriors | Building Envelope | North Elevation | Cladding | CLA-2 | Exterior Metal Panels - South Elevation | 30-Apr-2026 | 20-May-2026 |
| 178 | Exteriors | Building Envelope | North Elevation | Masonry | MAS-2 | Exterior Masonry - South Elevation | 21-May-2026 | 18-Jun-2026 |
| 179 | Exteriors | Building Envelope | North Elevation | Glass/Glazing | GLA-2 | Store Front/Glass/Glazing - South Elevation | 19-Jun-2026 | 17-Jul-2026 |
| 180 | Exteriors | Building Envelope | North Elevation | Framer | FR-3 | Exterior Framing - South Elevation | 25-Mar-2026 | 08-Apr-2026 |
| 181 | Exteriors | Building Envelope | North Elevation | Framer | FR-3 | Exterior Framing - West Elevation | 07-May-2026 | 20-May-2026 |
| 182 | Exteriors | Building Envelope | North Elevation | Weatherproofer | WP-1 | Exterior Weatherproof - East Elevation | 07-May-2026 | 13-May-2026 |
| 183 | Exteriors | Building Envelope | North Elevation | Cladding | CLA-3 | Exterior Metal Panels - East Elevation | 14-May-2026 | 04-Jun-2026 |
| 184 | Exteriors | Building Envelope | North Elevation | Masonry | MAS-2 | Exterior Masonry - East Elevation | 05-Jun-2026 | 02-Jul-2026 |
| 185 | Exteriors | Building Envelope | North Elevation | Glass/Glazing | GLA-2 | Store Front/Glass/Glazing - East Elevation | 06-Jul-2026 | 31-Jul-2026 |
| 186 | Exteriors | Building Envelope | North Elevation | Roofer | ROOF-1 | Install Roofing - All Zones | 12-Jun-2026 | 04-Sep-2026 |
| 187 | Exteriors | Building Envelope | North Elevation | Misc Metals | MIS-1 | Install Screenwall - Zone 2 | 13-Jul-2026 | 14-Aug-2026 |
| 188 | Exteriors | Building Envelope | North Elevation | Misc Metals | MIS-1 | Install Screenwall - Zone 5 | 17-Aug-2026 | 21-Sep-2026 |
| 189 | Exteriors | Building Envelope | North Elevation | Misc Metals | MIS-1 | Install Screenwall - Zone 6 | 22-Sep-2026 | 26-Oct-2026 |
| 190 | Interiors | RI & Finishes | Zone 6 | MEP | MEP-1 | OH MEPF Rough-in - Zone 6 | 07-May-2026 | 04-Jun-2026 |
| 191 | Interiors | RI & Finishes | Zone 5 | MEP | MEP-1 | OH MEPF Rough-in - Zone 5 | 23-Apr-2026 | 20-May-2026 |
| 192 | Procurement | Procurement | Contracts | McGough | PRO-13 | Issue Contract to Structural Steel Sub | 05-Sep-2025 | 02-Oct-2025 |
| 193 | Procurement | Procurement | Contracts | McGough | PRO-14 | Issue Contract to Store Fronts Sub | 05-Sep-2025 | 02-Oct-2025 |
| 194 | Interiors | RI & Finishes | Zone 4 | Mechanical | MEC-1 | Install AHU 3 & 4 (Roof) - Zone 4 | 29-Sep-2026 | 06-Oct-2026 |
| 195 | Interiors | RI & Finishes | Mechanical Room | Concrete | CON-13 | Install Housekeeping Pads - Zone 1 Mechanical Room | 12-Dec-2025 | 18-Dec-2025 |
| 196 | Interiors | RI & Finishes | Zone 3 | Mechanical | MEC-1 | Install AHU 5 (Roof) - Zone 3 | 22-Sep-2026 | 28-Sep-2026 |
| 197 | Interiors | RI & Finishes | Mechanical Room | Plumbing | PLU-1 | Set/Install HWP (3) - Zone 1 Mechanical Room | 02-Jun-2026 | 22-Jun-2026 |
| 198 | Interiors | RI & Finishes | Mechanical Room | Plumbing | PLU-1 | Set/Install CHWP (3) - Zone 1 Mechanical Room | 02-Jun-2026 | 22-Jun-2026 |
| 199 | Interiors | RI & Finishes | Zone 2 | Mechanical | MEC-1 | Install AHU 6 (Roof) - Zone 2 | 15-Sep-2026 | 21-Sep-2026 |
| 200 | Interiors | RI & Finishes | Mechanical Room | Electrical | EL-4 | Install Electrical Switchgear - Zone 1 Mechanical Room | 30-Jul-2026 | 19-Aug-2026 |
| 201 | Interiors | RI & Finishes | Mechanical Room | Electrical | EL-5 | Install ATS - Zone 1 Mechanical Room | 30-Jul-2026 | 12-Aug-2026 |
| 202 | Interiors | RI & Finishes | Zone 4 | MEP | MEP-1 | OH MEPF Rough-in - Zone 4 | 09-Apr-2026 | 06-May-2026 |
| 203 | Interiors | RI & Finishes | Zone 3 | MEP | MEP-1 | OH MEPF Rough-in - Zone 3 | 25-Mar-2026 | 08-Apr-2026 |
| 204 | Procurement | Procurement | Contracts | McGough | PRO-15 | Issue Contract to Security Glazing Sub | 05-Sep-2025 | 02-Oct-2025 |
| 205 | Procurement | Procurement | Contracts | McGough | PRO-16 | Issue Contract to Overhead Door Sub | 05-Sep-2025 | 02-Oct-2025 |
| 206 | Interiors | RI & Finishes | Zone 1 | Mechanical | MEC-1 | Install AHU 7 (Roof) - Zone 1 | 08-Sep-2026 | 14-Sep-2026 |
| 207 | Interiors | RI & Finishes | Zone 2 | MEP | MEP-1 | OH MEPF Rough-in - Zone 2 | 11-Mar-2026 | 08-Apr-2026 |
| 208 | Interiors | RI & Finishes | Zone 1 | MEP | MEP-1 | OH MEPF Rough-in - Zone 1 | 25-Feb-2026 | 24-Mar-2026 |
| 209 | Procurement | Procurement | Contracts | McGough | PRO-17 | Issue Contract to Mechanical Sub | 23-May-2025 | 20-Jun-2025 |
| 210 | Procurement | Procurement | Contracts | McGough | PRO-18 | Issue Contract to Kitchen Equipment Sub | 05-Sep-2025 | 02-Oct-2025 |

| entry | phase | location | area | trade | activity_code | activity_name | start | finish |
| --- | --- | --- | --- | --- | --- | --- | --- | --- |
| 211 | Interiors | RI & Finishes | Mechanical Room | Mechanical | MEC-1 | Install Boilers - Zone 1 Mechanical Room | 18-May-2026 | 01-Jun-2026 |
| 212 | Interiors | RI & Finishes | Zone 6 | MEP | MEP-2 | In-wall MEP Rough-in - Zone 6 | 07-May-2026 | 04-Jun-2026 |
| 213 | Interiors | RI & Finishes | Zone 5 | MEP | MEP-2 | In-wall MEP Rough-in - Zone 5 | 23-Apr-2026 | 20-May-2026 |
| 214 | Procurement | Procurement | Contracts | McGough | PRO-19 | Issue Contract to Electrical Sub | 23-May-2025 | 20-Jun-2025 |
| 215 | Procurement | Procurement | Contracts | McGough | PRO-20 | Issue Contract to Curtainwall Sub | 05-Sep-2025 | 02-Oct-2025 |
| 216 | Procurement | Procurement | Material | Mechanical | PRO-23 | Procure & Fabricate AHU's | 15-Jul-2025 | 04-May-2026 |
| 217 | Interiors | RI & Finishes | Zone 4 | MEP | MEP-2 | In-wall MEP Rough-in - Zone 4 | 09-Apr-2026 | 06-May-2026 |
| 218 | Interiors | RI & Finishes | Zone 3 | MEP | MEP-2 | In-wall MEP Rough-in - Zone 3 | 25-Mar-2026 | 22-Apr-2026 |
| 219 | Procurement | Procurement | Contracts | McGough | PRO-21 | Issue Contract to Civil Sub | 23-May-2025 | 20-Jun-2025 |
| 220 | Procurement | Procurement | Contracts | McGough | PRO-22 | Issue Contract to Antiligature Door Hardware/Kingsway Kits Sub | 05-Sep-2025 | 02-Oct-2025 |
| 221 | Procurement | Procurement | Material | Mechanical | PRO-25 | Procure & Fabricate Boilers | 28-Jul-2025 | 15-May-2026 |
| 222 | Interiors | RI & Finishes | Zone 2 | MEP | MEP-2 | In-wall MEP Rough-in - Zone 2 | 11-Mar-2026 | 08-Apr-2026 |
| 223 | Interiors | RI & Finishes | Zone 1 | MEP | MEP-2 | In-wall MEP Rough-in - Zone 1 | 25-Feb-2026 | 24-Mar-2026 |
| 224 | Interiors | RI & Finishes | Zone 6 | McGough | MG-5 | In-wall MEP Inspections - Zone 6 | 05-Jun-2026 | 05-Jun-2026 |
| 225 | Interiors | RI & Finishes | Zone 5 | McGough | MG-5 | In-wall MEP Inspections - Zone 5 | 21-May-2026 | 21-May-2026 |
| 226 | Procurement | Procurement | Material | Mechanical | PRO-24 | Procure & Fabricate Chillers | 15-Jul-2025 | 04-May-2026 |
| 227 | Interiors | RI & Finishes | Zone 6 | Flooring | FL-1 | Sealed Concrete Flooring - Zone 6 | 16-Sep-2026 | 22-Sep-2026 |
| 228 | Exteriors | Building Envelope | North Elevation | Framer | FR-3 | Exterior Sheathing - East Elevation | 23-Apr-2026 | 06-May-2026 |
| 229 | Exteriors | Building Envelope | North Elevation | Framer | FR-3 | Exterior Sheathing - North Elevation | 07-May-2026 | 20-May-2026 |
| 230 | Exteriors | Building Envelope | North Elevation | Framer | FR-3 | Exterior Sheathing - South Elevation | 09-Apr-2026 | 22-Apr-2026 |
| 231 | Interiors | RI & Finishes | Zone 1 | Drywall | DRY-1 | Two Side Walls - Zone 1 | 30-Mar-2026 | 08-Apr-2026 |
| 232 | Interiors | RI & Finishes | Zone 1 | Drywall | DRY-2 | Tape & Float - Zone 1 | 09-Apr-2026 | 22-Apr-2026 |
| 233 | Interiors | RI & Finishes | Zone 1 | Tile | T-1 | Install Wet Work (Restroom, Locker Room & Shower Area) - Zone 1 | 09-Apr-2026 | 15-Apr-2026 |
| 234 | Exteriors | Building Envelope | North Elevation | Framer | FR-3 | Exterior Sheathing - West Elevation | 21-May-2026 | 04-Jun-2026 |
| 235 | Interiors | RI & Finishes | Zone 2 | Paint | PA-4 | Install Hard Ceiling - Zone 2 | 12-May-2026 | 05-Jun-2026 |
| 236 | Interiors | RI & Finishes | Zone 1 | Framer | FR-4 | Frame Walls & Ceilings - Zone 1 | 11-Feb-2026 | 24-Feb-2026 |
| 237 | Interiors | RI & Finishes | Zone 1 | Paint | PA-1 | Paint 1st Coat - Zone 1 | 23-Apr-2026 | 29-Apr-2026 |
| 238 | Interiors | RI & Finishes | Zone 1 | Millwork | MILL-1 | Install Millwork - Zone 1 | 30-Apr-2026 | 20-May-2026 |
| 239 | Interiors | RI & Finishes | Zone 2 | Paint | PA-1 | Paint 1st Coat - Zone 2 | 30-Apr-2026 | 06-May-2026 |
| 240 | Interiors | RI & Finishes | Zone 1 | Inspection | INS-1 | Ceiling Inspection - Zone 1 | 11-May-2026 | 11-May-2026 |
| 241 | Interiors | RI & Finishes | Zone 2 | Framer | FR-4 | Frame Walls & Ceilings - Zone 2 | 25-Feb-2026 | 10-Mar-2026 |
| 242 | Interiors | RI & Finishes | Zone 1 | Plumbing | PLU-2 | Plumbing Fixtures & Trim Out - Zone 1 | 14-May-2026 | 20-May-2026 |
| 243 | Interiors | RI & Finishes | Zone 1 | OH Doors | OH-1 | Install OH Doors (2) - Zone 1 Mechanical Room | 14-May-2026 | 20-May-2026 |
| 244 | Interiors | RI & Finishes | Zone 5 | Flooring | FL-1 | Sealed Concrete Flooring - Zone 5 | 18-Aug-2026 | 24-Aug-2026 |
| 245 | Interiors | RI & Finishes | Zone 1 | Electrical | EL-6 | Electrical Fixtures & Trim Out - Zone 1 | 15-May-2026 | 21-May-2026 |
| 246 | Interiors | RI & Finishes | Zone 1 | Doors | DOOR-1 | Install Doors & Hardware - Zone 1 | 22-Jun-2026 | 06-Jul-2026 |
| 247 | Interiors | RI & Finishes | Zone 4 | McGough | MG-5 | In-wall MEP Inspections - Zone 4 | 07-May-2026 | 07-May-2026 |
| 248 | Interiors | RI & Finishes | Zone 1 | Concrete | CON-14 | F/R/P Concrete Pads - Mechanical Yard | 09-Feb-2026 | 20-Mar-2026 |
| 249 | Interiors | RI & Finishes | Zone 1 | Concrete | CON-15 | Cure Concrete Pads - Mechanical Yard | 23-Mar-2026 | 27-Mar-2026 |
| 250 | Interiors | RI & Finishes | Zone 1 | Concrete | CON-16 | F/R/P Concrete Pad Sally Port - Mechanical Yard | 23-Mar-2026 | 27-Apr-2026 |
| 251 | Interiors | RI & Finishes | Zone 1 | Masonry | MAS-3 | Install CMU Walls - Mechanical Yard | 09-Apr-2026 | 20-May-2026 |
| 252 | Interiors | RI & Finishes | Zone 1 | Concrete | CON-17 | Cure Concrete Pad Sally Port - Mechanical Yard | 28-Apr-2026 | 09-Jun-2026 |
| 253 | Interiors | RI & Finishes | Zone 1 | Mechanical | MEC-3 | Set Chillers (3) - Mechanical Yard | 05-May-2026 | 11-May-2026 |
| 254 | Interiors | RI & Finishes | Zone 1 | Mechanical | MEC-4 | Set Fuel Tank - Mechanical Yard | 03-Aug-2026 | 07-Aug-2026 |
| 255 | Interiors | RI & Finishes | Zone 1 | Electrical | EL-7 | Set Generator - Mechanical Yard | 30-Jul-2026 | 31-Jul-2026 |
| 256 | Interiors | RI & Finishes | Zone 1 | Electrical | EL-8 | Hook-up/Final Connections Generator - Mechanical Yard | 03-Aug-2026 | 07-Aug-2026 |
| 257 | Interiors | RI & Finishes | Mechanical Room | Mechanical | MEC-5 | Set/Install VFD's - Zone 1 Mechanical Room | 23-Jun-2026 | 21-Jul-2026 |
| 258 | Interiors | RI & Finishes | Kitchen | Specialties | SPE-1 | Install Kitchen Equipment | 28-Apr-2026 | 22-Jul-2026 |
| 259 | Interiors | RI & Finishes | Zone 3 | Framer | FR-4 | Frame Walls & Ceilings - Zone 3 | 11-Mar-2026 | 24-Mar-2026 |
| 260 | Interiors | RI & Finishes | Zone 2 | Doors | DOOR-2 | Install Door Frames - Zone 2 | 11-Mar-2026 | 17-Mar-2026 |
| 261 | Interiors | RI & Finishes | Zone 4 | Framer | FR-4 | Frame Walls & Ceilings - Zone 4 | 25-Mar-2026 | 08-Apr-2026 |
| 262 | Interiors | RI & Finishes | Zone 2 | Drywall | DRY-1 | Two Side Walls - Zone 2 | 14-Apr-2026 | 22-Apr-2026 |
| 263 | Interiors | RI & Finishes | Zone 2 | Drywall | DRY-2 | Tape & Float - Zone 2 | 23-Apr-2026 | 06-May-2026 |
| 264 | Interiors | RI & Finishes | Zone 2 | Tile | T-1 | Install Wet Work (Restrooms) - Zone 2 | 23-Apr-2026 | 20-May-2026 |
| 265 | Interiors | RI & Finishes | Zone 3 | Paint | PA-1 | Paint 1st Coat - Zone 3 | 07-May-2026 | 13-May-2026 |
| 266 | Interiors | RI & Finishes | Zone 2 | OH Doors | OH-1 | Install OH Doors (2) - Zone 2 | 30-Apr-2026 | 06-May-2026 |
| 267 | Interiors | RI & Finishes | Zone 5 | Framer | FR-4 | Frame Walls & Ceilings - Zone 5 | 09-Apr-2026 | 22-Apr-2026 |
| 268 | Interiors | RI & Finishes | Zone 4 | Paint | PA-1 | Paint 1st Coat - Zone 4 | 21-May-2026 | 28-May-2026 |
| 269 | Interiors | RI & Finishes | Zone 5 | Paint | PA-1 | Paint 1st Coat - Zone 5 | 05-Jun-2026 | 11-Jun-2026 |
| 270 | Interiors | RI & Finishes | Zone 6 | Paint | PA-1 | Paint 1st Coat - Zone 6 | 19-Jun-2026 | 25-Jun-2026 |
| 271 | Interiors | RI & Finishes | Zone 2 | Plumbing | PLU-2 | Plumbing Fixtures & Trim Out - Zone 2 | 21-May-2026 | 11-Jun-2026 |
| 272 | Interiors | RI & Finishes | Zone 2 | Millwork | MILL-1 | Install Millwork - Zone 2 | 21-May-2026 | 04-Jun-2026 |
| 273 | Interiors | RI & Finishes | Zone 1 | Flooring | FL-1 | Sealed Concrete Flooring - Zone 1 | 28-Jan-2026 | 10-Feb-2026 |
| 274 | Interiors | RI & Finishes | Zone 4 | Flooring | FL-2 | Install Tile Flooring - Zone 4 | 07-Jul-2026 | 20-Jul-2026 |
| 275 | Interiors | RI & Finishes | Zone 2 | Electrical | EL-9 | Electrical Fixtures & Trim Out - Zone 2 | 08-Jun-2026 | 26-Jun-2026 |
| 276 | Interiors | RI & Finishes | Zone 2 | Doors | DOOR-1 | Install Doors & Hardware - Zone 2 | 07-Jul-2026 | 13-Jul-2026 |
| 277 | Interiors | RI & Finishes | Zone 3 | McGough | MG-5 | In-wall MEP Inspections - Zone 3 | 23-Apr-2026 | 23-Apr-2026 |
| 278 | Interiors | RI & Finishes | Zone 6 | Framer | FR-4 | Frame Walls & Ceilings - Zone 6 | 23-Apr-2026 | 06-May-2026 |
| 279 | Interiors | RI & Finishes | Zone 3 | Doors | DOOR-2 | Install Door Frames - Zone 3 | 25-Mar-2026 | 27-Mar-2026 |
| 280 | Interiors | RI & Finishes | Zone 1 | Framer | FR-5 | In-wall Blocking - Zone 1 | 26-Mar-2026 | 27-Mar-2026 |

| entry | phase | location | area | trade | activity_code | activity_name | start | finish |
| --- | --- | --- | --- | --- | --- | --- | --- | --- |
| 281 | Interiors | RI & Finishes | Zone 3 | Drywall | DRY-1 | Two Side Walls - Zone 3 | 28-Apr-2026 | 06-May-2026 |
| 282 | Interiors | RI & Finishes | Zone 1 | Paint | PA-2 | Paint 2nd Coat - Zone 1 | 30-Apr-2026 | 06-May-2026 |
| 283 | Interiors | RI & Finishes | Zone 3 | Drywall | DRY-2 | Tape & Float - Zone 3 | 07-May-2026 | 20-May-2026 |
| 284 | Interiors | RI & Finishes | Zone 2 | Paint | PA-2 | Paint 2nd Coat - Zone 2 | 07-May-2026 | 13-May-2026 |
| 285 | Interiors | RI & Finishes | Zone 2 | Framer | FR-5 | In-wall Blocking - Zone 2 | 10-Apr-2026 | 13-Apr-2026 |
| 286 | Interiors | RI & Finishes | Zone 3 | Framer | FR-5 | In-wall Blocking - Zone 3 | 24-Apr-2026 | 27-Apr-2026 |
| 287 | Interiors | RI & Finishes | Zone 3 | Tile | T-1 | Install Wet Work (Restrooms) - Zone 3 | 21-May-2026 | 04-Jun-2026 |
| 288 | Interiors | RI & Finishes | Zone 4 | Framer | FR-5 | In-wall Blocking - Zone 4 | 08-May-2026 | 11-May-2026 |
| 289 | Interiors | RI & Finishes | Zone 3 | Inspection | INS-1 | Ceiling Inspection - Zone 3 | 09-Jun-2026 | 09-Jun-2026 |
| 290 | Interiors | RI & Finishes | Zone 5 | Framer | FR-5 | In-wall Blocking - Zone 5 | 22-May-2026 | 26-May-2026 |
| 291 | Interiors | RI & Finishes | Zone 3 | Plumbing | PLU-2 | Plumbing Fixtures & Trim Out - Zone 3 | 12-Jun-2026 | 25-Jun-2026 |
| 292 | Interiors | RI & Finishes | Zone 3 | Millwork | MILL-1 | Install Millwork - Zone 3 | 15-Jun-2026 | 19-Jun-2026 |
| 293 | Interiors | RI & Finishes | Zone 3 | Flooring | FL-2 | Install Tile Flooring - Zone 3 | 15-Jun-2026 | 26-Jun-2026 |
| 294 | Interiors | RI & Finishes | Zone 4 | Flooring | FL-3 | Install Terazzo Flooring - Zone 4 | 14-Jul-2026 | 10-Aug-2026 |
| 295 | Interiors | RI & Finishes | Zone 3 | Electrical | EL-9 | Electrical Fixtures & Trim Out- Zone 3 | 29-Jun-2026 | 13-Jul-2026 |
| 296 | Interiors | RI & Finishes | Zone 6 | Flooring | FL-4 | Install Sheet Rubber Flooring - Zone 6 | 18-Aug-2026 | 15-Sep-2026 |
| 297 | Interiors | RI & Finishes | Zone 3 | Doors | DOOR-1 | Install Doors & Hardware - Zone 3 | 14-Jul-2026 | 16-Jul-2026 |
| 298 | Interiors | RI & Finishes | Zone 2 | McGough | MG-5 | In-wall MEP Inspections - Zone 2 | 09-Apr-2026 | 09-Apr-2026 |
| 299 | Interiors | RI & Finishes | Zone 6 | Framer | FR-5 | In-wall Blocking - Zone 6 | 08-Jun-2026 | 09-Jun-2026 |
| 300 | Interiors | RI & Finishes | Zone 4 | Doors | DOOR-2 | Install Door Frames - Zone 4 | 09-Apr-2026 | 13-Apr-2026 |
| 301 | Interiors | RI & Finishes | Zone 2 | Framer | FR-6 | Install ACT Ceilings - Zone 2 | 07-May-2026 | 11-May-2026 |
| 302 | Interiors | RI & Finishes | Zone 4 | Drywall | DRY-1 | Two Side Walls - Zone 4 | 12-May-2026 | 20-May-2026 |
| 303 | Interiors | RI & Finishes | Zone 3 | Paint | PA-2 | Paint 2nd Coat - Zone 3 | 14-May-2026 | 20-May-2026 |
| 304 | Interiors | RI & Finishes | Zone 4 | Drywall | DRY-2 | Tape & Float - Zone 4 | 21-May-2026 | 04-Jun-2026 |
| 305 | Interiors | RI & Finishes | Zone 4 | Paint | PA-2 | Paint 2nd Coat - Zone 4 | 29-May-2026 | 04-Jun-2026 |
| 306 | Interiors | RI & Finishes | Zone 4 | Framer | FR-6 | Install ACT Ceilings - Zone 4 | 05-Jun-2026 | 09-Jun-2026 |
| 307 | Interiors | RI & Finishes | Zone 5 | Paint | PA-2 | Paint 2nd Coat - Zone 5 | 12-Jun-2026 | 18-Jun-2026 |
| 308 | Interiors | RI & Finishes | Zone 4 | Tile | T-1 | Install Wet Work - Zone 4 | 05-Jun-2026 | 18-Jun-2026 |
| 309 | Interiors | RI & Finishes | Zone 4 | Drywall | DRY-3 | Install Hard Ceilings - Zone 4 | 10-Jun-2026 | 06-Jul-2026 |
| 310 | Interiors | RI & Finishes | Zone 4 | Millwork | MILL-1 | Install Millwork - Zone 4 | 22-Jun-2026 | 26-Jun-2026 |
| 311 | Interiors | RI & Finishes | Zone 4 | Plumbing | PLU-2 | Plumbing Fixtures & Trim Out - Zone 4 | 26-Jun-2026 | 26-Jun-2026 |
| 312 | Interiors | RI & Finishes | Zone 5 | Flooring | FL-4 | Install Sheet Rubber Flooring - Zone 5 | 21-Jul-2026 | 17-Aug-2026 |
| 313 | Interiors | RI & Finishes | Zone 3 | Flooring | FL-4 | Install Sheet Rubber Flooring - Zone 3 | 29-Jun-2026 | 13-Jul-2026 |
| 314 | Interiors | RI & Finishes | Zone 4 | Electrical | EL-9 | Electrical Fixtures & Trim Out - Zone 4 | 14-Jul-2026 | 27-Jul-2026 |
| 315 | Interiors | RI & Finishes | Zone 2 | Flooring | FL-4 | Install Sheet Rubber Flooring - Zone 2 | 08-Jun-2026 | 26-Jun-2026 |
| 316 | Interiors | RI & Finishes | Zone 6 | Flooring | FL-5 | Install Resinous Flooring - Zone 6 | 11-Nov-2026 | 03-Feb-2027 |
| 317 | Interiors | RI & Finishes | Zone 5 | Flooring | FL-5 | Install Resinous Flooring - Zone 5 | 25-Aug-2026 | 10-Nov-2026 |
| 318 | Interiors | RI & Finishes | Zone 4 | Doors | DOOR-1 | Install Doors & Hardware - Zone 4 | 25-Aug-2026 | 27-Aug-2026 |
| 319 | Interiors | RI & Finishes | Zone 1 | McGough | MG-5 | In-wall MEP Inspections - Zone 1 | 25-Mar-2026 | 25-Mar-2026 |
| 320 | Interiors | RI & Finishes | Zone 5 | Framer | FR-6 | Install ACT Ceilings - Zone 5 | 19-Jun-2026 | 23-Jun-2026 |
| 321 | Interiors | RI & Finishes | Zone 5 | Doors | DOOR-2 | Install Door Frames - Zone 5 | 23-Apr-2026 | 06-May-2026 |
| 322 | Interiors | RI & Finishes | Zone 1 | Framer | FR-6 | Install ACT Grid - Zone 1 | 23-Apr-2026 | 29-Apr-2026 |
| 323 | Interiors | RI & Finishes | Zone 3 | Framer | FR-6 | Install ACT Grid - Zone 3 | 21-May-2026 | 28-May-2026 |
| 324 | Interiors | RI & Finishes | Zone 5 | Drywall | DRY-2 | Tape & Float - Zone 5 | 05-Jun-2026 | 18-Jun-2026 |
| 325 | Interiors | RI & Finishes | Zone 6 | Paint | PA-2 | Paint 2nd Coat - Zone 6 | 26-Jun-2026 | 02-Jul-2026 |
| 326 | Interiors | RI & Finishes | Zone 1 | Paint | PA-3 | Paint Final Coat - Zone 1 | 07-May-2026 | 13-May-2026 |
| 327 | Interiors | RI & Finishes | Zone 6 | Framer | FR-7 | Install Ceilings - Zone 6 | 06-Jul-2026 | 08-Jul-2026 |
| 328 | Interiors | RI & Finishes | Zone 2 | Paint | PA-3 | Paint Final Coat - Zone 2 | 14-May-2026 | 20-May-2026 |
| 329 | Interiors | RI & Finishes | Zone 5 | Tile | T-1 | Install Wet Work (Patient & Staff Restrooms) - Zone 5 | 19-Jun-2026 | 04-Sep-2026 |
| 330 | Interiors | RI & Finishes | Zone 5 | Drywall | DRY-3 | Install Hard Lid Ceilings - Zone 5 | 24-Jun-2026 | 20-Jul-2026 |
| 331 | Interiors | RI & Finishes | Zone 5 | Millwork | MILL-1 | Install Millwork - Zone 5 | 29-Jun-2026 | 03-Nov-2026 |
| 332 | Interiors | RI & Finishes | Zone 4 | Flooring | FL-5 | Install Resinous Flooring - Zone 4 | 11-Aug-2026 | 24-Aug-2026 |
| 333 | Interiors | RI & Finishes | Zone 2 | Flooring | FL-5 | Install Resinous Flooring - Zone 2 | 08-Jun-2026 | 06-Jul-2026 |
| 334 | Interiors | RI & Finishes | Zone 5 | Electrical | EL-9 | Electrical Fixtures & Trim Out - Zone 5 | 28-Jul-2026 | 08-Sep-2026 |
| 335 | Interiors | RI & Finishes | Zone 6 | Flooring | FL-6 | Install LVT Flooring - Zone 6 | 04-Aug-2026 | 13-Aug-2026 |
| 336 | Interiors | RI & Finishes | Zone 5 | Flooring | FL-6 | Install LVT Flooring - Zone 5 | 21-Jul-2026 | 30-Jul-2026 |
| 337 | Interiors | RI & Finishes | Zone 5 | Plumbing | PLU-2 | Plumbing Fixtures & Trim Out - Zone 5 | 08-Sep-2026 | 19-Oct-2026 |
| 338 | Interiors | RI & Finishes | Zone 5 | Specialties | SPE-2 | Care Team Station Finishes - Zone 5 | 04-Nov-2026 | 17-Dec-2026 |
| 339 | Interiors | RI & Finishes | Zone 5 | Doors | DOOR-1 | Install Doors & Hardware - Zone 5 | 11-Nov-2026 | 11-Jan-2027 |
| 340 | Interiors | RI & Finishes | Zone 5 | Low Voltage | LV-1 | Safety/Security & Troubleshooting - Zone 5 | 12-Jan-2027 | 22-Feb-2027 |
| 341 | Milestone | All | Building | McGough | MG-6 | GMP Issued | 04-Mar-2025 | 07-Mar-2025 |
| 342 | Interiors | RI & Finishes | Zone 1 | Framer | FR-8 | Install Door Frames - Zone 1 | 11-Feb-2026 | 24-Feb-2026 |
| 343 | Interiors | RI & Finishes | Zone 6 | Doors | DOOR-2 | Install Door Frames - Zone 6 | 07-May-2026 | 07-May-2026 |
| 344 | Interiors | RI & Finishes | Zone 3 | Framer | FR-9 | Paint Final Coat - Zone 3 | 21-May-2026 | 28-May-2026 |
| 345 | Interiors | RI & Finishes | Zone 6 | Drywall | DRY-1 | Two Side Walls - Zone 6 | 10-Jun-2026 | 18-Jun-2026 |
| 346 | Interiors | RI & Finishes | Zone 6 | Drywall | DRY-2 | Tape & Float - Zone 6 | 19-Jun-2026 | 02-Jul-2026 |
| 347 | Interiors | RI & Finishes | Zone 4 | Paint | PA-3 | Paint Final Coat - Zone 4 | 05-Jun-2026 | 11-Jun-2026 |
| 348 | Interiors | RI & Finishes | Zone 5 | Paint | PA-3 | Paint Final Coat - Zone 5 | 19-Jun-2026 | 25-Jun-2026 |
| 349 | Interiors | RI & Finishes | Zone 6 | Framer | FR-9 | Paint Final Coat - Zone 6 | 06-Jul-2026 | 10-Jul-2026 |
| 350 | Interiors | RI & Finishes | Zone 5 | Framer | FR-10 | Two Side Walls - Zone 5 | 27-May-2026 | 04-Jun-2026 |

| entry | phase | location | area | trade | activity_code | activity_name | start | finish |
| --- | --- | --- | --- | --- | --- | --- | --- | --- |
| 351 | Interiors | RI & Finishes | Zone 6 | Drywall | DRY-4 | Install Hard Lid Ceilings - Zone 6 | 09-Jul-2026 | 03-Aug-2026 |
| 352 | Interiors | RI & Finishes | Zone 4 | Flooring | FL-6 | Install LVT Flooring - Zone 4 | 07-Jul-2026 | 13-Jul-2026 |
| 353 | Interiors | RI & Finishes | Zone 3 | Flooring | FL-6 | Install LVT Flooring - Zone 3 | 22-Jun-2026 | 26-Jun-2026 |
| 354 | Interiors | RI & Finishes | Zone 6 | Tile | T-1 | Install Wet Work (Patient & Staff Restrooms) - Zone 6 | 08-Sep-2026 | 23-Nov-2026 |
| 355 | Interiors | RI & Finishes | Zone 6 | Electrical | EL-9 | Electrical Fixtures & Trim Out - Zone 6 | 09-Sep-2026 | 20-Oct-2026 |
| 356 | Interiors | RI & Finishes | Zone 1 | Flooring | FL-6 | Install LVT Flooring - Zone 1 | 15-May-2026 | 19-Jun-2026 |
| 357 | Interiors | RI & Finishes | Zone 6 | Millwork | MILL-1 | Install Millwork - Zone 6 | 04-Nov-2026 | 17-Mar-2027 |
| 358 | Interiors | RI & Finishes | Zone 4 | Flooring | FL-7 | Install Athletic Gym Vinyl Flooring - Zone 4 | 11-Aug-2026 | 24-Aug-2026 |
| 359 | Interiors | RI & Finishes | Zone 6 | Plumbing | PLU-2 | Plumbing Fixtures & Trim Out - Zone 6 | 24-Nov-2026 | 12-Jan-2027 |
| 360 | Interiors | RI & Finishes | Zone 6 | Doors | DOOR-1 | Install Doors & Hardware - Zone 6 | 12-Jan-2027 | 04-Mar-2027 |
| 361 | Interiors | RI & Finishes | Zone 6 | Low Voltage | LV-1 | Safety/Security & Troubleshooting - Zone 6 | 05-Mar-2027 | 15-Apr-2027 |
| 362 | Interiors | RI & Finishes | Zone 6 | Specialties | SPE-2 | Care Team Station Finishes - Zone 6 | 18-Mar-2027 | 28-Apr-2027 |
| 363 | Punchlist | FF&E | FF&E | McGough | MG-7 | FF&E | 27-Jan-2027 | 30-Mar-2027 |
| 364 | Interiors | RI & Finishes | Zone 7A | Specialties | SPE-3 | Finishes In Courtyard - Zone 7A | 15-Sep-2026 | 26-Jan-2027 |
| 365 | Interiors | RI & Finishes | Zone 7B | Specialties | SPE-3 | Finishes In Courtyard - Zone 7B | 07-May-2026 | 14-Sep-2026 |
| 366 | Milestone | Design | Building | McGough | MG-8 | DD GMP Pricing Completion | 20-Dec-2024 | 29-Jan-2025 |
| 367 | Commissioning | Testing | Testing | Fire Alarm | FA-1 | Fire Alarm Testing | 18-Dec-2024 | 18-Mar-2025 |
| 368 | Commissioning | Testing | Testing | Mechanical | MEC-6 | Test & Balance | 15-Sep-2026 | 09-Mar-2027 |
| 369 | Commissioning | Testing | Testing | Commissioner | CX-1 | Testing All Systems | 16-Apr-2027 | 12-Jul-2027 |
| 370 | Commissioning | Testing | Testing | Low Voltage | LV-2 | Security/Access Controls Testing (Cameras, Badge Readers, Panic Buttons, etc.) | 16-Apr-2027 | 12-Jul-2027 |
| 371 | Commissioning | Testing | Testing | Owner | OW-1 | Owner Test & Balance | 06-May-2027 | 30-Jul-2027 |
| 372 | Commissioning | Commissioning | Commissioning | Commissioner | CX-2 | Commissioning All Systems | 28-May-2027 | 19-Oct-2027 |
| 373 | Punchlist | Punchlist | Punchlist | Architect | PUN-1 | Project Punchlist | 25-Mar-2027 | 05-May-2027 |
| 374 | Milestone | Design | Building | McGough | MG-9 | Cost Reconciliation | 30-Jan-2025 | 12-Feb-2025 |
