| entry | phase | location | trade | activity_code | activity_name | start | finish |
| --- | --- | --- | --- | --- | --- | --- | --- |
| 1 | Commissioning (L2 - L5) COLO3 | C3 Energizations & Startups (Level 3) CELL 1 | Electrical | E22 | Control Power Checks | 04-Jun-2025 | 12-Jun-2025 |
| 2 | Commissioning (L2 - L5) COLO3 | C3 Energizations & Startups (Level 3) CELL 2 | Electrical | E22 | Control Power Checks | 09-Jun-2025 | 18-Jun-2025 |
| 3 | Commissioning (L2 - L5) COLO3 | C3 Energizations & Startups (Level 3) CELL 4 | Electrical | E22 | Control Power Checks | 13-Jun-2025 | 23-Jun-2025 |
| 4 | Commissioning (L2 - L5) COLO3 | C3 Energizations & Startups (Level 3) CELL 3 | Electrical | E22 | Control Power Checks | 24-Jun-2025 | 07-Jul-2025 |
| 5 | Commissioning (L2 - L5) COLO3 | C3 Energizations & Startups (Level 3) CELL 1 | Electrical | E21 | EPMS Point to Point Checks | 13-Jun-2025 | 23-Jun-2025 |
| 6 | Commissioning (L2 - L5) COLO3 | C3 Energizations & Startups (Level 3) CELL 2 | Electrical | E21 | EPMS Point to Point Checks | 19-Jun-2025 | 27-Jun-2025 |
| 7 | Commissioning (L2 - L5) COLO3 | C3 Energizations & Startups (Level 3) CELL 4 | Electrical | E21 | EPMS Point to Point Checks | 24-Jun-2025 | 02-Jul-2025 |
| 8 | Commissioning (L2 - L5) COLO3 | C3 Energizations & Startups (Level 3) CELL 3 | Electrical | E21 | EPMS Point to Point Checks | 08-Jul-2025 | 18-Jul-2025 |
| 9 | Commissioning (L2 - L5) COLO3 | C3 Energizations & Startups (Level 3) CELL 1 | Electrical | E20 | FTE Energizations [480v] | 25-Jun-2025 | 28-Jun-2025 |
| 10 | Commissioning (L2 - L5) COLO3 | C3 Energizations & Startups (Level 3) CELL 2 | Electrical | E20 | FTE Energizations [480v] | 28-Jun-2025 | 02-Jul-2025 |
| 11 | Commissioning (L2 - L5) COLO3 | C3 Energizations & Startups (Level 3) CELL 4 | Electrical | E20 | FTE Energizations [480v] | 03-Jul-2025 | 09-Jul-2025 |
| 12 | Commissioning (L2 - L5) COLO3 | C3 Energizations & Startups (Level 3) CELL 3 | Electrical | E20 | FTE Energizations [480v] | 19-Jul-2025 | 24-Jul-2025 |
| 13 | Commissioning (L2 - L5) COLO3 | C3 Energizations & Startups (Level 3) | Electrical | E19 | Install Metering Cabinet [Prior to Energization] | 19-Jun-2025 | 24-Jun-2025 |
| 14 | Commissioning (L2 - L5) COLO3 | C3 Energizations & Startups (Level 3) CELL 1 | Electrical | E16 | Loadbanking | 16-Jul-2025 | 19-Jul-2025 |
| 15 | Commissioning (L2 - L5) COLO3 | C3 Energizations & Startups (Level 3) CELL 2 | Electrical | E16 | Loadbanking | 21-Jul-2025 | 24-Jul-2025 |
| 16 | Commissioning (L2 - L5) COLO3 | C3 Energizations & Startups (Level 3) CELL 4 | Electrical | E16 | Loadbanking | 25-Jul-2025 | 30-Jul-2025 |
| 17 | Commissioning (L2 - L5) COLO3 | C3 Energizations & Startups (Level 3) CELL 3 | Electrical | E16 | Loadbanking | 09-Aug-2025 | 14-Aug-2025 |
| 18 | Commissioning (L2 - L5) COLO3 | C3 Energizations & Startups (Level 3) CELL 1 | Electrical | E15 | Startups | 30-Jun-2025 | 15-Jul-2025 |
| 19 | Commissioning (L2 - L5) COLO3 | C3 Energizations & Startups (Level 3) CELL 2 | Electrical | E15 | Startups | 03-Jul-2025 | 18-Jul-2025 |
| 20 | Commissioning (L2 - L5) COLO3 | C3 Energizations & Startups (Level 3) CELL 4 | Electrical | E15 | Startups | 10-Jul-2025 | 23-Jul-2025 |
| 21 | Commissioning (L2 - L5) COLO3 | C3 Energizations & Startups (Level 3) CELL 3 | Electrical | E15 | Startups | 25-Jul-2025 | 08-Aug-2025 |
| 22 | Commissioning (L2 - L5) COLO3 | C3 Functional Testing (Level 4) | MSFT | W2 | Testing L4 <MSFT Duration> | 15-Aug-2025 | 15-Sep-2025 |
| 23 | Commissioning (L2 - L5) COLO3 | C3 Functional Testing (Level 5) | MSFT | W3 | Testing L5 <MSFT Duration> | 16-Sep-2025 | 18-Sep-2025 |
| 24 | Commissioning (L2 - L5) COLO3 | C3 Yellow Tags (Level 2) CELL 1 | Electrical | EE24 | Yellow Tags | 05-May-2025 | 28-May-2025 |
| 25 | Commissioning (L2 - L5) COLO3 | C3 Yellow Tags (Level 2) CELL 2 | Electrical | EE24 | Yellow Tags | 15-May-2025 | 07-Jun-2025 |
| 26 | Commissioning (L2 - L5) COLO3 | C3 Yellow Tags (Level 2) CELL 4 | Electrical | EE24 | Yellow Tags | 27-May-2025 | 18-Jun-2025 |
| 27 | Commissioning (L2 - L5) COLO3 | C3 Yellow Tags (Level 2) CELL 3 | Electrical | EE24 | Yellow Tags | 09-Jun-2025 | 02-Jul-2025 |
| 28 | Commissioning (L2 - L5) COLO4 | C4 Energizations & Startups (Level 3) CELL 1 | Electrical | E22 | Control Power Checks | 20-Jun-2025 | 28-Jun-2025 |
| 29 | Commissioning (L2 - L5) COLO4 | C4 Energizations & Startups (Level 3) CELL 2 | Electrical | E22 | Control Power Checks | 25-Jun-2025 | 03-Jul-2025 |
| 30 | Commissioning (L2 - L5) COLO4 | C4 Energizations & Startups (Level 3) CELL 4 | Electrical | E22 | Control Power Checks | 18-Jul-2025 | 28-Jul-2025 |
| 31 | Commissioning (L2 - L5) COLO4 | C4 Energizations & Startups (Level 3) CELL 3 | Electrical | E22 | Control Power Checks | 06-Aug-2025 | 14-Aug-2025 |
| 32 | Commissioning (L2 - L5) COLO4 | C4 Energizations & Startups (Level 3) CELL 1 | Electrical | E21 | EPMS Point to Point Checks | 30-Jun-2025 | 10-Jul-2025 |
| 33 | Commissioning (L2 - L5) COLO4 | C4 Energizations & Startups (Level 3) CELL 2 | Electrical | E21 | EPMS Point to Point Checks | 07-Jul-2025 | 15-Jul-2025 |
| 34 | Commissioning (L2 - L5) COLO4 | C4 Energizations & Startups (Level 3) CELL 4 | Electrical | E21 | EPMS Point to Point Checks | 29-Jul-2025 | 06-Aug-2025 |
| 35 | Commissioning (L2 - L5) COLO4 | C4 Energizations & Startups (Level 3) CELL 3 | Electrical | E21 | EPMS Point to Point Checks | 15-Aug-2025 | 25-Aug-2025 |
| 36 | Commissioning (L2 - L5) COLO4 | C4 Energizations & Startups (Level 3) CELL 1 | Electrical | E20 | FTE Energizations [480v] | 11-Jul-2025 | 15-Jul-2025 |
| 37 | Commissioning (L2 - L5) COLO4 | C4 Energizations & Startups (Level 3) CELL 2 | Electrical | E20 | FTE Energizations [480v] | 16-Jul-2025 | 19-Jul-2025 |
| 38 | Commissioning (L2 - L5) COLO4 | C4 Energizations & Startups (Level 3) CELL 4 | Electrical | E20 | FTE Energizations [480v] | 07-Aug-2025 | 11-Aug-2025 |
| 39 | Commissioning (L2 - L5) COLO4 | C4 Energizations & Startups (Level 3) CELL 3 | Electrical | E20 | FTE Energizations [480v] | 26-Aug-2025 | 29-Aug-2025 |
| 40 | Commissioning (L2 - L5) COLO4 | C4 Energizations & Startups (Level 3) CELL 1 | Electrical | E16 | Loadbanking | 31-Jul-2025 | 04-Aug-2025 |
| 41 | Commissioning (L2 - L5) COLO4 | C4 Energizations & Startups (Level 3) CELL 2 | Electrical | E16 | Loadbanking | 05-Aug-2025 | 08-Aug-2025 |
| 42 | Commissioning (L2 - L5) COLO4 | C4 Energizations & Startups (Level 3) CELL 4 | Electrical | E16 | Loadbanking | 27-Aug-2025 | 30-Aug-2025 |
| 43 | Commissioning (L2 - L5) COLO4 | C4 Energizations & Startups (Level 3) CELL 3 | Electrical | E16 | Loadbanking | 16-Sep-2025 | 19-Sep-2025 |
| 44 | Commissioning (L2 - L5) COLO4 | C4 Energizations & Startups (Level 3) CELL 2 | Electrical | E15 | Startups | 21-Jul-2025 | 04-Aug-2025 |
| 45 | Commissioning (L2 - L5) COLO4 | C4 Energizations & Startups (Level 3) CELL 1 | Electrical | E15 | Startups | 16-Jul-2025 | 30-Jul-2025 |
| 46 | Commissioning (L2 - L5) COLO4 | C4 Energizations & Startups (Level 3) CELL 4 | Electrical | E15 | Startups | 12-Aug-2025 | 26-Aug-2025 |
| 47 | Commissioning (L2 - L5) COLO4 | C4 Energizations & Startups (Level 3) CELL 3 | Electrical | E15 | Startups | 30-Aug-2025 | 15-Sep-2025 |
| 48 | Commissioning (L2 - L5) COLO4 | C4 Functional Testing (Level 4) | MSFT | W1 | Testing <MSFT Duration> | 20-Sep-2025 | 16-Oct-2025 |
| 49 | Commissioning (L2 - L5) COLO4 | C4 Functional Testing (Level 5) | MSFT | W1 | Testing <MSFT Duration> | 17-Oct-2025 | 20-Oct-2025 |
| 50 | Commissioning (L2 - L5) COLO4 | C4 Yellow Tags (Level 2) CELL 1 | Electrical | EE24 | Yellow Tags | 06-May-2025 | 29-May-2025 |
| 51 | Commissioning (L2 - L5) COLO4 | C4 Yellow Tags (Level 2) CELL 2 | Electrical | EE24 | Yellow Tags | 31-May-2025 | 24-Jun-2025 |
| 52 | Commissioning (L2 - L5) COLO4 | C4 Yellow Tags (Level 2) CELL 4 | Electrical | EE24 | Yellow Tags | 27-Jun-2025 | 22-Jul-2025 |
| 53 | Commissioning (L2 - L5) COLO4 | C4 Yellow Tags (Level 2) CELL 3 | Electrical | EE24 | Yellow Tags | 22-Jul-2025 | 14-Aug-2025 |
| 54 | Commissioning (L2 - L5) COLO5 | C5 Energizations & Startups (Level 3) CELL 1 | Electrical | E22 | Control Power Checks | 19-Jul-2025 | 29-Jul-2025 |
| 55 | Commissioning (L2 - L5) COLO5 | C5 Energizations & Startups (Level 3) CELL 2 | Electrical | E22 | Control Power Checks | 24-Jul-2025 | 02-Aug-2025 |
| 56 | Commissioning (L2 - L5) COLO5 | C5 Energizations & Startups (Level 3) CELL 4 | Electrical | E22 | Control Power Checks | 04-Aug-2025 | 12-Aug-2025 |
| 57 | Commissioning (L2 - L5) COLO5 | C5 Energizations & Startups (Level 3) CELL 3 | Electrical | E22 | Control Power Checks | 25-Aug-2025 | 03-Sep-2025 |
| 58 | Commissioning (L2 - L5) COLO5 | C5 Energizations & Startups (Level 3) CELL 1 | Electrical | E21 | EPMS Point to Point Checks | 30-Jul-2025 | 07-Aug-2025 |
| 59 | Commissioning (L2 - L5) COLO5 | C5 Energizations & Startups (Level 3) CELL 2 | Electrical | E21 | EPMS Point to Point Checks | 04-Aug-2025 | 12-Aug-2025 |
| 60 | Commissioning (L2 - L5) COLO5 | C5 Energizations & Startups (Level 3) CELL 4 | Electrical | E21 | EPMS Point to Point Checks | 13-Aug-2025 | 22-Aug-2025 |
| 61 | Commissioning (L2 - L5) COLO5 | C5 Energizations & Startups (Level 3) CELL 3 | Electrical | E21 | EPMS Point to Point Checks | 04-Sep-2025 | 13-Sep-2025 |
| 62 | Commissioning (L2 - L5) COLO5 | C5 Energizations & Startups (Level 3) CELL 1 | Electrical | E20 | FTE Energizations [480v] | 08-Aug-2025 | 12-Aug-2025 |
| 63 | Commissioning (L2 - L5) COLO5 | C5 Energizations & Startups (Level 3) CELL 2 | Electrical | E20 | FTE Energizations [480v] | 13-Aug-2025 | 18-Aug-2025 |
| 64 | Commissioning (L2 - L5) COLO5 | C5 Energizations & Startups (Level 3) CELL 4 | Electrical | E20 | FTE Energizations [480v] | 23-Aug-2025 | 27-Aug-2025 |
| 65 | Commissioning (L2 - L5) COLO5 | C5 Energizations & Startups (Level 3) CELL 3 | Electrical | E20 | FTE Energizations [480v] | 15-Sep-2025 | 19-Sep-2025 |
| 66 | Commissioning (L2 - L5) COLO5 | C5 Energizations & Startups (Level 3) CELL 1 | Electrical | E16 | Loadbanking | 28-Aug-2025 | 02-Sep-2025 |
| 67 | Commissioning (L2 - L5) COLO5 | C5 Energizations & Startups (Level 3) CELL 2 | Electrical | E16 | Loadbanking | 03-Sep-2025 | 08-Sep-2025 |
| 68 | Commissioning (L2 - L5) COLO5 | C5 Energizations & Startups (Level 3) CELL 4 | Electrical | E16 | Loadbanking | 13-Sep-2025 | 17-Sep-2025 |
| 69 | Commissioning (L2 - L5) COLO5 | C5 Energizations & Startups (Level 3) CELL 3 | Electrical | E16 | Loadbanking | 06-Oct-2025 | 11-Oct-2025 |
| 70 | Commissioning (L2 - L5) COLO5 | C5 Energizations & Startups (Level 3) CELL 1 | Electrical | E15 | Startups | 13-Aug-2025 | 27-Aug-2025 |

| entry | phase | location | trade | activity_code | activity_name | start | finish |
| --- | --- | --- | --- | --- | --- | --- | --- |
| 71 | Commissioning (L2 - L5) COLO5 | C5 Energizations & Startups (Level 3) CELL 2 | Electrical | E15 | Startups | 19-Aug-2025 | 02-Sep-2025 |
| 72 | Commissioning (L2 - L5) COLO5 | C5 Energizations & Startups (Level 3) CELL 4 | Electrical | E15 | Startups | 28-Aug-2025 | 12-Sep-2025 |
| 73 | Commissioning (L2 - L5) COLO5 | C5 Energizations & Startups (Level 3) CELL 3 | Electrical | E15 | Startups | 20-Sep-2025 | 04-Oct-2025 |
| 74 | Commissioning (L2 - L5) COLO5 | C5 Functional Testing (Level 4) | MSFT | W1 | Testing <MSFT Duration> | 17-Oct-2025 | 15-Nov-2025 |
| 75 | Commissioning (L2 - L5) COLO5 | C5 Functional Testing (Level 5) | MSFT | W1 | Testing <MSFT Duration> | 17-Nov-2025 | 19-Nov-2025 |
| 76 | Commissioning (L2 - L5) COLO5 | C5 Yellow Tags (Level 2) CELL 1 | Electrical | EE24 | Yellow Tags | 05-Jun-2025 | 28-Jun-2025 |
| 77 | Commissioning (L2 - L5) COLO5 | C5 Yellow Tags (Level 2) CELL 2 | Electrical | EE24 | Yellow Tags | 28-Jun-2025 | 23-Jul-2025 |
| 78 | Commissioning (L2 - L5) COLO5 | C5 Yellow Tags (Level 2) CELL 4 | Electrical | EE24 | Yellow Tags | 15-Jul-2025 | 07-Aug-2025 |
| 79 | Commissioning (L2 - L5) COLO5 | C5 Yellow Tags (Level 2) CELL 3 | Electrical | EE24 | Yellow Tags | 09-Aug-2025 | 03-Sep-2025 |
| 80 | Core & Shell | Admin/ COLO 3 | Drywall | D3 | Install Exterior Wall Panels | 18-Nov-2024 | 29-Nov-2024 |
| 81 | Core & Shell | COLO 4 | Drywall | D3 | Install Exterior Wall Panels | 21-Nov-2024 | 14-Dec-2024 |
| 82 | Core & Shell | COLO 5 | Drywall | D3 | Install Exterior Wall Panels | 04-Dec-2024 | 31-Dec-2024 |
| 83 | Core & Shell | Admin/ COLO 3 | Mech | S4 | Install Louvers & Dampers | 16-Dec-2024 | 06-Jan-2025 |
| 84 | Core & Shell | COLO 4 | Mech | M4 | Install Louvers & Dampers | 07-Jan-2025 | 25-Jan-2025 |
| 85 | Core & Shell | COLO 5 | Mech | M4 | Install Louvers & Dampers | 27-Jan-2025 | 14-Feb-2025 |
| 86 | Core & Shell | Admin/ COLO 3 | Framing | X36 | Install Misc. Metals (Trims, Gutters, Catwalks) | 30-Dec-2024 | 17-Jan-2025 |
| 87 | Core & Shell | COLO 4 | Framing | X36 | Install Misc. Metals (Trims, Gutters, Catwalks) | 11-Jan-2025 | 30-Jan-2025 |
| 88 | Core & Shell | COLO 5 | Framing | X36 | Install Misc. Metals (Trims, Gutters, Catwalks) | 27-Jan-2025 | 14-Feb-2025 |
| 89 | Core & Shell | Admin/ COLO 3 | Framing | X37 | Install Primary Steel | 14-Oct-2024 | 07-Nov-2024 |
| 90 | Core & Shell | COLO 4 | Framing | X37 | Install Primary Steel | 01-Nov-2024 | 20-Nov-2024 |
| 91 | Core & Shell | COLO 5 | Framing | X37 | Install Primary Steel | 12-Nov-2024 | 03-Dec-2024 |
| 92 | Core & Shell | Admin/ COLO 3 | Framing | X8 | Install Roof Panels | 30-Nov-2024 | 14-Dec-2024 |
| 93 | Core & Shell | COLO 4 | Framing | X8 | Install Roof Panels | 16-Dec-2024 | 31-Dec-2024 |
| 94 | Core & Shell | COLO 5 | Framing | X8 | Install Roof Panels | 02-Jan-2025 | 15-Jan-2025 |
| 95 | Core & Shell | Admin/ COLO 3 | SOG | F2 | Prep / Place SOG | 16-Dec-2024 | 27-Dec-2024 |
| 96 | Core & Shell | COLO 4 | SOG | F2 | Prep / Place SOG | 30-Dec-2024 | 10-Jan-2025 |
| 97 | Core & Shell | COLO 5 | SOG | F2 | Prep / Place SOG | 14-Jan-2025 | 25-Jan-2025 |
| 98 | Core & Shell | Admin/ COLO 3 | Electrical | E14 | UG MEP Work AMS | 13-Nov-2024 | 14-Dec-2024 |
| 99 | Core & Shell | COLO 4 | Electrical | E14 | UG MEP Work AMS | 04-Dec-2024 | 27-Dec-2024 |
| 100 | Core & Shell | COLO 5 | Electrical | E14 | UG MEP Work AMS | 17-Dec-2024 | 13-Jan-2025 |
| 101 | Core & Shell | Admin/ COLO 3 | Buffer | BW | Weather Days | 30-Dec-2024 | 16-Jan-2025 |
| 102 | Electrical Yard | Admin/ COLO 3 | Electrical | E26 | Build Equipment Pads for Generators | 20-Feb-2025 | 03-Mar-2025 |
| 103 | Electrical Yard | COLO 4 | Electrical | E26 | Build Equipment Pads for Generators | 27-Mar-2025 | 05-Apr-2025 |
| 104 | Electrical Yard | COLO 5 | Electrical | E26 | Build Equipment Pads for Generators | 30-Apr-2025 | 10-May-2025 |
| 105 | Electrical Yard | Admin/ COLO 3 | Electrical | E25 | Build Equipment Pads for UMSs | 10-Feb-2025 | 19-Feb-2025 |
| 106 | Electrical Yard | COLO 4 | Electrical | E25 | Build Equipment Pads for UMSs | 15-Mar-2025 | 26-Mar-2025 |
| 107 | Electrical Yard | COLO 5 | Electrical | E25 | Build Equipment Pads for UMSs | 19-Apr-2025 | 29-Apr-2025 |
| 108 | Electrical Yard | Admin/ COLO 3 | Electrical | E24 | Build Equipment Pads for UPMs | 29-Jan-2025 | 07-Feb-2025 |
| 109 | Electrical Yard | COLO 4 | Electrical | E24 | Build Equipment Pads for UPMs | 05-Mar-2025 | 14-Mar-2025 |
| 110 | Electrical Yard | COLO 5 | Electrical | E24 | Build Equipment Pads for UPMs | 08-Apr-2025 | 18-Apr-2025 |
| 111 | Electrical Yard | Admin/ COLO 3 | Electrical | E23 | Build Equipment Pads for XFMs | 17-Jan-2025 | 28-Jan-2025 |
| 112 | Electrical Yard | COLO 4 | Electrical | E23 | Build Equipment Pads for XFMs | 21-Feb-2025 | 04-Mar-2025 |
| 113 | Electrical Yard | COLO 5 | Electrical | E23 | Build Equipment Pads for XFMs | 28-Mar-2025 | 07-Apr-2025 |
| 114 | Electrical Yard | Admin/ COLO 3 | Electrical | E28 | Install Generators | 04-Mar-2025 | 15-Mar-2025 |
| 115 | Electrical Yard | COLO 4 | Electrical | E28 | Install Generators | 11-Apr-2025 | 24-Apr-2025 |
| 116 | Electrical Yard | COLO 5 | Electrical | E28 | Install Generators | 19-May-2025 | 31-May-2025 |
| 117 | Electrical Yard | Admin/ COLO 3 | Electrical | E29 | Install UMSs | 04-Mar-2025 | 15-Mar-2025 |
| 118 | Electrical Yard | COLO 4 | Electrical | E29 | Install UMSs | 02-Apr-2025 | 15-Apr-2025 |
| 119 | Electrical Yard | COLO 5 | Electrical | E29 | Install UMSs | 16-May-2025 | 29-May-2025 |
| 120 | Electrical Yard | Admin/ COLO 3 | Electrical | E30 | Install UPMs | 04-Mar-2025 | 15-Mar-2025 |
| 121 | Electrical Yard | COLO 4 | Electrical | E30 | Install UPMs | 02-Apr-2025 | 15-Apr-2025 |
| 122 | Electrical Yard | COLO 5 | Electrical | E30 | Install UPMs | 14-May-2025 | 27-May-2025 |
| 123 | Electrical Yard | Admin/ COLO 3 | Electrical | E27 | Install XFMs | 04-Mar-2025 | 15-Mar-2025 |
| 124 | Electrical Yard | COLO 4 | Electrical | E27 | Install XFMs | 02-Apr-2025 | 15-Apr-2025 |
| 125 | Electrical Yard | COLO 5 | Electrical | E27 | Install XFMs | 12-May-2025 | 23-May-2025 |
| 126 | Electrical Yard | Admin/ COLO 3 CELL 1 | Electrical | E35 | MV Cable Pulling & Terminating | 25-Apr-2025 | 05-May-2025 |
| 127 | Electrical Yard | Admin/ COLO 3 CELL 2 | Electrical | E35 | MV Cable Pulling & Terminating | 06-May-2025 | 14-May-2025 |
| 128 | Electrical Yard | Admin/ COLO 3 CELL 4 | Electrical | E35 | MV Cable Pulling & Terminating | 15-May-2025 | 23-May-2025 |
| 129 | Electrical Yard | Admin/ COLO 3 CELL 3 | Electrical | E35 | MV Cable Pulling & Terminating | 27-May-2025 | 03-Jun-2025 |
| 130 | Electrical Yard | COLO 4 CELL1 | Electrical | E35 | MV Cable Pulling & Terminating | 25-Apr-2025 | 05-May-2025 |
| 131 | Electrical Yard | COLO 4 CELL2 | Electrical | E35 | MV Cable Pulling & Terminating | 06-May-2025 | 14-May-2025 |
| 132 | Electrical Yard | COLO 4 CELL 4 | Electrical | E35 | MV Cable Pulling & Terminating | 15-May-2025 | 23-May-2025 |
| 133 | Electrical Yard | COLO 4 CELL 3 | Electrical | E35 | MV Cable Pulling & Terminating | 27-May-2025 | 04-Jun-2025 |
| 134 | Electrical Yard | COLO 5 CELL1 | Electrical | E40 | MV Cable Pulling & Terminating(To Junction Box) | 02-May-2025 | 12-May-2025 |
| 135 | Electrical Yard | COLO 5 CELL 2 | Electrical | E40 | MV Cable Pulling & Terminating(To Junction Box) | 13-May-2025 | 21-May-2025 |
| 136 | Electrical Yard | COLO 5 CELL 4 | Electrical | E40 | MV Cable Pulling & Terminating(To Junction Box) | 22-May-2025 | 31-May-2025 |
| 137 | Electrical Yard | COLO 5 CELL 3 | Electrical | E40 | MV Cable Pulling & Terminating(To Junction Box) | 02-Jun-2025 | 10-Jun-2025 |
| 138 | Electrical Yard | COLO 5 CELL 1 | Electrical | E41 | Terminate MV Gear | 30-May-2025 | 03-Jun-2025 |
| 139 | Electrical Yard | COLO 5 CELL 2 | Electrical | E41 | Terminate MV Gear | 04-Jun-2025 | 07-Jun-2025 |
| 140 | Electrical Yard | COLO 5 CELL 4 | Electrical | E41 | Terminate MV Gear | 09-Jun-2025 | 12-Jun-2025 |

| entry | phase | location | trade | activity_code | activity_name | start | finish |
| --- | --- | --- | --- | --- | --- | --- | --- |
| 141 | Electrical Yard | COLO 5 CELL 3 | Electrical | E41 | Terminate MV Gear | 13-Jun-2025 | 18-Jun-2025 |
| 142 | Fitout Admin Area | Beneficial Use Rooms Electrical Rooms | Electrical | EE28 | Cable Tray / Ceiling Steel Height | 04-Feb-2025 | 04-Feb-2025 |
| 143 | Fitout Admin Area | Remaining Rooms Fire Riser Room | Framing | X17 | Ceiling Grid & Tile | 18-Feb-2025 | 21-Feb-2025 |
| 144 | Fitout Admin Area | Remaining Rooms Restrooms & Janitor Room | Framing | X17 | Ceiling Grid & Tile | 18-Feb-2025 | 21-Feb-2025 |
| 145 | Fitout Admin Area | Remaining Rooms Fire Riser Room | Fire Protection | R11 | Complete Pipe/ Valves | 22-Feb-2025 | 24-Feb-2025 |
| 146 | Fitout Admin Area | Beneficial Use Rooms SER (Security Equip Room) | Drywall | D5 | Finish Drywall | 06-Feb-2025 | 07-Feb-2025 |
| 147 | Fitout Admin Area | Beneficial Use Rooms Storage (High Value & Secure) Rooms | Drywall | D5 | Finish Drywall | 26-Feb-2025 | 03-Mar-2025 |
| 148 | Fitout Admin Area | Remaining Rooms Fire Riser Room | Drywall | D5 | Finish Drywall | 12-Feb-2025 | 13-Feb-2025 |
| 149 | Fitout Admin Area | Remaining Rooms Restrooms & Janitor Room | Drywall | D5 | Finish Drywall | 13-Feb-2025 | 14-Feb-2025 |
| 150 | Fitout Admin Area | Remaining Rooms Loading Dock | Drywall | D5 | Finish Drywall | 15-Feb-2025 | 17-Feb-2025 |
| 151 | Fitout Admin Area | Beneficial Use Rooms Electrical Rooms | Drywall | D6 | Finish Drywall and Wall Protection | 28-Jan-2025 | 31-Jan-2025 |
| 152 | Fitout Admin Area | Beneficial Use Rooms Entry Room1 | Drywall | D6 | Finish Drywall and Wall Protection | 30-Jan-2025 | 03-Feb-2025 |
| 153 | Fitout Admin Area | Beneficial Use Rooms Entry Room2 | Drywall | D6 | Finish Drywall and Wall Protection | 01-Feb-2025 | 05-Feb-2025 |
| 154 | Fitout Admin Area | Beneficial Use Rooms FCR (Facilities Control Room) | Drywall | D6 | Finish Drywall and Wall Protection | 04-Feb-2025 | 07-Feb-2025 |
| 155 | Fitout Admin Area | Beneficial Use Rooms Electrical Rooms | Fire Protection | R4 | Fire Protection OH R/I | 20-Jan-2025 | 20-Jan-2025 |
| 156 | Fitout Admin Area | Beneficial Use Rooms Entry Room1 | Fire Protection | R4 | Fire Protection OH R/I | 21-Jan-2025 | 21-Jan-2025 |
| 157 | Fitout Admin Area | Beneficial Use Rooms Entry Room2 | Fire Protection | R4 | Fire Protection OH R/I | 22-Jan-2025 | 22-Jan-2025 |
| 158 | Fitout Admin Area | Beneficial Use Rooms FCR (Facilities Control Room) | Fire Protection | R4 | Fire Protection OH R/I | 23-Jan-2025 | 23-Jan-2025 |
| 159 | Fitout Admin Area | Beneficial Use Rooms SER (Security Equip Room) | Fire Protection | R4 | Fire Protection OH R/I | 24-Jan-2025 | 24-Jan-2025 |
| 160 | Fitout Admin Area | Beneficial Use Rooms Storage (High Value & Secure) Rooms | Fire Protection | R4 | Fire Protection OH R/I | 25-Jan-2025 | 25-Jan-2025 |
| 161 | Fitout Admin Area | Remaining Rooms Fire Riser Room | Fire Protection | R4 | Fire Protection OH R/I | 27-Jan-2025 | 27-Jan-2025 |
| 162 | Fitout Admin Area | Remaining Rooms Restrooms & Janitor Room | Fire Protection | R4 | Fire Protection OH R/I | 28-Jan-2025 | 28-Jan-2025 |
| 163 | Fitout Admin Area | Remaining Rooms Loading Dock | Fire Protection | R4 | Fire Protection OH R/I | 29-Jan-2025 | 29-Jan-2025 |
| 164 | Fitout Admin Area | Beneficial Use Rooms Storage (High Value & Secure) Rooms | CLAYCO | C1 | Fit-out | 06-Mar-2025 | 17-Mar-2025 |
| 165 | Fitout Admin Area | Beneficial Use Rooms Electrical Rooms | Framing | X21 | Framing | 21-Jan-2025 | 21-Jan-2025 |
| 166 | Fitout Admin Area | Beneficial Use Rooms Entry Room1 | Framing | X21 | Framing | 22-Jan-2025 | 22-Jan-2025 |
| 167 | Fitout Admin Area | Beneficial Use Rooms Entry Room2 | Framing | X21 | Framing | 23-Jan-2025 | 23-Jan-2025 |
| 168 | Fitout Admin Area | Beneficial Use Rooms FCR (Facilities Control Room) | Framing | X21 | Framing | 24-Jan-2025 | 24-Jan-2025 |
| 169 | Fitout Admin Area | Beneficial Use Rooms SER (Security Equip Room) | Framing | X21 | Framing | 25-Jan-2025 | 25-Jan-2025 |
| 170 | Fitout Admin Area | Beneficial Use Rooms Storage (High Value & Secure) Rooms | Framing | X21 | Framing | 27-Jan-2025 | 27-Jan-2025 |
| 171 | Fitout Admin Area | Remaining Rooms Fire Riser Room | Framing | X21 | Framing | 28-Jan-2025 | 28-Jan-2025 |
| 172 | Fitout Admin Area | Remaining Rooms Restrooms & Janitor Room | Framing | X21 | Framing | 29-Jan-2025 | 29-Jan-2025 |
| 173 | Fitout Admin Area | Remaining Rooms Loading Dock | Framing | X21 | Framing | 30-Jan-2025 | 30-Jan-2025 |
| 174 | Fitout Admin Area | Remaining Rooms Admin Gen Finishes & Punch | Framing | X34 | Install Doors | 22-Feb-2025 | 26-Feb-2025 |
| 175 | Fitout Admin Area | Remaining Rooms Fire Riser Room | Framing | X35 | Install downcomers | 31-Jan-2025 | 31-Jan-2025 |
| 176 | Fitout Admin Area | Remaining Rooms Fire Riser Room | Mech | M1 | Install Duct Work | 29-Jan-2025 | 30-Jan-2025 |
| 177 | Fitout Admin Area | Remaining Rooms Loading Dock | Mech | M1 | Install Ductwork | 29-Jan-2025 | 15-Feb-2025 |
| 178 | Fitout Admin Area | Remaining Rooms Loading Dock | Mech | M2 | Install Ductwork (Remaining Rooms, Corridor) | 30-Jan-2025 | 17-Feb-2025 |
| 179 | Fitout Admin Area | Beneficial Use Rooms Storage (High Value & Secure) Rooms | Mech | M3 | Install Ductwork and Cracs | 07-Feb-2025 | 25-Feb-2025 |
| 180 | Fitout Admin Area | Beneficial Use Rooms Entry Room1 | Electrical | EE45 | Install Raceway | 06-Feb-2025 | 10-Feb-2025 |
| 181 | Fitout Admin Area | Beneficial Use Rooms Entry Room2 | Electrical | EE45 | Install Raceway | 10-Feb-2025 | 12-Feb-2025 |
| 182 | Fitout Admin Area | Beneficial Use Rooms FCR (Facilities Control Room) | Electrical | EE45 | Install Raceway | 12-Feb-2025 | 14-Feb-2025 |
| 183 | Fitout Admin Area | Beneficial Use Rooms SER (Security Equip Room) | Electrical | EE45 | Install Raceway | 12-Feb-2025 | 14-Feb-2025 |
| 184 | Fitout Admin Area | Remaining Rooms Admin Gen Finishes & Punch | Electrical | EEA | Light Fixtures Installation | 27-Feb-2025 | 11-Mar-2025 |
| 185 | Fitout Admin Area | Beneficial Use Rooms Electrical Rooms | MEP | MEP1 | MEP Rough-In & OH | 22-Jan-2025 | 23-Jan-2025 |
| 186 | Fitout Admin Area | Beneficial Use Rooms Entry Room1 | MEP | MEP1 | MEP Rough-In & OH | 24-Jan-2025 | 25-Jan-2025 |
| 187 | Fitout Admin Area | Beneficial Use Rooms Entry Room2 | MEP | MEP1 | MEP Rough-In & OH | 27-Jan-2025 | 28-Jan-2025 |
| 188 | Fitout Admin Area | Beneficial Use Rooms FCR (Facilities Control Room) | MEP | MEP1 | MEP Rough-In & OH | 29-Jan-2025 | 30-Jan-2025 |
| 189 | Fitout Admin Area | Beneficial Use Rooms SER (Security Equip Room) | MEP | MEP1 | MEP Rough-In & OH | 31-Jan-2025 | 01-Feb-2025 |
| 190 | Fitout Admin Area | Beneficial Use Rooms Storage (High Value & Secure) Rooms | MEP | MEP1 | MEP Rough-In & OH | 03-Feb-2025 | 04-Feb-2025 |
| 191 | Fitout Admin Area | Remaining Rooms Fire Riser Room | MEP | MEP1 | MEP Rough-In & OH | 05-Feb-2025 | 06-Feb-2025 |
| 192 | Fitout Admin Area | Remaining Rooms Restrooms & Janitor Room | MEP | MEP1 | MEP Rough-In & OH | 07-Feb-2025 | 10-Feb-2025 |
| 193 | Fitout Admin Area | Remaining Rooms Loading Dock | MEP | MEP1 | MEP Rough-In & OH | 11-Feb-2025 | 12-Feb-2025 |
| 194 | Fitout Admin Area | Beneficial Use Rooms Electrical Rooms | Painting | Y1 | Paint | 01-Feb-2025 | 03-Feb-2025 |
| 195 | Fitout Admin Area | Beneficial Use Rooms Entry Room1 | Painting | Y1 | Paint | 04-Feb-2025 | 05-Feb-2025 |
| 196 | Fitout Admin Area | Beneficial Use Rooms Entry Room2 | Painting | Y1 | Paint | 06-Feb-2025 | 07-Feb-2025 |
| 197 | Fitout Admin Area | Beneficial Use Rooms FCR (Facilities Control Room) | Painting | Y1 | Paint | 10-Feb-2025 | 11-Feb-2025 |
| 198 | Fitout Admin Area | Beneficial Use Rooms SER (Security Equip Room) | Painting | Y1 | Paint | 10-Feb-2025 | 11-Feb-2025 |
| 199 | Fitout Admin Area | Beneficial Use Rooms Storage (High Value & Secure) Rooms | Painting | Y1 | Paint | 04-Mar-2025 | 05-Mar-2025 |
| 200 | Fitout Admin Area | Remaining Rooms Fire Riser Room | Painting | Y1 | Paint | 14-Feb-2025 | 15-Feb-2025 |
| 201 | Fitout Admin Area | Remaining Rooms Restrooms & Janitor Room | Painting | Y1 | Paint | 15-Feb-2025 | 17-Feb-2025 |
| 202 | Fitout Admin Area | Remaining Rooms Loading Dock | Painting | Y1 | Paint | 18-Feb-2025 | 19-Feb-2025 |
| 203 | Fitout Admin Area | Remaining Rooms Loading Dock | Plumbing | P5 | Plumbing | 20-Feb-2025 | 10-Mar-2025 |
| 204 | Fitout Admin Area | Beneficial Use Rooms Electrical Rooms | Electrical | EE46 | Pull Branches | 29-Mar-2025 | 11-Apr-2025 |
| 205 | Fitout Admin Area | Remaining Rooms Loading Dock | Electrical | EE29 | Pull Cables | 11-Mar-2025 | 13-Mar-2025 |
| 206 | Fitout Admin Area | Beneficial Use Rooms FCR (Facilities Control Room) | Telecom | T3 | Pull Copper for BAS VLAN | 21-Mar-2025 | 04-Apr-2025 |
| 207 | Fitout Admin Area | Beneficial Use Rooms FCR (Facilities Control Room) | Telecom | T4 | Pull Copper for EPMS VLAN | 20-Feb-2025 | 06-Mar-2025 |
| 208 | Fitout Admin Area | Beneficial Use Rooms FCR (Facilities Control Room) | Telecom | T5 | Pull Copper for Tahuya VLAN | 07-Mar-2025 | 20-Mar-2025 |
| 209 | Fitout Admin Area | Beneficial Use Rooms Electrical Rooms | Electrical | EE49 | Pull Feeders | 12-Mar-2025 | 28-Mar-2025 |
| 210 | Fitout Admin Area | Beneficial Use Rooms FCR (Facilities Control Room) | Telecom | T6 | Pull Fiber For BAS VLAN | 21-Mar-2025 | 04-Apr-2025 |

| entry | phase | location | trade | activity_code | activity_name | start | finish |
| --- | --- | --- | --- | --- | --- | --- | --- |
| 211 | Fitout Admin Area | Beneficial Use Rooms FCR (Facilities Control Room) | Telecom | T7 | Pull Fiber For CEI Network | 21-Apr-2025 | 05-May-2025 |
| 212 | Fitout Admin Area | Beneficial Use Rooms FCR (Facilities Control Room) | Telecom | T8 | Pull Fiber For EPMS VLAN | 20-Feb-2025 | 06-Mar-2025 |
| 213 | Fitout Admin Area | Beneficial Use Rooms FCR (Facilities Control Room) | Telecom | T9 | Pull Fiber For Tahuya VLAN | 07-Mar-2025 | 20-Mar-2025 |
| 214 | Fitout Admin Area | Beneficial Use Rooms FCR (Facilities Control Room) | Telecom | T10 | Pull Fiber/Copper For CORPNET Network | 05-Apr-2025 | 19-Apr-2025 |
| 215 | Fitout Admin Area | Beneficial Use Rooms Punchlist | CLAYCO | CP | PunchList | 06-May-2025 | 09-May-2025 |
| 216 | Fitout Admin Area | Remaining Rooms Admin Gen Finishes & Punch | CLAYCO | CPP | Remaining Area Punchlist | 12-Mar-2025 | 17-Mar-2025 |
| 217 | Fitout Admin Area | Remaining Rooms Loading Dock | MEP | MEP2 | Rough-in | 31-Jan-2025 | 31-Jan-2025 |
| 218 | Fitout Admin Area | Beneficial Use Rooms Electrical Rooms | Framing | X16 | Secondary / Ceiling Steel | 27-Jan-2025 | 27-Jan-2025 |
| 219 | Fitout Admin Area | Beneficial Use Rooms Entry Room1 | Framing | X16 | Secondary / Ceiling Steel | 29-Jan-2025 | 29-Jan-2025 |
| 220 | Fitout Admin Area | Beneficial Use Rooms Entry Room2 | Framing | X16 | Secondary / Ceiling Steel | 31-Jan-2025 | 31-Jan-2025 |
| 221 | Fitout Admin Area | Beneficial Use Rooms FCR (Facilities Control Room) | Framing | X16 | Secondary / Ceiling Steel | 03-Feb-2025 | 03-Feb-2025 |
| 222 | Fitout Admin Area | Beneficial Use Rooms SER (Security Equip Room) | Framing | X16 | Secondary / Ceiling Steel | 05-Feb-2025 | 05-Feb-2025 |
| 223 | Fitout Admin Area | Remaining Rooms Fire Riser Room | Framing | X16 | Secondary / Ceiling Steel | 11-Feb-2025 | 11-Feb-2025 |
| 224 | Fitout Admin Area | Beneficial Use Rooms Electrical Rooms | Electrical | EE51 | Set Electrical Equipment | 03-Mar-2025 | 11-Mar-2025 |
| 225 | Fitout Admin Area | Beneficial Use Rooms Entry Room1 | Electrical | EE52 | Set ER-1 Equipment | 11-Feb-2025 | 14-Feb-2025 |
| 226 | Fitout Admin Area | Beneficial Use Rooms Entry Room2 | Electrical | EE53 | Set ER-2 Equipment | 13-Feb-2025 | 17-Feb-2025 |
| 227 | Fitout Admin Area | Beneficial Use Rooms FCR (Facilities Control Room) | Electrical | EE54 | Set FCR Equipment | 15-Feb-2025 | 19-Feb-2025 |
| 228 | Fitout Admin Area | Beneficial Use Rooms SER (Security Equip Room) | Electrical | EE55 | Set SER Room Equipment | 15-Feb-2025 | 19-Feb-2025 |
| 229 | Fitout Admin Area | Beneficial Use Rooms Electrical Rooms | Electrical | EE56 | Terminate Electrical / Mechanical Equipment | 14-Apr-2025 | 17-Apr-2025 |
| 230 | Fitout Admin Area | Beneficial Use Rooms Electrical Rooms | Drywall | D4 | Top Out Drywall - Ceiling Steel Height | 24-Jan-2025 | 25-Jan-2025 |
| 231 | Fitout Admin Area | Beneficial Use Rooms Entry Room1 | Drywall | D4 | Top Out Drywall - Ceiling Steel Height | 27-Jan-2025 | 28-Jan-2025 |
| 232 | Fitout Admin Area | Beneficial Use Rooms Entry Room2 | Drywall | D4 | Top Out Drywall - Ceiling Steel Height | 29-Jan-2025 | 30-Jan-2025 |
| 233 | Fitout Admin Area | Beneficial Use Rooms FCR (Facilities Control Room) | Drywall | D4 | Top Out Drywall - Ceiling Steel Height | 31-Jan-2025 | 01-Feb-2025 |
| 234 | Fitout Admin Area | Beneficial Use Rooms SER (Security Equip Room) | Drywall | D4 | Top Out Drywall - Ceiling Steel Height | 03-Feb-2025 | 04-Feb-2025 |
| 235 | Fitout Admin Area | Beneficial Use Rooms Storage (High Value & Secure) Rooms | Drywall | D4 | Top Out Drywall - Ceiling Steel Height | 05-Feb-2025 | 06-Feb-2025 |
| 236 | Fitout Admin Area | Remaining Rooms Fire Riser Room | Drywall | D4 | Top Out Drywall - Ceiling Steel Height | 07-Feb-2025 | 10-Feb-2025 |
| 237 | Fitout Admin Area | Remaining Rooms Restrooms & Janitor Room | Drywall | D4 | Top Out Drywall - Ceiling Steel Height | 11-Feb-2025 | 12-Feb-2025 |
| 238 | Fitout Admin Area | Remaining Rooms Loading Dock | Drywall | D4 | Top Out Drywall - Ceiling Steel Height | 13-Feb-2025 | 14-Feb-2025 |
| 239 | Fitout COLO3 | C3 CELL 1 Data Hall | HACs | S1 | Assemble HACs [Qty - 5] | 22-Feb-2025 | 27-Feb-2025 |
| 240 | Fitout COLO3 | C3 CELL 2 Data Hall | HACs | S1 | Assemble HACs [Qty - 5] | 04-Mar-2025 | 08-Mar-2025 |
| 241 | Fitout COLO3 | C3 CELL 3 Data Hall | HACs | S1 | Assemble HACs [Qty - 5] | 27-Mar-2025 | 01-Apr-2025 |
| 242 | Fitout COLO3 | C3 CELL 4 Data Hall | HACs | S1 | Assemble HACs [Qty - 5] | 14-Mar-2025 | 19-Mar-2025 |
| 243 | Fitout COLO3 | C3 CELL 1 Data Hall | Electrical | EE43 | Connect Perimeter Cable Trays to HAC Cable Trays | 11-Mar-2025 | 13-Mar-2025 |
| 244 | Fitout COLO3 | C3 CELL 2 Data Hall | Electrical | EE43 | Connect Perimeter Cable Trays to HAC Cable Trays | 19-Mar-2025 | 21-Mar-2025 |
| 245 | Fitout COLO3 | C3 CELL 3 Data Hall | Electrical | EE43 | Connect Perimeter Cable Trays to HAC Cable Trays | 11-Apr-2025 | 15-Apr-2025 |
| 246 | Fitout COLO3 | C3 CELL 4 Data Hall | Electrical | EE43 | Connect Perimeter Cable Trays to HAC Cable Trays | 31-Mar-2025 | 02-Apr-2025 |
| 247 | Fitout COLO3 | C3 CELL 1 Data Hall | HACs | S4 | Detail HACs | 11-Mar-2025 | 14-Mar-2025 |
| 248 | Fitout COLO3 | C3 CELL 2 Data Hall | HACs | S4 | Detail HACs | 19-Mar-2025 | 24-Mar-2025 |
| 249 | Fitout COLO3 | C3 CELL 3 Data Hall | HACs | S4 | Detail HACs | 11-Apr-2025 | 16-Apr-2025 |
| 250 | Fitout COLO3 | C3 CELL 4 Data Hall | HACs | S4 | Detail HACs | 31-Mar-2025 | 03-Apr-2025 |
| 251 | Fitout COLO3 | C3 CELL 4 Data Hall | Framing | X30 | Drop Cable Tray [Hanging Rods] | 24-Feb-2025 | 25-Feb-2025 |
| 252 | Fitout COLO3 | C3 CELL 1 Data Hall | Framing | X30 | Drop Cable Tray [Hanging Rods] | 06-Feb-2025 | 07-Feb-2025 |
| 253 | Fitout COLO3 | C3 CELL 1 Electrical Room | Framing | X30 | Drop Cable Tray [Hanging Rods] | 15-Feb-2025 | 15-Feb-2025 |
| 254 | Fitout COLO3 | C3 CELL 1 Mechanical Gallery | Framing | X30 | Drop Cable Tray [Hanging Rods] | 06-Mar-2025 | 06-Mar-2025 |
| 255 | Fitout COLO3 | C3 CELL 2 Data Hall | Framing | X30 | Drop Cable Tray [Hanging Rods] | 13-Feb-2025 | 14-Feb-2025 |
| 256 | Fitout COLO3 | C3 CELL 2 Electrical Room | Framing | X30 | Drop Cable Tray [Hanging Rods] | 13-Feb-2025 | 13-Feb-2025 |
| 257 | Fitout COLO3 | C3 CELL 2 Mechanical Gallery | Framing | X30 | Drop Cable Tray [Hanging Rods] | 04-Mar-2025 | 04-Mar-2025 |
| 258 | Fitout COLO3 | C3 CELL 3 Data Hall | Framing | X30 | Drop Cable Tray [Hanging Rods] | 08-Mar-2025 | 10-Mar-2025 |
| 259 | Fitout COLO3 | C3 CELL 3 Electrical Room | Framing | X30 | Drop Cable Tray [Hanging Rods] | 08-Mar-2025 | 08-Mar-2025 |
| 260 | Fitout COLO3 | C3 CELL 3 Mechanical Gallery | Framing | X30 | Drop Cable Tray [Hanging Rods] | 27-Mar-2025 | 27-Mar-2025 |
| 261 | Fitout COLO3 | C3 CELL 4 Electrical Room | Framing | X30 | Drop Cable Tray [Hanging Rods] | 24-Feb-2025 | 24-Feb-2025 |
| 262 | Fitout COLO3 | C3 CELL 4 Mechanical Gallery | Framing | X30 | Drop Cable Tray [Hanging Rods] | 14-Mar-2025 | 14-Mar-2025 |
| 263 | Fitout COLO3 | C3 CELL 1 Data Hall | Drywall | D5 | Finish Drywall | 01-Feb-2025 | 04-Feb-2025 |
| 264 | Fitout COLO3 | C3 CELL 1 Electrical Room | Drywall | D5 | Finish Drywall | 22-Feb-2025 | 04-Mar-2025 |
| 265 | Fitout COLO3 | C3 CELL 1 Mechanical Gallery | Drywall | D5 | Finish Drywall | 06-Mar-2025 | 07-Mar-2025 |
| 266 | Fitout COLO3 | C3 CELL 2 Data Hall | Drywall | D5 | Finish Drywall | 11-Feb-2025 | 13-Feb-2025 |
| 267 | Fitout COLO3 | C3 CELL 2 Electrical Room | Drywall | D5 | Finish Drywall | 13-Feb-2025 | 14-Feb-2025 |
| 268 | Fitout COLO3 | C3 CELL 2 Mechanical Gallery | Drywall | D5 | Finish Drywall | 04-Mar-2025 | 05-Mar-2025 |
| 269 | Fitout COLO3 | C3 CELL 3 Data Hall | Drywall | D5 | Finish Drywall | 06-Mar-2025 | 08-Mar-2025 |
| 270 | Fitout COLO3 | C3 CELL 3 Electrical Room | Drywall | D5 | Finish Drywall | 08-Mar-2025 | 10-Mar-2025 |
| 271 | Fitout COLO3 | C3 CELL 3 Mechanical Gallery | Drywall | D5 | Finish Drywall | 27-Mar-2025 | 28-Mar-2025 |
| 272 | Fitout COLO3 | C3 CELL 4 Data Hall | Drywall | D5 | Finish Drywall | 21-Feb-2025 | 24-Feb-2025 |
| 273 | Fitout COLO3 | C3 CELL 4 Electrical Room | Drywall | D5 | Finish Drywall | 24-Feb-2025 | 25-Feb-2025 |
| 274 | Fitout COLO3 | C3 CELL 4 Mechanical Gallery | Drywall | D5 | Finish Drywall | 14-Mar-2025 | 15-Mar-2025 |
| 275 | Fitout COLO3 | C3 CELL 1 Data Hall | Fire Protection | R4 | Fire Protection OH R/I | 29-Jan-2025 | 31-Jan-2025 |
| 276 | Fitout COLO3 | C3 CELL 1 Electrical Room | Fire Protection | R4 | Fire Protection OH R/I | 11-Feb-2025 | 12-Feb-2025 |
| 277 | Fitout COLO3 | C3 CELL 1 Mechanical Gallery | Fire Protection | R4 | Fire Protection OH R/I | 13-Feb-2025 | 14-Feb-2025 |
| 278 | Fitout COLO3 | C3 CELL 2 Data Hall | Fire Protection | R4 | Fire Protection OH R/I | 06-Feb-2025 | 10-Feb-2025 |
| 279 | Fitout COLO3 | C3 CELL 2 Electrical Room | Fire Protection | R4 | Fire Protection OH R/I | 07-Feb-2025 | 10-Feb-2025 |
| 280 | Fitout COLO3 | C3 CELL 2 Mechanical Gallery | Fire Protection | R4 | Fire Protection OH R/I | 11-Feb-2025 | 12-Feb-2025 |

| entry | phase | location | trade | activity_code | activity_name | start | finish |
| --- | --- | --- | --- | --- | --- | --- | --- |
| 281 | Fitout COLO3 | C3 CELL 3 Data Hall | Fire Protection | R4 | Fire Protection OH R/I | 03-Mar-2025 | 05-Mar-2025 |
| 282 | Fitout COLO3 | C3 CELL 3 Electrical Room | Fire Protection | R4 | Fire Protection OH R/I | 04-Mar-2025 | 05-Mar-2025 |
| 283 | Fitout COLO3 | C3 CELL 3 Mechanical Gallery | Fire Protection | R4 | Fire Protection OH R/I | 06-Mar-2025 | 07-Mar-2025 |
| 284 | Fitout COLO3 | C3 CELL 2 Mechanical Gallery | CLAYCO | CC | General Cleaning | 08-Mar-2025 | 11-Mar-2025 |
| 285 | Fitout COLO3 | C3 CELL 3 Mechanical Gallery | CLAYCO | CC | General Cleaning | 01-Apr-2025 | 03-Apr-2025 |
| 286 | Fitout COLO3 | C3 CELL 1 Data Hall | CLAYCO | CC | General Cleaning | 18-Feb-2025 | 18-Feb-2025 |
| 287 | Fitout COLO3 | C3 CELL 1 Electrical Room | CLAYCO | CC | General Cleaning | 07-Mar-2025 | 07-Mar-2025 |
| 288 | Fitout COLO3 | C3 CELL 1 Mechanical Gallery | CLAYCO | CC | General Cleaning | 11-Mar-2025 | 13-Mar-2025 |
| 289 | Fitout COLO3 | C3 CELL 2 Data Hall | CLAYCO | CC | General Cleaning | 26-Feb-2025 | 26-Feb-2025 |
| 290 | Fitout COLO3 | C3 CELL 2 Electrical Room | CLAYCO | CC | General Cleaning | 18-Feb-2025 | 18-Feb-2025 |
| 291 | Fitout COLO3 | C3 CELL 3 Data Hall | CLAYCO | CC | General Cleaning | 21-Mar-2025 | 21-Mar-2025 |
| 292 | Fitout COLO3 | C3 CELL 3 Electrical Room | CLAYCO | CC | General Cleaning | 13-Mar-2025 | 13-Mar-2025 |
| 293 | Fitout COLO3 | C3 CELL 4 Data Hall | CLAYCO | CC | General Cleaning | 10-Mar-2025 | 10-Mar-2025 |
| 294 | Fitout COLO3 | C3 CELL 4 Electrical Room | CLAYCO | CC | General Cleaning | 28-Feb-2025 | 28-Feb-2025 |
| 295 | Fitout COLO3 | C3 CELL 4 Mechanical Gallery | CLAYCO | CC | General Cleaning | 19-Mar-2025 | 21-Mar-2025 |
| 296 | Fitout COLO3 | C3 CELL 1 Data Hall | Drywall | D1 | In-Wall R/I | 25-Jan-2025 | 28-Jan-2025 |
| 297 | Fitout COLO3 | C3 CELL 1 Electrical Room | Drywall | D1 | In-Wall R/I | 31-Jan-2025 | 10-Feb-2025 |
| 298 | Fitout COLO3 | C3 CELL 2 Data Hall | Drywall | D1 | In-Wall R/I | 03-Feb-2025 | 05-Feb-2025 |
| 299 | Fitout COLO3 | C3 CELL 2 Electrical Room | Drywall | D1 | In-Wall R/I | 05-Feb-2025 | 06-Feb-2025 |
| 300 | Fitout COLO3 | C3 CELL 3 Data Hall | Drywall | D1 | In-Wall R/I | 26-Feb-2025 | 28-Feb-2025 |
| 301 | Fitout COLO3 | C3 CELL 3 Electrical Room | Drywall | D1 | In-Wall R/I | 28-Feb-2025 | 03-Mar-2025 |
| 302 | Fitout COLO3 | C3 CELL 4 Data Hall | Drywall | D1 | In-Wall R/I | 14-Feb-2025 | 17-Feb-2025 |
| 303 | Fitout COLO3 | C3 CELL 4 Electrical Room | Drywall | D1 | In-Wall R/I | 17-Feb-2025 | 18-Feb-2025 |
| 304 | Fitout COLO3 | C3 CELL 1 Mechanical Gallery | BAS | BA | Install BAS Equipments | 12-Mar-2025 | 24-Mar-2025 |
| 305 | Fitout COLO3 | C3 CELL 2 Mechanical Gallery | BAS | BA | Install BAS Equipments | 10-Mar-2025 | 20-Mar-2025 |
| 306 | Fitout COLO3 | C3 CELL 3 Mechanical Gallery | BAS | BA | Install BAS Equipments | 02-Apr-2025 | 14-Apr-2025 |
| 307 | Fitout COLO3 | C3 CELL 4 Mechanical Gallery | BAS | BA | Install BAS Equipments | 20-Mar-2025 | 01-Apr-2025 |
| 308 | Fitout COLO3 | C3 CELL 1 Data Hall | Electrical | EE39 | Install Busways on HAC Arms | 25-Feb-2025 | 03-Mar-2025 |
| 309 | Fitout COLO3 | C3 CELL 2 Data Hall | Electrical | EE39 | Install Busways on HAC Arms | 06-Mar-2025 | 11-Mar-2025 |
| 310 | Fitout COLO3 | C3 CELL 3 Data Hall | Electrical | EE39 | Install Busways on HAC Arms | 29-Mar-2025 | 03-Apr-2025 |
| 311 | Fitout COLO3 | C3 CELL 4 Data Hall | Electrical | EE39 | Install Busways on HAC Arms | 17-Mar-2025 | 21-Mar-2025 |
| 312 | Fitout COLO3 | C3 CELL 1 Electrical Room | Electrical | EE35 | Install Cable Trays / Pathways | 17-Feb-2025 | 18-Feb-2025 |
| 313 | Fitout COLO3 | C3 CELL 1 Mechanical Gallery | Electrical | EE35 | Install Cable Trays / Pathways | 12-Mar-2025 | 13-Mar-2025 |
| 314 | Fitout COLO3 | C3 CELL 2 Electrical Room | Electrical | EE35 | Install Cable Trays / Pathways | 14-Feb-2025 | 15-Feb-2025 |
| 315 | Fitout COLO3 | C3 CELL 2 Mechanical Gallery | Electrical | EE35 | Install Cable Trays / Pathways | 10-Mar-2025 | 11-Mar-2025 |
| 316 | Fitout COLO3 | C3 CELL 3 Electrical Room | Electrical | EE35 | Install Cable Trays / Pathways | 10-Mar-2025 | 11-Mar-2025 |
| 317 | Fitout COLO3 | C3 CELL 3 Mechanical Gallery | Electrical | EE35 | Install Cable Trays / Pathways | 02-Apr-2025 | 03-Apr-2025 |
| 318 | Fitout COLO3 | C3 CELL 4 Electrical Room | Electrical | EE35 | Install Cable Trays / Pathways | 25-Feb-2025 | 26-Feb-2025 |
| 319 | Fitout COLO3 | C3 CELL 4 Mechanical Gallery | Electrical | EE35 | Install Cable Trays / Pathways | 20-Mar-2025 | 21-Mar-2025 |
| 320 | Fitout COLO3 | C3 CELL 1 Data Hall | Framing | X26 | Install Ceiling Grid | 18-Feb-2025 | 21-Feb-2025 |
| 321 | Fitout COLO3 | C3 CELL 2 Data Hall | Framing | X26 | Install Ceiling Grid | 26-Feb-2025 | 03-Mar-2025 |
| 322 | Fitout COLO3 | C3 CELL 3 Data Hall | Framing | X26 | Install Ceiling Grid | 21-Mar-2025 | 26-Mar-2025 |
| 323 | Fitout COLO3 | C3 CELL 4 Data Hall | Framing | X26 | Install Ceiling Grid | 10-Mar-2025 | 13-Mar-2025 |
| 324 | Fitout COLO3 | C3 CELL 1 Mechanical Gallery | Framing | X27 | Install Ceiling Grid + Device Tiles | 07-Mar-2025 | 11-Mar-2025 |
| 325 | Fitout COLO3 | C3 CELL 2 Mechanical Gallery | Framing | X27 | Install Ceiling Grid + Device Tiles | 05-Mar-2025 | 08-Mar-2025 |
| 326 | Fitout COLO3 | C3 CELL 3 Mechanical Gallery | Framing | X27 | Install Ceiling Grid + Device Tiles | 28-Mar-2025 | 01-Apr-2025 |
| 327 | Fitout COLO3 | C3 CELL 4 Mechanical Gallery | Framing | X27 | Install Ceiling Grid + Device Tiles | 15-Mar-2025 | 19-Mar-2025 |
| 328 | Fitout COLO3 | C3 CELL 1 Data Hall | Electrical | EE43 | Install Conduits PDU to Cable Trays | 14-Mar-2025 | 17-Mar-2025 |
| 329 | Fitout COLO3 | C3 CELL 2 Data Hall | Electrical | EE43 | Install Conduits PDU to Cable Trays | 24-Mar-2025 | 26-Mar-2025 |
| 330 | Fitout COLO3 | C3 CELL 3 Data Hall | Electrical | EE43 | Install Conduits PDU to Cable Trays | 16-Apr-2025 | 18-Apr-2025 |
| 331 | Fitout COLO3 | C3 CELL 4 Data Hall | Electrical | EE43 | Install Conduits PDU to Cable Trays | 03-Apr-2025 | 05-Apr-2025 |
| 332 | Fitout COLO3 | C3 CELL 1 Data Hall | Framing | X35 | Install Device Tiles | 27-Feb-2025 | 28-Feb-2025 |
| 333 | Fitout COLO3 | C3 CELL 2 Data Hall | Framing | X35 | Install Device Tiles | 08-Mar-2025 | 10-Mar-2025 |
| 334 | Fitout COLO3 | C3 CELL 3 Data Hall | Framing | X35 | Install Device Tiles | 01-Apr-2025 | 02-Apr-2025 |
| 335 | Fitout COLO3 | C3 CELL 4 Data Hall | Framing | X35 | Install Device Tiles | 19-Mar-2025 | 20-Mar-2025 |
| 336 | Fitout COLO3 | C3 CELL 1 Mechanical Gallery | Drywall | D2 | Install Drywall | 04-Mar-2025 | 05-Mar-2025 |
| 337 | Fitout COLO3 | C3 CELL 2 Mechanical Gallery | Drywall | D2 | Install Drywall | 28-Feb-2025 | 03-Mar-2025 |
| 338 | Fitout COLO3 | C3 CELL 1 Data Hall | Drywall | D2 | Install Drywall | 29-Jan-2025 | 31-Jan-2025 |
| 339 | Fitout COLO3 | C3 CELL 2 Data Hall | Drywall | D2 | Install Drywall | 06-Feb-2025 | 10-Feb-2025 |
| 340 | Fitout COLO3 | C3 CELL 3 Data Hall | Drywall | D2 | Install Drywall | 03-Mar-2025 | 05-Mar-2025 |
| 341 | Fitout COLO3 | C3 CELL 4 Data Hall | Drywall | D2 | Install Drywall | 18-Feb-2025 | 20-Feb-2025 |
| 342 | Fitout COLO3 | C3 CELL 1 Electrical Room | Drywall | D2 | Install Drywall | 11-Feb-2025 | 21-Feb-2025 |
| 343 | Fitout COLO3 | C3 CELL 2 Electrical Room | Drywall | D2 | Install Drywall | 07-Feb-2025 | 12-Feb-2025 |
| 344 | Fitout COLO3 | C3 CELL 3 Electrical Room | Drywall | D2 | Install Drywall | 04-Mar-2025 | 07-Mar-2025 |
| 345 | Fitout COLO3 | C3 CELL 4 Electrical Room | Drywall | D2 | Install Drywall | 19-Feb-2025 | 22-Feb-2025 |
| 346 | Fitout COLO3 | C3 CELL 3 Mechanical Gallery | Drywall | D2 | Install Drywall | 25-Mar-2025 | 26-Mar-2025 |
| 347 | Fitout COLO3 | C3 CELL 4 Mechanical Gallery | Drywall | D2 | Install Drywall | 12-Mar-2025 | 13-Mar-2025 |
| 348 | Fitout COLO3 | C3 CELL 1 Data Hall | Electrical | EE11 | Install Fiber Runner [ Cable Trays on HAC Arms] | 27-Feb-2025 | 05-Mar-2025 |
| 349 | Fitout COLO3 | C3 CELL 2 Data Hall | Electrical | EE11 | Install Fiber Runner [ Cable Trays on HAC Arms] | 08-Mar-2025 | 13-Mar-2025 |
| 350 | Fitout COLO3 | C3 CELL 3 Data Hall | Electrical | EE11 | Install Fiber Runner [ Cable Trays on HAC Arms] | 01-Apr-2025 | 05-Apr-2025 |

| entry | phase | location | trade | activity_code | activity_name | start | finish |
| --- | --- | --- | --- | --- | --- | --- | --- |
| 351 | Fitout COLO3 | C3 CELL 4 Data Hall | Electrical | EE11 | Install Fiber Runner [ Cable Trays on HAC Arms] | 19-Mar-2025 | 25-Mar-2025 |
| 352 | Fitout COLO3 | C3 CELL 1 Data Hall | Framing | X21 | Framing | 20-Jan-2025 | 24-Jan-2025 |
| 353 | Fitout COLO3 | C3 CELL 1 Electrical Room | Framing | X21 | Framing | 25-Jan-2025 | 30-Jan-2025 |
| 354 | Fitout COLO3 | C3 CELL 2 Data Hall | Framing | X21 | Framing | 30-Jan-2025 | 01-Feb-2025 |
| 355 | Fitout COLO3 | C3 CELL 2 Electrical Room | Framing | X21 | Framing | 03-Feb-2025 | 04-Feb-2025 |
| 356 | Fitout COLO3 | C3 CELL 3 Data Hall | Framing | X21 | Framing | 22-Feb-2025 | 25-Feb-2025 |
| 357 | Fitout COLO3 | C3 CELL 3 Electrical Room | Framing | X21 | Framing | 26-Feb-2025 | 27-Feb-2025 |
| 358 | Fitout COLO3 | C3 CELL 4 Data Hall | Framing | X21 | Framing | 11-Feb-2025 | 13-Feb-2025 |
| 359 | Fitout COLO3 | C3 CELL 4 Electrical Room | Framing | X21 | Framing | 14-Feb-2025 | 15-Feb-2025 |
| 360 | Fitout COLO3 | C3 CELL 1 Data Hall | Electrical | EE44 | Install Perimeter Cable Trays | 22-Feb-2025 | 26-Feb-2025 |
| 361 | Fitout COLO3 | C3 CELL 2 Data Hall | Electrical | EE44 | Install Perimeter Cable Trays | 04-Mar-2025 | 07-Mar-2025 |
| 362 | Fitout COLO3 | C3 CELL 3 Data Hall | Electrical | EE44 | Install Perimeter Cable Trays | 27-Mar-2025 | 31-Mar-2025 |
| 363 | Fitout COLO3 | C3 CELL 4 Data Hall | Electrical | EE44 | Install Perimeter Cable Trays | 14-Mar-2025 | 18-Mar-2025 |
| 364 | Fitout COLO3 | C3 CELL 1 Data Hall | Framing | X19 | Install Screen Mesh + Caulking | 10-Feb-2025 | 12-Feb-2025 |
| 365 | Fitout COLO3 | C3 CELL 2 Data Hall | Framing | X19 | Install Screen Mesh + Caulking | 18-Feb-2025 | 20-Feb-2025 |
| 366 | Fitout COLO3 | C3 CELL 3 Data Hall | Framing | X19 | Install Screen Mesh + Caulking | 13-Mar-2025 | 15-Mar-2025 |
| 367 | Fitout COLO3 | C3 CELL 4 Data Hall | Framing | X19 | Install Screen Mesh + Caulking | 28-Feb-2025 | 04-Mar-2025 |
| 368 | Fitout COLO3 | C3 CELL 1 Data Hall | Framing | X38 | Install Secondary Steel | 13-Feb-2025 | 14-Feb-2025 |
| 369 | Fitout COLO3 | C3 CELL 2 Data Hall | Framing | X38 | Install Secondary Steel | 21-Feb-2025 | 22-Feb-2025 |
| 370 | Fitout COLO3 | C3 CELL 3 Data Hall | Framing | X38 | Install Secondary Steel | 17-Mar-2025 | 18-Mar-2025 |
| 371 | Fitout COLO3 | C3 CELL 4 Data Hall | Framing | X38 | Install Secondary Steel | 05-Mar-2025 | 06-Mar-2025 |
| 372 | Fitout COLO3 | C3 CELL 1 Data Hall | Framing | X9 | Layout Framing | 17-Jan-2025 | 17-Jan-2025 |
| 373 | Fitout COLO3 | C3 CELL 2 Data Hall | Framing | X9 | Layout Framing | 29-Jan-2025 | 29-Jan-2025 |
| 374 | Fitout COLO3 | C3 CELL 3 Data Hall | Framing | X9 | Layout Framing | 21-Feb-2025 | 21-Feb-2025 |
| 375 | Fitout COLO3 | C3 CELL 4 Data Hall | Framing | X9 | Layout Framing | 10-Feb-2025 | 10-Feb-2025 |
| 376 | Fitout COLO3 | C3 CELL 4 Data Hall | Electrical | EE1 | Overhead R/I - Electrical | 21-Feb-2025 | 25-Feb-2025 |
| 377 | Fitout COLO3 | C3 CELL 1 Data Hall | Electrical | EE1 | Overhead R/I - Electrical | 01-Feb-2025 | 05-Feb-2025 |
| 378 | Fitout COLO3 | C3 CELL 1 Electrical Room | Electrical | EE1 | Overhead R/I - Electrical | 13-Feb-2025 | 15-Feb-2025 |
| 379 | Fitout COLO3 | C3 CELL 1 Mechanical Gallery | Electrical | EE1 | Overhead R/I - Electrical | 15-Feb-2025 | 18-Feb-2025 |
| 380 | Fitout COLO3 | C3 CELL 2 Data Hall | Electrical | EE1 | Overhead R/I - Electrical | 11-Feb-2025 | 14-Feb-2025 |
| 381 | Fitout COLO3 | C3 CELL 2 Electrical Room | Electrical | EE1 | Overhead R/I - Electrical | 11-Feb-2025 | 13-Feb-2025 |
| 382 | Fitout COLO3 | C3 CELL 2 Mechanical Gallery | Electrical | EE1 | Overhead R/I - Electrical | 13-Feb-2025 | 15-Feb-2025 |
| 383 | Fitout COLO3 | C3 CELL 3 Data Hall | Electrical | EE1 | Overhead R/I - Electrical | 06-Mar-2025 | 10-Mar-2025 |
| 384 | Fitout COLO3 | C3 CELL 3 Electrical Room | Electrical | EE1 | Overhead R/I - Electrical | 06-Mar-2025 | 08-Mar-2025 |
| 385 | Fitout COLO3 | C3 CELL 3 Mechanical Gallery | Electrical | EE1 | Overhead R/I - Electrical | 08-Mar-2025 | 11-Mar-2025 |
| 386 | Fitout COLO3 | C3 CELL 4 Electrical Room | Electrical | EE1 | Overhead R/I - Electrical | 21-Feb-2025 | 24-Feb-2025 |
| 387 | Fitout COLO3 | C3 CELL 4 Mechanical Gallery | Electrical | EE1 | Overhead R/I - Electrical | 24-Feb-2025 | 26-Feb-2025 |
| 388 | Fitout COLO3 | C3 CELL 1 Data Hall | Fire Protection | R1 | Overhead R/I - Fire Alarm | 01-Feb-2025 | 04-Feb-2025 |
| 389 | Fitout COLO3 | C3 CELL 1 Electrical Room | Fire Protection | R1 | Overhead R/I - Fire Alarm | 13-Feb-2025 | 14-Feb-2025 |
| 390 | Fitout COLO3 | C3 CELL 1 Mechanical Gallery | Fire Protection | R1 | Overhead R/I - Fire Alarm | 15-Feb-2025 | 17-Feb-2025 |
| 391 | Fitout COLO3 | C3 CELL 2 Data Hall | Fire Protection | R1 | Overhead R/I - Fire Alarm | 11-Feb-2025 | 13-Feb-2025 |
| 392 | Fitout COLO3 | C3 CELL 2 Electrical Room | Fire Protection | R1 | Overhead R/I - Fire Alarm | 11-Feb-2025 | 12-Feb-2025 |
| 393 | Fitout COLO3 | C3 CELL 2 Mechanical Gallery | Fire Protection | R1 | Overhead R/I - Fire Alarm | 13-Feb-2025 | 14-Feb-2025 |
| 394 | Fitout COLO3 | C3 CELL 3 Data Hall | Fire Protection | R1 | Overhead R/I - Fire Alarm | 06-Mar-2025 | 08-Mar-2025 |
| 395 | Fitout COLO3 | C3 CELL 3 Electrical Room | Fire Protection | R1 | Overhead R/I - Fire Alarm | 06-Mar-2025 | 07-Mar-2025 |
| 396 | Fitout COLO3 | C3 CELL 3 Mechanical Gallery | Fire Protection | R1 | Overhead R/I - Fire Alarm | 08-Mar-2025 | 10-Mar-2025 |
| 397 | Fitout COLO3 | C3 CELL 4 Data Hall | Fire Protection | R1 | Overhead R/I - Fire Alarm | 21-Feb-2025 | 24-Feb-2025 |
| 398 | Fitout COLO3 | C3 CELL 4 Electrical Room | Fire Protection | R1 | Overhead R/I - Fire Alarm | 21-Feb-2025 | 22-Feb-2025 |
| 399 | Fitout COLO3 | C3 CELL 4 Mechanical Gallery | Fire Protection | R1 | Overhead R/I - Fire Alarm | 24-Feb-2025 | 25-Feb-2025 |
| 400 | Fitout COLO3 | C3 CELL 4 Data Hall | Fire Protection | R4 | Fire Protection OH R/I | 18-Feb-2025 | 20-Feb-2025 |
| 401 | Fitout COLO3 | C3 CELL 4 Electrical Room | Fire Protection | R5 | Fire Protection OH R/I | 19-Feb-2025 | 20-Feb-2025 |
| 402 | Fitout COLO3 | C3 CELL 4 Mechanical Gallery | Fire Protection | R6 | Fire Protection OH R/I | 21-Feb-2025 | 22-Feb-2025 |
| 403 | Fitout COLO3 | C3 CELL 2 Data Hall | Mech | M5 | Overhead R/I - Mechanical | 13-Feb-2025 | 14-Feb-2025 |
| 404 | Fitout COLO3 | C3 CELL 1 Data Hall | Mech | M5 | Overhead R/I - Mechanical | 04-Feb-2025 | 05-Feb-2025 |
| 405 | Fitout COLO3 | C3 CELL 1 Mechanical Gallery | Mech | M5 | Overhead R/I - Mechanical | 19-Feb-2025 | 25-Feb-2025 |
| 406 | Fitout COLO3 | C3 CELL 2 Mechanical Gallery | Mech | M5 | Overhead R/I - Mechanical | 17-Feb-2025 | 22-Feb-2025 |
| 407 | Fitout COLO3 | C3 CELL 3 Data Hall | Mech | M5 | Overhead R/I - Mechanical | 08-Mar-2025 | 10-Mar-2025 |
| 408 | Fitout COLO3 | C3 CELL 3 Mechanical Gallery | Mech | M5 | Overhead R/I - Mechanical | 12-Mar-2025 | 18-Mar-2025 |
| 409 | Fitout COLO3 | C3 CELL 4 Data Hall | Mech | M5 | Overhead R/I - Mechanical | 24-Feb-2025 | 25-Feb-2025 |
| 410 | Fitout COLO3 | C3 CELL 4 Mechanical Gallery | Mech | M5 | Overhead R/I - Mechanical | 27-Feb-2025 | 06-Mar-2025 |
| 411 | Fitout COLO3 | C3 CELL 1 Mechanical Gallery | Plumbing | P4 | Overhead R/I - Plumbing | 26-Feb-2025 | 05-Mar-2025 |
| 412 | Fitout COLO3 | C3 CELL 2 Mechanical Gallery | Plumbing | P4 | Overhead R/I - Plumbing | 24-Feb-2025 | 03-Mar-2025 |
| 413 | Fitout COLO3 | C3 CELL 3 Mechanical Gallery | Plumbing | P4 | Overhead R/I - Plumbing | 19-Mar-2025 | 26-Mar-2025 |
| 414 | Fitout COLO3 | C3 CELL 4 Mechanical Gallery | Plumbing | P4 | Overhead R/I - Plumbing | 07-Mar-2025 | 13-Mar-2025 |
| 415 | Fitout COLO3 | C3 CELL 1 Data Hall | Painting | Y2 | Paint Dry-Wall | 05-Feb-2025 | 07-Feb-2025 |
| 416 | Fitout COLO3 | C3 CELL 1 Electrical Room | Painting | Y2 | Paint Dry-Wall | 05-Mar-2025 | 06-Mar-2025 |
| 417 | Fitout COLO3 | C3 CELL 1 Mechanical Gallery | Painting | Y2 | Paint Dry-Wall | 08-Mar-2025 | 10-Mar-2025 |
| 418 | Fitout COLO3 | C3 CELL 2 Data Hall | Painting | Y2 | Paint Dry-Wall | 14-Feb-2025 | 17-Feb-2025 |
| 419 | Fitout COLO3 | C3 CELL 2 Electrical Room | Painting | Y2 | Paint Dry-Wall | 15-Feb-2025 | 17-Feb-2025 |
| 420 | Fitout COLO3 | C3 CELL 2 Mechanical Gallery | Painting | Y2 | Paint Dry-Wall | 06-Mar-2025 | 07-Mar-2025 |

| entry | phase | location | trade | activity_code | activity_name | start | finish |
| --- | --- | --- | --- | --- | --- | --- | --- |
| 421 | Fitout COLO3 | C3 CELL 3 Data Hall | Painting | Y2 | Paint Dry-Wall | 10-Mar-2025 | 12-Mar-2025 |
| 422 | Fitout COLO3 | C3 CELL 3 Electrical Room | Painting | Y2 | Paint Dry-Wall | 11-Mar-2025 | 12-Mar-2025 |
| 423 | Fitout COLO3 | C3 CELL 3 Mechanical Gallery | Painting | Y2 | Paint Dry-Wall | 29-Mar-2025 | 31-Mar-2025 |
| 424 | Fitout COLO3 | C3 CELL 4 Data Hall | Painting | Y2 | Paint Dry-Wall | 25-Feb-2025 | 27-Feb-2025 |
| 425 | Fitout COLO3 | C3 CELL 4 Electrical Room | Painting | Y2 | Paint Dry-Wall | 26-Feb-2025 | 27-Feb-2025 |
| 426 | Fitout COLO3 | C3 CELL 4 Mechanical Gallery | Painting | Y2 | Paint Dry-Wall | 17-Mar-2025 | 18-Mar-2025 |
| 427 | Fitout COLO3 | C3 CELL 1 Data Hall | Painting | Y7 | Paint Secondary Steel | 15-Feb-2025 | 17-Feb-2025 |
| 428 | Fitout COLO3 | C3 CELL 2 Data Hall | Painting | Y7 | Paint Secondary Steel | 24-Feb-2025 | 25-Feb-2025 |
| 429 | Fitout COLO3 | C3 CELL 3 Data Hall | Painting | Y7 | Paint Secondary Steel | 19-Mar-2025 | 20-Mar-2025 |
| 430 | Fitout COLO3 | C3 CELL 4 Data Hall | Painting | Y7 | Paint Secondary Steel | 07-Mar-2025 | 08-Mar-2025 |
| 431 | Fitout COLO3 | C3 CELL 1 Mechanical Gallery | BAS | BA1 | Pull & Terminate BAS Equipments | 25-Mar-2025 | 02-Apr-2025 |
| 432 | Fitout COLO3 | C3 CELL 2 Mechanical Gallery | BAS | BA1 | Pull & Terminate BAS Equipments | 21-Mar-2025 | 31-Mar-2025 |
| 433 | Fitout COLO3 | C3 CELL 3 Mechanical Gallery | BAS | BA1 | Pull & Terminate BAS Equipments | 15-Apr-2025 | 23-Apr-2025 |
| 434 | Fitout COLO3 | C3 CELL 4 Mechanical Gallery | BAS | BA1 | Pull & Terminate BAS Equipments | 02-Apr-2025 | 10-Apr-2025 |
| 435 | Fitout COLO3 | C3 CELL 1 Electrical Room | Electrical | EE47 | Pull Cable between Elec Equipments [Inside Electrical Room] Pull Crew 1 | 17-Mar-2025 | 29-Mar-2025 |
| 436 | Fitout COLO3 | C3 CELL 2 Electrical Room | Electrical | EE47 | Pull Cable between Elec Equipments [Inside Electrical Room] Pull Crew 1 | 14-Apr-2025 | 25-Apr-2025 |
| 437 | Fitout COLO3 | C3 CELL 3 Electrical Room | Electrical | EE47.1 | Pull Cable between Elec Equipments [Inside Electrical Room] Pull Crew 2 | 10-May-2025 | 22-May-2025 |
| 438 | Fitout COLO3 | C3 CELL 4 Electrical Room | Electrical | EE47.1 | Pull Cable between Elec Equipments [Inside Electrical Room] Pull Crew 2 | 07-Mar-2025 | 19-Mar-2025 |
| 439 | Fitout COLO3 | C3 CELL 1 Mechanical Gallery | Electrical | EE48 | Pull Cable to Mechanical Equipments [From Electrical Room] | 19-Mar-2025 | 02-Apr-2025 |
| 440 | Fitout COLO3 | C3 CELL 2 Mechanical Gallery | Electrical | EE48 | Pull Cable to Mechanical Equipments [From Electrical Room] | 17-Mar-2025 | 31-Mar-2025 |
| 441 | Fitout COLO3 | C3 CELL 3 Mechanical Gallery | Electrical | EE48 | Pull Cable to Mechanical Equipments [From Electrical Room] | 09-Apr-2025 | 23-Apr-2025 |
| 442 | Fitout COLO3 | C3 CELL 4 Mechanical Gallery | Electrical | EE48 | Pull Cable to Mechanical Equipments [From Electrical Room] | 28-Mar-2025 | 10-Apr-2025 |
| 443 | Fitout COLO3 | C3 CELL 1 Electrical Room | Electrical | EE50 | Pull Feeders from Electrical Room to PDUs Pull Crew 1 | 31-Mar-2025 | 11-Apr-2025 |
| 444 | Fitout COLO3 | C3 CELL 2 Electrical Room | Electrical | EE50 | Pull Feeders from Electrical Room to PDUs Pull Crew 1 | 26-Apr-2025 | 08-May-2025 |
| 445 | Fitout COLO3 | C3 CELL 3 Electrical Room | Electrical | EE50 | Pull Feeders from Electrical Room to PDUs Pull Crew 2 | 23-May-2025 | 04-Jun-2025 |
| 446 | Fitout COLO3 | C3 CELL 4 Electrical Room | Electrical | EE50 | Pull Feeders from Electrical Room to PDUs Pull Crew 2 | 26-Apr-2025 | 09-May-2025 |
| 447 | Fitout COLO3 | C3 CELL 1 Data Hall | Electrical | EE17 | Pull Feeders from PDUs to Busways | 18-Mar-2025 | 24-Mar-2025 |
| 448 | Fitout COLO3 | C3 CELL 2 Data Hall | Electrical | EE17 | Pull Feeders from PDUs to Busways | 27-Mar-2025 | 01-Apr-2025 |
| 449 | Fitout COLO3 | C3 CELL 3 Data Hall | Electrical | EE17 | Pull Feeders from PDUs to Busways | 19-Apr-2025 | 24-Apr-2025 |
| 450 | Fitout COLO3 | C3 CELL 4 Data Hall | Electrical | EE17 | Pull Feeders from PDUs to Busways | 07-Apr-2025 | 11-Apr-2025 |
| 451 | Fitout COLO3 | C3 CELL 1 Punchlist | CLAYCO | CP | Punchlist | 17-Apr-2025 | 28-Apr-2025 |
| 452 | Fitout COLO3 | C3 CELL 2 Punchlist | CLAYCO | CP | Punchlist | 13-May-2025 | 23-May-2025 |
| 453 | Fitout COLO3 | C3 CELL 3 Punchlist | CLAYCO | CP | Punchlist | 09-Jun-2025 | 20-Jun-2025 |
| 454 | Fitout COLO3 | C3 CELL 4 Punchlist | CLAYCO | CP | Punchlist | 10-May-2025 | 21-May-2025 |
| 455 | Fitout COLO3 | C3 CELL 1 Data Hall | HACs | S2 | Raise HACs | 06-Mar-2025 | 10-Mar-2025 |
| 456 | Fitout COLO3 | C3 CELL 2 Data Hall | HACs | S2 | Raise HACs | 14-Mar-2025 | 18-Mar-2025 |
| 457 | Fitout COLO3 | C3 CELL 3 Data Hall | HACs | S2 | Raise HACs | 07-Apr-2025 | 10-Apr-2025 |
| 458 | Fitout COLO3 | C3 CELL 4 Data Hall | HACs | S2 | Raise HACs | 26-Mar-2025 | 29-Mar-2025 |
| 459 | Fitout COLO3 | C3 CELL 1 Electrical Room | Electrical | EE51 | Set Electrical Equipments | 10-Mar-2025 | 15-Mar-2025 |
| 460 | Fitout COLO3 | C3 CELL 2 Electrical Room | Electrical | EE51 | Set Electrical Equipments | 17-Mar-2025 | 20-Mar-2025 |
| 461 | Fitout COLO3 | C3 CELL 3 Electrical Room | Electrical | EE51 | Set Electrical Equipments | 14-Mar-2025 | 18-Mar-2025 |
| 462 | Fitout COLO3 | C3 CELL 4 Electrical Room | Electrical | EE51 | Set Electrical Equipments | 03-Mar-2025 | 06-Mar-2025 |
| 463 | Fitout COLO3 | C3 CELL 1 Mechanical Gallery | Mech | M6 | Set Mechanical Equipments | 14-Mar-2025 | 18-Mar-2025 |
| 464 | Fitout COLO3 | C3 CELL 2 Mechanical Gallery | Mech | M6 | Set Mechanical Equipments | 12-Mar-2025 | 15-Mar-2025 |
| 465 | Fitout COLO3 | C3 CELL 3 Mechanical Gallery | Mech | M6 | Set Mechanical Equipments | 04-Apr-2025 | 08-Apr-2025 |
| 466 | Fitout COLO3 | C3 CELL 4 Mechanical Gallery | Mech | M6 | Set Mechanical Equipments | 24-Mar-2025 | 27-Mar-2025 |
| 467 | Fitout COLO3 | C3 CELL 1 Data Hall | Electrical | EE7 | Set PDUs | 27-Feb-2025 | 04-Mar-2025 |
| 468 | Fitout COLO3 | C3 CELL 2 Data Hall | Electrical | EE7 | Set PDUs | 08-Mar-2025 | 12-Mar-2025 |
| 469 | Fitout COLO3 | C3 CELL 3 Data Hall | Electrical | EE7 | Set PDUs | 01-Apr-2025 | 04-Apr-2025 |
| 470 | Fitout COLO3 | C3 CELL 4 Data Hall | Electrical | EE7 | Set PDUs | 19-Mar-2025 | 24-Mar-2025 |
| 471 | Fitout COLO3 | C3 CELL 1 Electrical Room | Electrical | EE57 | Terminate Electrical Equipments [Inside Electrical Room] | 31-Mar-2025 | 03-Apr-2025 |
| 472 | Fitout COLO3 | C3 CELL 2 Electrical Room | Electrical | EE57 | Terminate Electrical Equipments [Inside Electrical Room] | 26-Apr-2025 | 30-Apr-2025 |
| 473 | Fitout COLO3 | C3 CELL 3 Electrical Room | Electrical | EE57 | Terminate Electrical Equipments [Inside Electrical Room] | 23-May-2025 | 28-May-2025 |
| 474 | Fitout COLO3 | C3 CELL 4 Electrical Room | Electrical | EE57 | Terminate Electrical Equipments [Inside Electrical Room] | 20-Mar-2025 | 25-Mar-2025 |
| 475 | Fitout COLO3 | C3 CELL 1 Mechanical Gallery | Mech | M7 | Terminate Mechanical Equipments | 03-Apr-2025 | 07-Apr-2025 |
| 476 | Fitout COLO3 | C3 CELL 2 Mechanical Gallery | Mech | M7 | Terminate Mechanical Equipments | 01-Apr-2025 | 04-Apr-2025 |
| 477 | Fitout COLO3 | C3 CELL 3 Mechanical Gallery | Mech | M7 | Terminate Mechanical Equipments | 24-Apr-2025 | 28-Apr-2025 |
| 478 | Fitout COLO3 | C3 CELL 4 Mechanical Gallery | Mech | M7 | Terminate Mechanical Equipments | 11-Apr-2025 | 16-Apr-2025 |
| 479 | Fitout COLO3 | C3 CELL 1 Data Hall | Electrical | EE58 | Terminate PDUs | 14-Apr-2025 | 16-Apr-2025 |
| 480 | Fitout COLO3 | C3 CELL 2 Data Hall | Electrical | EE58 | Terminate PDUs | 09-May-2025 | 12-May-2025 |
| 481 | Fitout COLO3 | C3 CELL 3 Data Hall | Electrical | EE58 | Terminate PDUs | 05-Jun-2025 | 07-Jun-2025 |
| 482 | Fitout COLO3 | C3 CELL 4 Data Hall | Electrical | EE58 | Terminate PDUs | 10-May-2025 | 13-May-2025 |
| 483 | Fitout COLO4 | C4 CELL 1 Data Hall | HACs | S1 | Assemble HACs [Qty - 5] | 29-Mar-2025 | 03-Apr-2025 |
| 484 | Fitout COLO4 | C4 CELL 2 Data Hall | HACs | S1 | Assemble HACs [Qty - 5] | 07-Apr-2025 | 11-Apr-2025 |
| 485 | Fitout COLO4 | C4 CELL 3 Data Hall | HACs | S1 | Assemble HACs [Qty - 5] | 30-Apr-2025 | 06-May-2025 |
| 486 | Fitout COLO4 | C4 CELL 4 Data Hall | HACs | S1 | Assemble HACs [Qty - 5] | 18-Apr-2025 | 23-Apr-2025 |
| 487 | Fitout COLO4 | C4 CELL 1 Data Hall | Electrical | EE43 | Connect Perimeter Cable Trays to HAC Cable Trays | 15-Apr-2025 | 17-Apr-2025 |
| 488 | Fitout COLO4 | C4 CELL 2 Data Hall | Electrical | EE43 | Connect Perimeter Cable Trays to HAC Cable Trays | 23-Apr-2025 | 25-Apr-2025 |
| 489 | Fitout COLO4 | C4 CELL 3 Data Hall | Electrical | EE43 | Connect Perimeter Cable Trays to HAC Cable Trays | 16-May-2025 | 19-May-2025 |
| 490 | Fitout COLO4 | C4 CELL 4 Data Hall | Electrical | EE43 | Connect Perimeter Cable Trays to HAC Cable Trays | 05-May-2025 | 07-May-2025 |

| entry | phase | location | trade | activity_code | activity_name | start | finish |
| --- | --- | --- | --- | --- | --- | --- | --- |
| 491 | Fitout COLO4 | C4 CELL 1 Data Hall | HACs | S4 | Detail HACs | 15-Apr-2025 | 18-Apr-2025 |
| 492 | Fitout COLO4 | C4 CELL 2 Data Hall | HACs | S4 | Detail HACs | 23-Apr-2025 | 26-Apr-2025 |
| 493 | Fitout COLO4 | C4 CELL 3 Data Hall | HACs | S4 | Detail HACs | 16-May-2025 | 20-May-2025 |
| 494 | Fitout COLO4 | C4 CELL 4 Data Hall | HACs | S4 | Detail HACs | 05-May-2025 | 08-May-2025 |
| 495 | Fitout COLO4 | C4 CELL 1 Data Hall | Framing | X30 | Drop Cable Tray [Hanging Rods] | 11-Mar-2025 | 12-Mar-2025 |
| 496 | Fitout COLO4 | C4 CELL 1 Electrical Room | Framing | X30 | Drop Cable Tray [Hanging Rods] | 11-Mar-2025 | 11-Mar-2025 |
| 497 | Fitout COLO4 | C4 CELL 1 Mechanical Gallery | Framing | X30 | Drop Cable Tray [Hanging Rods] | 29-Mar-2025 | 29-Mar-2025 |
| 498 | Fitout COLO4 | C4 CELL 2 Data Hall | Framing | X30 | Drop Cable Tray [Hanging Rods] | 19-Mar-2025 | 20-Mar-2025 |
| 499 | Fitout COLO4 | C4 CELL 2 Electrical Room | Framing | X30 | Drop Cable Tray [Hanging Rods] | 19-Mar-2025 | 19-Mar-2025 |
| 500 | Fitout COLO4 | C4 CELL 2 Mechanical Gallery | Framing | X30 | Drop Cable Tray [Hanging Rods] | 07-Apr-2025 | 07-Apr-2025 |
| 501 | Fitout COLO4 | C4 CELL 3 Data Hall | Framing | X30 | Drop Cable Tray [Hanging Rods] | 11-Apr-2025 | 14-Apr-2025 |
| 502 | Fitout COLO4 | C4 CELL 3 Electrical Room | Framing | X30 | Drop Cable Tray [Hanging Rods] | 11-Apr-2025 | 11-Apr-2025 |
| 503 | Fitout COLO4 | C4 CELL 3 Mechanical Gallery | Framing | X30 | Drop Cable Tray [Hanging Rods] | 30-Apr-2025 | 30-Apr-2025 |
| 504 | Fitout COLO4 | C4 CELL 4 Data Hall | Framing | X30 | Drop Cable Tray [Hanging Rods] | 31-Mar-2025 | 01-Apr-2025 |
| 505 | Fitout COLO4 | C4 CELL 4 Electrical Room | Framing | X30 | Drop Cable Tray [Hanging Rods] | 31-Mar-2025 | 31-Mar-2025 |
| 506 | Fitout COLO4 | C4 CELL 4 Mechanical Gallery | Framing | X30 | Drop Cable Tray [Hanging Rods] | 18-Apr-2025 | 18-Apr-2025 |
| 507 | Fitout COLO4 | C4 CELL 1 Mechanical Gallery | Drywall | D5 | Finish Drywall | 29-Mar-2025 | 31-Mar-2025 |
| 508 | Fitout COLO4 | C4 CELL 1 Data Hall | Drywall | D5 | Finish Drywall | 08-Mar-2025 | 11-Mar-2025 |
| 509 | Fitout COLO4 | C4 CELL 1 Electrical Room | Drywall | D5 | Finish Drywall | 11-Mar-2025 | 12-Mar-2025 |
| 510 | Fitout COLO4 | C4 CELL 2 Data Hall | Drywall | D5 | Finish Drywall | 17-Mar-2025 | 19-Mar-2025 |
| 511 | Fitout COLO4 | C4 CELL 2 Electrical Room | Drywall | D5 | Finish Drywall | 19-Mar-2025 | 20-Mar-2025 |
| 512 | Fitout COLO4 | C4 CELL 2 Mechanical Gallery | Drywall | D5 | Finish Drywall | 07-Apr-2025 | 08-Apr-2025 |
| 513 | Fitout COLO4 | C4 CELL 3 Data Hall | Drywall | D5 | Finish Drywall | 09-Apr-2025 | 11-Apr-2025 |
| 514 | Fitout COLO4 | C4 CELL 3 Electrical Room | Drywall | D5 | Finish Drywall | 11-Apr-2025 | 14-Apr-2025 |
| 515 | Fitout COLO4 | C4 CELL 3 Mechanical Gallery | Drywall | D5 | Finish Drywall | 30-Apr-2025 | 01-May-2025 |
| 516 | Fitout COLO4 | C4 CELL 4 Data Hall | Drywall | D5 | Finish Drywall | 28-Mar-2025 | 31-Mar-2025 |
| 517 | Fitout COLO4 | C4 CELL 4 Electrical Room | Drywall | D5 | Finish Drywall | 31-Mar-2025 | 01-Apr-2025 |
| 518 | Fitout COLO4 | C4 CELL 4 Mechanical Gallery | Drywall | D5 | Finish Drywall | 18-Apr-2025 | 19-Apr-2025 |
| 519 | Fitout COLO4 | C4 CELL 1 Data Hall | CLAYCO | CC | General Cleaning | 25-Mar-2025 | 25-Mar-2025 |
| 520 | Fitout COLO4 | C4 CELL 1 Electrical Room | CLAYCO | CC | General Cleaning | 15-Mar-2025 | 15-Mar-2025 |
| 521 | Fitout COLO4 | C4 CELL 1 Mechanical Gallery | CLAYCO | CC | General Cleaning | 03-Apr-2025 | 05-Apr-2025 |
| 522 | Fitout COLO4 | C4 CELL 2 Data Hall | CLAYCO | CC | General Cleaning | 02-Apr-2025 | 02-Apr-2025 |
| 523 | Fitout COLO4 | C4 CELL 2 Electrical Room | CLAYCO | CC | General Cleaning | 25-Mar-2025 | 25-Mar-2025 |
| 524 | Fitout COLO4 | C4 CELL 2 Mechanical Gallery | CLAYCO | CC | General Cleaning | 11-Apr-2025 | 15-Apr-2025 |
| 525 | Fitout COLO4 | C4 CELL 3 Data Hall | CLAYCO | CC | General Cleaning | 25-Apr-2025 | 25-Apr-2025 |
| 526 | Fitout COLO4 | C4 CELL 3 Electrical Room | CLAYCO | CC | General Cleaning | 17-Apr-2025 | 17-Apr-2025 |
| 527 | Fitout COLO4 | C4 CELL 3 Mechanical Gallery | CLAYCO | CC | General Cleaning | 06-May-2025 | 08-May-2025 |
| 528 | Fitout COLO4 | C4 CELL 4 Data Hall | CLAYCO | CC | General Cleaning | 14-Apr-2025 | 14-Apr-2025 |
| 529 | Fitout COLO4 | C4 CELL 4 Electrical Room | CLAYCO | CC | General Cleaning | 04-Apr-2025 | 04-Apr-2025 |
| 530 | Fitout COLO4 | C4 CELL 4 Mechanical Gallery | CLAYCO | CC | General Cleaning | 23-Apr-2025 | 25-Apr-2025 |
| 531 | Fitout COLO4 | C4 CELL 1 Data Hall | Framing | X21 | Framing | 25-Feb-2025 | 27-Feb-2025 |
| 532 | Fitout COLO4 | C4 CELL 1 Data Hall | Drywall | D1 | In-Wall R/I | 28-Feb-2025 | 04-Mar-2025 |
| 533 | Fitout COLO4 | C4 CELL 1 Electrical Room | Drywall | D1 | In-Wall R/I | 04-Mar-2025 | 05-Mar-2025 |
| 534 | Fitout COLO4 | C4 CELL 2 Data Hall | Drywall | D1 | In-Wall R/I | 10-Mar-2025 | 12-Mar-2025 |
| 535 | Fitout COLO4 | C4 CELL 2 Electrical Room | Drywall | D1 | In-Wall R/I | 12-Mar-2025 | 13-Mar-2025 |
| 536 | Fitout COLO4 | C4 CELL 3 Data Hall | Drywall | D1 | In-Wall R/I | 02-Apr-2025 | 04-Apr-2025 |
| 537 | Fitout COLO4 | C4 CELL 3 Electrical Room | Drywall | D1 | In-Wall R/I | 04-Apr-2025 | 05-Apr-2025 |
| 538 | Fitout COLO4 | C4 CELL 4 Data Hall | Drywall | D1 | In-Wall R/I | 20-Mar-2025 | 24-Mar-2025 |
| 539 | Fitout COLO4 | C4 CELL 4 Electrical Room | Drywall | D1 | In-Wall R/I | 24-Mar-2025 | 25-Mar-2025 |
| 540 | Fitout COLO4 | C4 CELL 1 Mechanical Gallery | BAS | BA | Install BAS Equipments | 04-Apr-2025 | 16-Apr-2025 |
| 541 | Fitout COLO4 | C4 CELL 2 Mechanical Gallery | BAS | BA | Install BAS Equipments | 14-Apr-2025 | 24-Apr-2025 |
| 542 | Fitout COLO4 | C4 CELL 3 Mechanical Gallery | BAS | BA | Install BAS Equipments | 07-May-2025 | 17-May-2025 |
| 543 | Fitout COLO4 | C4 CELL 4 Mechanical Gallery | BAS | BA | Install BAS Equipments | 24-Apr-2025 | 06-May-2025 |
| 544 | Fitout COLO4 | C4 CELL 1 Data Hall | Electrical | EE39 | Install Busways on HAC Arms | 01-Apr-2025 | 05-Apr-2025 |
| 545 | Fitout COLO4 | C4 CELL 2 Data Hall | Electrical | EE39 | Install Busways on HAC Arms | 09-Apr-2025 | 15-Apr-2025 |
| 546 | Fitout COLO4 | C4 CELL 3 Data Hall | Electrical | EE39 | Install Busways on HAC Arms | 02-May-2025 | 08-May-2025 |
| 547 | Fitout COLO4 | C4 CELL 4 Data Hall | Electrical | EE39 | Install Busways on HAC Arms | 21-Apr-2025 | 25-Apr-2025 |
| 548 | Fitout COLO4 | C4 CELL 1 Electrical Room | Electrical | EE35 | Install Cable Trays / Pathways | 12-Mar-2025 | 13-Mar-2025 |
| 549 | Fitout COLO4 | C4 CELL 1 Mechanical Gallery | Electrical | EE35 | Install Cable Trays / Pathways | 04-Apr-2025 | 05-Apr-2025 |
| 550 | Fitout COLO4 | C4 CELL 2 Electrical Room | Electrical | EE35 | Install Cable Trays / Pathways | 20-Mar-2025 | 21-Mar-2025 |
| 551 | Fitout COLO4 | C4 CELL 2 Mechanical Gallery | Electrical | EE35 | Install Cable Trays / Pathways | 14-Apr-2025 | 15-Apr-2025 |
| 552 | Fitout COLO4 | C4 CELL 3 Electrical Room | Electrical | EE35 | Install Cable Trays / Pathways | 14-Apr-2025 | 15-Apr-2025 |
| 553 | Fitout COLO4 | C4 CELL 3 Mechanical Gallery | Electrical | EE35 | Install Cable Trays / Pathways | 07-May-2025 | 08-May-2025 |
| 554 | Fitout COLO4 | C4 CELL 4 Electrical Room | Electrical | EE35 | Install Cable Trays / Pathways | 01-Apr-2025 | 02-Apr-2025 |
| 555 | Fitout COLO4 | C4 CELL 4 Mechanical Gallery | Electrical | EE35 | Install Cable Trays / Pathways | 24-Apr-2025 | 25-Apr-2025 |
| 556 | Fitout COLO4 | C4 CELL 1 Data Hall | Framing | X26 | Install Ceiling Grid | 25-Mar-2025 | 28-Mar-2025 |
| 557 | Fitout COLO4 | C4 CELL 2 Data Hall | Framing | X26 | Install Ceiling Grid | 02-Apr-2025 | 05-Apr-2025 |
| 558 | Fitout COLO4 | C4 CELL 3 Data Hall | Framing | X26 | Install Ceiling Grid | 25-Apr-2025 | 29-Apr-2025 |
| 559 | Fitout COLO4 | C4 CELL 4 Data Hall | Framing | X26 | Install Ceiling Grid | 14-Apr-2025 | 17-Apr-2025 |
| 560 | Fitout COLO4 | C4 CELL 1 Mechanical Gallery | Framing | X27 | Install Ceiling Grid + Device Tiles | 31-Mar-2025 | 03-Apr-2025 |

| entry | phase | location | trade | activity_code | activity_name | start | finish |
| --- | --- | --- | --- | --- | --- | --- | --- |
| 561 | Fitout COLO4 | C4 CELL 2 Mechanical Gallery | Framing | X27 | Install Ceiling Grid + Device Tiles | 08-Apr-2025 | 11-Apr-2025 |
| 562 | Fitout COLO4 | C4 CELL 3 Mechanical Gallery | Framing | X27 | Install Ceiling Grid + Device Tiles | 01-May-2025 | 06-May-2025 |
| 563 | Fitout COLO4 | C4 CELL 4 Mechanical Gallery | Framing | X27 | Install Ceiling Grid + Device Tiles | 19-Apr-2025 | 23-Apr-2025 |
| 564 | Fitout COLO4 | C4 CELL 1 Data Hall | Electrical | EE43 | Install Conduits PDU to Cable Trays | 18-Apr-2025 | 21-Apr-2025 |
| 565 | Fitout COLO4 | C4 CELL 2 Data Hall | Electrical | EE43 | Install Conduits PDU to Cable Trays | 26-Apr-2025 | 29-Apr-2025 |
| 566 | Fitout COLO4 | C4 CELL 3 Data Hall | Electrical | EE43 | Install Conduits PDU to Cable Trays | 20-May-2025 | 22-May-2025 |
| 567 | Fitout COLO4 | C4 CELL 4 Data Hall | Electrical | EE43 | Install Conduits PDU to Cable Trays | 08-May-2025 | 10-May-2025 |
| 568 | Fitout COLO4 | C4 CELL 1 Data Hall | Framing | X35 | Install Device Tiles | 03-Apr-2025 | 04-Apr-2025 |
| 569 | Fitout COLO4 | C4 CELL 2 Data Hall | Framing | X35 | Install Device Tiles | 11-Apr-2025 | 14-Apr-2025 |
| 570 | Fitout COLO4 | C4 CELL 3 Data Hall | Framing | X35 | Install Device Tiles | 06-May-2025 | 07-May-2025 |
| 571 | Fitout COLO4 | C4 CELL 4 Data Hall | Framing | X35 | Install Device Tiles | 23-Apr-2025 | 24-Apr-2025 |
| 572 | Fitout COLO4 | C4 CELL 1 Data Hall | Drywall | D2 | Install Drywall | 05-Mar-2025 | 07-Mar-2025 |
| 573 | Fitout COLO4 | C4 CELL 2 Data Hall | Drywall | D2 | Install Drywall | 13-Mar-2025 | 15-Mar-2025 |
| 574 | Fitout COLO4 | C4 CELL 3 Data Hall | Drywall | D2 | Install Drywall | 05-Apr-2025 | 08-Apr-2025 |
| 575 | Fitout COLO4 | C4 CELL 4 Data Hall | Drywall | D2 | Install Drywall | 25-Mar-2025 | 27-Mar-2025 |
| 576 | Fitout COLO4 | C4 CELL 1 Electrical Room | Drywall | D2 | Install Drywall | 06-Mar-2025 | 10-Mar-2025 |
| 577 | Fitout COLO4 | C4 CELL 2 Electrical Room | Drywall | D2 | Install Drywall | 14-Mar-2025 | 18-Mar-2025 |
| 578 | Fitout COLO4 | C4 CELL 3 Electrical Room | Drywall | D2 | Install Drywall | 07-Apr-2025 | 10-Apr-2025 |
| 579 | Fitout COLO4 | C4 CELL 4 Electrical Room | Drywall | D2 | Install Drywall | 26-Mar-2025 | 29-Mar-2025 |
| 580 | Fitout COLO4 | C4 CELL 1 Mechanical Gallery | Drywall | D2 | Install Drywall | 27-Mar-2025 | 28-Mar-2025 |
| 581 | Fitout COLO4 | C4 CELL 2 Mechanical Gallery | Drywall | D2 | Install Drywall | 04-Apr-2025 | 05-Apr-2025 |
| 582 | Fitout COLO4 | C4 CELL 3 Mechanical Gallery | Drywall | D2 | Install Drywall | 28-Apr-2025 | 29-Apr-2025 |
| 583 | Fitout COLO4 | C4 CELL 4 Mechanical Gallery | Drywall | D2 | Install Drywall | 16-Apr-2025 | 17-Apr-2025 |
| 584 | Fitout COLO4 | C4 CELL 1 Data Hall | Electrical | EE11 | Install Fiber Runner [ Cable Trays on HAC Arms] | 03-Apr-2025 | 08-Apr-2025 |
| 585 | Fitout COLO4 | C4 CELL 2 Data Hall | Electrical | EE11 | Install Fiber Runner [ Cable Trays on HAC Arms] | 11-Apr-2025 | 17-Apr-2025 |
| 586 | Fitout COLO4 | C4 CELL 3 Data Hall | Electrical | EE11 | Install Fiber Runner [ Cable Trays on HAC Arms] | 06-May-2025 | 10-May-2025 |
| 587 | Fitout COLO4 | C4 CELL 4 Data Hall | Electrical | EE11 | Install Fiber Runner [ Cable Trays on HAC Arms] | 23-Apr-2025 | 28-Apr-2025 |
| 588 | Fitout COLO4 | C4 CELL 4 Electrical Room | Framing | X21 | Framing | 20-Mar-2025 | 21-Mar-2025 |
| 589 | Fitout COLO4 | C4 CELL 1 Electrical Room | Framing | X21 | Framing | 28-Feb-2025 | 03-Mar-2025 |
| 590 | Fitout COLO4 | C4 CELL 2 Data Hall | Framing | X21 | Framing | 06-Mar-2025 | 08-Mar-2025 |
| 591 | Fitout COLO4 | C4 CELL 2 Electrical Room | Framing | X21 | Framing | 10-Mar-2025 | 11-Mar-2025 |
| 592 | Fitout COLO4 | C4 CELL 3 Data Hall | Framing | X21 | Framing | 29-Mar-2025 | 01-Apr-2025 |
| 593 | Fitout COLO4 | C4 CELL 3 Electrical Room | Framing | X21 | Framing | 02-Apr-2025 | 03-Apr-2025 |
| 594 | Fitout COLO4 | C4 CELL 4 Data Hall | Framing | X21 | Framing | 17-Mar-2025 | 19-Mar-2025 |
| 595 | Fitout COLO4 | C4 CELL 1 Data Hall | Electrical | EE44 | Install Perimeter Cable Trays | 29-Mar-2025 | 02-Apr-2025 |
| 596 | Fitout COLO4 | C4 CELL 2 Data Hall | Electrical | EE44 | Install Perimeter Cable Trays | 07-Apr-2025 | 10-Apr-2025 |
| 597 | Fitout COLO4 | C4 CELL 3 Data Hall | Electrical | EE44 | Install Perimeter Cable Trays | 30-Apr-2025 | 05-May-2025 |
| 598 | Fitout COLO4 | C4 CELL 4 Data Hall | Electrical | EE44 | Install Perimeter Cable Trays | 18-Apr-2025 | 22-Apr-2025 |
| 599 | Fitout COLO4 | C4 CELL 1 Data Hall | Framing | X19 | Install Screen Mesh + Caulking | 15-Mar-2025 | 18-Mar-2025 |
| 600 | Fitout COLO4 | C4 CELL 2 Data Hall | Framing | X19 | Install Screen Mesh + Caulking | 25-Mar-2025 | 27-Mar-2025 |
| 601 | Fitout COLO4 | C4 CELL 3 Data Hall | Framing | X19 | Install Screen Mesh + Caulking | 17-Apr-2025 | 19-Apr-2025 |
| 602 | Fitout COLO4 | C4 CELL 4 Data Hall | Framing | X19 | Install Screen Mesh + Caulking | 04-Apr-2025 | 07-Apr-2025 |
| 603 | Fitout COLO4 | C4 CELL 1 Data Hall | Framing | X38 | Install Secondary Steel | 19-Mar-2025 | 20-Mar-2025 |
| 604 | Fitout COLO4 | C4 CELL 2 Data Hall | Framing | X38 | Install Secondary Steel | 28-Mar-2025 | 29-Mar-2025 |
| 605 | Fitout COLO4 | C4 CELL 3 Data Hall | Framing | X38 | Install Secondary Steel | 21-Apr-2025 | 22-Apr-2025 |
| 606 | Fitout COLO4 | C4 CELL 4 Data Hall | Framing | X38 | Install Secondary Steel | 08-Apr-2025 | 09-Apr-2025 |
| 607 | Fitout COLO4 | C4 CELL 1 Data Hall | Framing | X9 | Layout Framing | 24-Feb-2025 | 24-Feb-2025 |
| 608 | Fitout COLO4 | C4 CELL 2 Data Hall | Framing | X9 | Layout Framing | 05-Mar-2025 | 05-Mar-2025 |
| 609 | Fitout COLO4 | C4 CELL 3 Data Hall | Framing | X9 | Layout Framing | 28-Mar-2025 | 28-Mar-2025 |
| 610 | Fitout COLO4 | C4 CELL 4 Data Hall | Framing | X9 | Layout Framing | 15-Mar-2025 | 15-Mar-2025 |
| 611 | Fitout COLO4 | C4 CELL 1 Data Hall | Electrical | EE1 | Overhead R/I - Electrical | 08-Mar-2025 | 12-Mar-2025 |
| 612 | Fitout COLO4 | C4 CELL 1 Electrical Room | Electrical | EE1 | Overhead R/I - Electrical | 08-Mar-2025 | 11-Mar-2025 |
| 613 | Fitout COLO4 | C4 CELL 1 Mechanical Gallery | Electrical | EE1 | Overhead R/I - Electrical | 11-Mar-2025 | 13-Mar-2025 |
| 614 | Fitout COLO4 | C4 CELL 2 Data Hall | Electrical | EE1 | Overhead R/I - Electrical | 17-Mar-2025 | 20-Mar-2025 |
| 615 | Fitout COLO4 | C4 CELL 2 Electrical Room | Electrical | EE1 | Overhead R/I - Electrical | 17-Mar-2025 | 19-Mar-2025 |
| 616 | Fitout COLO4 | C4 CELL 2 Mechanical Gallery | Electrical | EE1 | Overhead R/I - Electrical | 19-Mar-2025 | 21-Mar-2025 |
| 617 | Fitout COLO4 | C4 CELL 3 Data Hall | Electrical | EE1 | Overhead R/I - Electrical | 09-Apr-2025 | 14-Apr-2025 |
| 618 | Fitout COLO4 | C4 CELL 3 Electrical Room | Electrical | EE1 | Overhead R/I - Electrical | 09-Apr-2025 | 11-Apr-2025 |
| 619 | Fitout COLO4 | C4 CELL 3 Mechanical Gallery | Electrical | EE1 | Overhead R/I - Electrical | 11-Apr-2025 | 15-Apr-2025 |
| 620 | Fitout COLO4 | C4 CELL 4 Data Hall | Electrical | EE1 | Overhead R/I - Electrical | 28-Mar-2025 | 01-Apr-2025 |
| 621 | Fitout COLO4 | C4 CELL 4 Electrical Room | Electrical | EE1 | Overhead R/I - Electrical | 28-Mar-2025 | 31-Mar-2025 |
| 622 | Fitout COLO4 | C4 CELL 4 Mechanical Gallery | Electrical | EE1 | Overhead R/I - Electrical | 31-Mar-2025 | 02-Apr-2025 |
| 623 | Fitout COLO4 | C4 CELL 1 Data Hall | Fire Protection | R1 | Overhead R/I - Fire Alarm | 08-Mar-2025 | 11-Mar-2025 |
| 624 | Fitout COLO4 | C4 CELL 1 Electrical Room | Fire Protection | R1 | Overhead R/I - Fire Alarm | 08-Mar-2025 | 10-Mar-2025 |
| 625 | Fitout COLO4 | C4 CELL 1 Mechanical Gallery | Fire Protection | R1 | Overhead R/I - Fire Alarm | 11-Mar-2025 | 12-Mar-2025 |
| 626 | Fitout COLO4 | C4 CELL 2 Data Hall | Fire Protection | R1 | Overhead R/I - Fire Alarm | 17-Mar-2025 | 19-Mar-2025 |
| 627 | Fitout COLO4 | C4 CELL 2 Electrical Room | Fire Protection | R1 | Overhead R/I - Fire Alarm | 17-Mar-2025 | 18-Mar-2025 |
| 628 | Fitout COLO4 | C4 CELL 2 Mechanical Gallery | Fire Protection | R1 | Overhead R/I - Fire Alarm | 19-Mar-2025 | 20-Mar-2025 |
| 629 | Fitout COLO4 | C4 CELL 3 Data Hall | Fire Protection | R1 | Overhead R/I - Fire Alarm | 09-Apr-2025 | 11-Apr-2025 |
| 630 | Fitout COLO4 | C4 CELL 3 Electrical Room | Fire Protection | R1 | Overhead R/I - Fire Alarm | 09-Apr-2025 | 10-Apr-2025 |

| entry | phase | location | trade | activity_code | activity_name | start | finish |
| --- | --- | --- | --- | --- | --- | --- | --- |
| 631 | Fitout COLO4 | C4 CELL 3 Mechanical Gallery | Fire Protection | R1 | Overhead R/I - Fire Alarm | 11-Apr-2025 | 14-Apr-2025 |
| 632 | Fitout COLO4 | C4 CELL 4 Data Hall | Fire Protection | R1 | Overhead R/I - Fire Alarm | 28-Mar-2025 | 31-Mar-2025 |
| 633 | Fitout COLO4 | C4 CELL 4 Electrical Room | Fire Protection | R1 | Overhead R/I - Fire Alarm | 28-Mar-2025 | 29-Mar-2025 |
| 634 | Fitout COLO4 | C4 CELL 4 Mechanical Gallery | Fire Protection | R1 | Overhead R/I - Fire Alarm | 31-Mar-2025 | 01-Apr-2025 |
| 635 | Fitout COLO4 | C4 CELL 1 Data Hall | Fire Protection | R7 | Fire Protection OH R/I | 05-Mar-2025 | 07-Mar-2025 |
| 636 | Fitout COLO4 | C4 CELL 1 Electrical Room | Fire Protection | R8 | Fire Protection OH R/I | 06-Mar-2025 | 07-Mar-2025 |
| 637 | Fitout COLO4 | C4 CELL 1 Mechanical Gallery | Fire Protection | R9 | Fire Protection OH R/I | 08-Mar-2025 | 10-Mar-2025 |
| 638 | Fitout COLO4 | C4 CELL 2 Data Hall | Fire Protection | R10 | Fire Protection OH R/I | 13-Mar-2025 | 15-Mar-2025 |
| 639 | Fitout COLO4 | C4 CELL 2 Electrical Room | Fire Protection | R11 | Fire Protection OH R/I | 14-Mar-2025 | 15-Mar-2025 |
| 640 | Fitout COLO4 | C4 CELL 2 Mechanical Gallery | Fire Protection | R12 | Fire Protection OH R/I | 17-Mar-2025 | 18-Mar-2025 |
| 641 | Fitout COLO4 | C4 CELL 3 Data Hall | Fire Protection | R13 | Fire Protection OH R/I | 05-Apr-2025 | 08-Apr-2025 |
| 642 | Fitout COLO4 | C4 CELL 3 Electrical Room | Fire Protection | R14 | Fire Protection OH R/I | 07-Apr-2025 | 08-Apr-2025 |
| 643 | Fitout COLO4 | C4 CELL 3 Mechanical Gallery | Fire Protection | R15 | Fire Protection OH R/I | 09-Apr-2025 | 10-Apr-2025 |
| 644 | Fitout COLO4 | C4 CELL 4 Data Hall | Fire Protection | R16 | Fire Protection OH R/I | 25-Mar-2025 | 27-Mar-2025 |
| 645 | Fitout COLO4 | C4 CELL 4 Electrical Room | Fire Protection | R17 | Fire Protection OH R/I | 26-Mar-2025 | 27-Mar-2025 |
| 646 | Fitout COLO4 | C4 CELL 4 Mechanical Gallery | Fire Protection | R18 | Fire Protection OH R/I | 28-Mar-2025 | 29-Mar-2025 |
| 647 | Fitout COLO4 | C4 CELL 1 Data Hall | Mech | M5 | Overhead R/I - Mechanical | 11-Mar-2025 | 12-Mar-2025 |
| 648 | Fitout COLO4 | C4 CELL 1 Mechanical Gallery | Mech | M5 | Overhead R/I - Mechanical | 14-Mar-2025 | 20-Mar-2025 |
| 649 | Fitout COLO4 | C4 CELL 2 Data Hall | Mech | M5 | Overhead R/I - Mechanical | 19-Mar-2025 | 20-Mar-2025 |
| 650 | Fitout COLO4 | C4 CELL 2 Mechanical Gallery | Mech | M5 | Overhead R/I - Mechanical | 24-Mar-2025 | 29-Mar-2025 |
| 651 | Fitout COLO4 | C4 CELL 3 Data Hall | Mech | M5 | Overhead R/I - Mechanical | 11-Apr-2025 | 14-Apr-2025 |
| 652 | Fitout COLO4 | C4 CELL 3 Mechanical Gallery | Mech | M5 | Overhead R/I - Mechanical | 16-Apr-2025 | 22-Apr-2025 |
| 653 | Fitout COLO4 | C4 CELL 4 Data Hall | Mech | M5 | Overhead R/I - Mechanical | 31-Mar-2025 | 01-Apr-2025 |
| 654 | Fitout COLO4 | C4 CELL 4 Mechanical Gallery | Mech | M5 | Overhead R/I - Mechanical | 03-Apr-2025 | 09-Apr-2025 |
| 655 | Fitout COLO4 | C4 CELL 1 Mechanical Gallery | Plumbing | P4 | Overhead R/I - Plumbing | 21-Mar-2025 | 28-Mar-2025 |
| 656 | Fitout COLO4 | C4 CELL 2 Mechanical Gallery | Plumbing | P4 | Overhead R/I - Plumbing | 31-Mar-2025 | 05-Apr-2025 |
| 657 | Fitout COLO4 | C4 CELL 3 Mechanical Gallery | Plumbing | P4 | Overhead R/I - Plumbing | 23-Apr-2025 | 29-Apr-2025 |
| 658 | Fitout COLO4 | C4 CELL 4 Mechanical Gallery | Plumbing | P4 | Overhead R/I - Plumbing | 10-Apr-2025 | 17-Apr-2025 |
| 659 | Fitout COLO4 | C4 CELL 1 Data Hall | Painting | Y2 | Paint Dry-Wall | 12-Mar-2025 | 14-Mar-2025 |
| 660 | Fitout COLO4 | C4 CELL 1 Electrical Room | Painting | Y2 | Paint Dry-Wall | 13-Mar-2025 | 14-Mar-2025 |
| 661 | Fitout COLO4 | C4 CELL 1 Mechanical Gallery | Painting | Y2 | Paint Dry-Wall | 01-Apr-2025 | 02-Apr-2025 |
| 662 | Fitout COLO4 | C4 CELL 2 Data Hall | Painting | Y2 | Paint Dry-Wall | 20-Mar-2025 | 24-Mar-2025 |
| 663 | Fitout COLO4 | C4 CELL 2 Electrical Room | Painting | Y2 | Paint Dry-Wall | 21-Mar-2025 | 24-Mar-2025 |
| 664 | Fitout COLO4 | C4 CELL 2 Mechanical Gallery | Painting | Y2 | Paint Dry-Wall | 09-Apr-2025 | 10-Apr-2025 |
| 665 | Fitout COLO4 | C4 CELL 3 Data Hall | Painting | Y2 | Paint Dry-Wall | 14-Apr-2025 | 16-Apr-2025 |
| 666 | Fitout COLO4 | C4 CELL 3 Electrical Room | Painting | Y2 | Paint Dry-Wall | 15-Apr-2025 | 16-Apr-2025 |
| 667 | Fitout COLO4 | C4 CELL 3 Mechanical Gallery | Painting | Y2 | Paint Dry-Wall | 02-May-2025 | 05-May-2025 |
| 668 | Fitout COLO4 | C4 CELL 4 Data Hall | Painting | Y2 | Paint Dry-Wall | 01-Apr-2025 | 03-Apr-2025 |
| 669 | Fitout COLO4 | C4 CELL 4 Electrical Room | Painting | Y2 | Paint Dry-Wall | 02-Apr-2025 | 03-Apr-2025 |
| 670 | Fitout COLO4 | C4 CELL 4 Mechanical Gallery | Painting | Y2 | Paint Dry-Wall | 21-Apr-2025 | 22-Apr-2025 |
| 671 | Fitout COLO4 | C4 CELL 1 Data Hall | Painting | Y7 | Paint Secondary Steel | 21-Mar-2025 | 24-Mar-2025 |
| 672 | Fitout COLO4 | C4 CELL 2 Data Hall | Painting | Y7 | Paint Secondary Steel | 31-Mar-2025 | 01-Apr-2025 |
| 673 | Fitout COLO4 | C4 CELL 3 Data Hall | Painting | Y7 | Paint Secondary Steel | 23-Apr-2025 | 24-Apr-2025 |
| 674 | Fitout COLO4 | C4 CELL 4 Data Hall | Painting | Y7 | Paint Secondary Steel | 10-Apr-2025 | 11-Apr-2025 |
| 675 | Fitout COLO4 | C4 CELL 1 Mechanical Gallery | BAS | BA1 | Pull & Terminate BAS Equipments | 17-Apr-2025 | 25-Apr-2025 |
| 676 | Fitout COLO4 | C4 CELL 2 Mechanical Gallery | BAS | BA1 | Pull & Terminate BAS Equipments | 25-Apr-2025 | 05-May-2025 |
| 677 | Fitout COLO4 | C4 CELL 3 Mechanical Gallery | BAS | BA1 | Pull & Terminate BAS Equipments | 19-May-2025 | 28-May-2025 |
| 678 | Fitout COLO4 | C4 CELL 4 Mechanical Gallery | BAS | BA1 | Pull & Terminate BAS Equipments | 07-May-2025 | 15-May-2025 |
| 679 | Fitout COLO4 | C4 CELL 1 Electrical Room | Electrical | EE47 | Pull Cable between Elec Equipments [Inside Electrical Room] Pull Crew 1 | 04-Apr-2025 | 17-Apr-2025 |
| 680 | Fitout COLO4 | C4 CELL 2 Electrical Room | Electrical | EE47 | Pull Cable between Elec Equipments [Inside Electrical Room] Pull Crew 1 | 01-May-2025 | 14-May-2025 |
| 681 | Fitout COLO4 | C4 CELL 3 Electrical Room | Electrical | EE47.1 | Pull Cable between Elec Equipments [Inside Electrical Room] Pull Crew 2 | 24-Jun-2025 | 08-Jul-2025 |
| 682 | Fitout COLO4 | C4 CELL 4 Electrical Room | Electrical | EE47.1 | Pull Cable between Elec Equipments [Inside Electrical Room] Pull Crew 2 | 28-May-2025 | 09-Jun-2025 |
| 683 | Fitout COLO4 | C4 CELL 1 Mechanical Gallery | Electrical | EE48 | Pull Cable to Mechanical Equipments [From Electrical Room] | 11-Apr-2025 | 25-Apr-2025 |
| 684 | Fitout COLO4 | C4 CELL 2 Mechanical Gallery | Electrical | EE48 | Pull Cable to Mechanical Equipments [From Electrical Room] | 21-Apr-2025 | 05-May-2025 |
| 685 | Fitout COLO4 | C4 CELL 3 Mechanical Gallery | Electrical | EE48 | Pull Cable to Mechanical Equipments [From Electrical Room] | 14-May-2025 | 28-May-2025 |
| 686 | Fitout COLO4 | C4 CELL 4 Mechanical Gallery | Electrical | EE48 | Pull Cable to Mechanical Equipments [From Electrical Room] | 01-May-2025 | 15-May-2025 |
| 687 | Fitout COLO4 | C4 CELL 1 Electrical Room | Electrical | EE50 | Pull Feeders from Electrical Room to PDUs Pull Crew 1 | 18-Apr-2025 | 30-Apr-2025 |
| 688 | Fitout COLO4 | C4 CELL 2 Electrical Room | Electrical | EE50 | Pull Feeders from Electrical Room to PDUs Pull Crew 1 | 15-May-2025 | 27-May-2025 |
| 689 | Fitout COLO4 | C4 CELL 3 Electrical Room | Electrical | EE50 | Pull Feeders from Electrical Room to PDUs Pull Crew 2 | 09-Jul-2025 | 19-Jul-2025 |
| 690 | Fitout COLO4 | C4 CELL 4 Electrical Room | Electrical | EE50 | Pull Feeders from Electrical Room to PDUs Pull Crew 2 | 10-Jun-2025 | 23-Jun-2025 |
| 691 | Fitout COLO4 | C4 CELL 1 Data Hall | Electrical | EE17 | Pull Feeders from PDUs to Busways | 22-Apr-2025 | 26-Apr-2025 |
| 692 | Fitout COLO4 | C4 CELL 2 Data Hall | Electrical | EE17 | Pull Feeders from PDUs to Busways | 30-Apr-2025 | 06-May-2025 |
| 693 | Fitout COLO4 | C4 CELL 3 Data Hall | Electrical | EE17 | Pull Feeders from PDUs to Busways | 23-May-2025 | 29-May-2025 |
| 694 | Fitout COLO4 | C4 CELL 4 Data Hall | Electrical | EE17 | Pull Feeders from PDUs to Busways | 12-May-2025 | 16-May-2025 |
| 695 | Fitout COLO4 | C4 CELL 1 Punchlist | CLAYCO | CP | Punchlist | 06-May-2025 | 16-May-2025 |
| 696 | Fitout COLO4 | C4 CELL 2 Punchlist | CLAYCO | CP | Punchlist | 31-May-2025 | 11-Jun-2025 |
| 697 | Fitout COLO4 | C4 CELL 3 Punchlist | CLAYCO | CP | Punchlist | 22-Jul-2025 | 02-Aug-2025 |
| 698 | Fitout COLO4 | C4 CELL 4 Punchlist | CLAYCO | CP | Punchlist | 27-Jun-2025 | 10-Jul-2025 |
| 699 | Fitout COLO4 | C4 CELL 1 Data Hall | HACs | S2 | Raise HACs | 09-Apr-2025 | 14-Apr-2025 |
| 700 | Fitout COLO4 | C4 CELL 2 Data Hall | HACs | S2 | Raise HACs | 18-Apr-2025 | 22-Apr-2025 |

| entry | phase | location | trade | activity_code | activity_name | start | finish |
| --- | --- | --- | --- | --- | --- | --- | --- |
| 701 | Fitout COLO4 | C4 CELL 3 Data Hall | HACs | S2 | Raise HACs | 12-May-2025 | 15-May-2025 |
| 702 | Fitout COLO4 | C4 CELL 4 Data Hall | HACs | S2 | Raise HACs | 29-Apr-2025 | 02-May-2025 |
| 703 | Fitout COLO4 | C4 CELL 1 Electrical Room | Electrical | EE51 | Set Electrical Equipments | 31-Mar-2025 | 03-Apr-2025 |
| 704 | Fitout COLO4 | C4 CELL 2 Electrical Room | Electrical | EE51 | Set Electrical Equipments | 26-Mar-2025 | 29-Mar-2025 |
| 705 | Fitout COLO4 | C4 CELL 3 Electrical Room | Electrical | EE51 | Set Electrical Equipments | 18-Apr-2025 | 22-Apr-2025 |
| 706 | Fitout COLO4 | C4 CELL 4 Electrical Room | Electrical | EE51 | Set Electrical Equipments | 05-Apr-2025 | 09-Apr-2025 |
| 707 | Fitout COLO4 | C4 CELL 1 Mechanical Gallery | Mech | M6 | Set Mechanical Equipments | 07-Apr-2025 | 10-Apr-2025 |
| 708 | Fitout COLO4 | C4 CELL 2 Mechanical Gallery | Mech | M6 | Set Mechanical Equipments | 16-Apr-2025 | 19-Apr-2025 |
| 709 | Fitout COLO4 | C4 CELL 3 Mechanical Gallery | Mech | M6 | Set Mechanical Equipments | 09-May-2025 | 13-May-2025 |
| 710 | Fitout COLO4 | C4 CELL 4 Mechanical Gallery | Mech | M6 | Set Mechanical Equipments | 26-Apr-2025 | 30-Apr-2025 |
| 711 | Fitout COLO4 | C4 CELL 1 Data Hall | Electrical | EE7 | Set PDUs | 03-Apr-2025 | 07-Apr-2025 |
| 712 | Fitout COLO4 | C4 CELL 2 Data Hall | Electrical | EE7 | Set PDUs | 11-Apr-2025 | 16-Apr-2025 |
| 713 | Fitout COLO4 | C4 CELL 3 Data Hall | Electrical | EE7 | Set PDUs | 06-May-2025 | 09-May-2025 |
| 714 | Fitout COLO4 | C4 CELL 4 Data Hall | Electrical | EE7 | Set PDUs | 23-Apr-2025 | 26-Apr-2025 |
| 715 | Fitout COLO4 | C4 CELL 1 Electrical Room | Electrical | EE57 | Terminate Electrical Equipments [Inside Electrical Room] | 18-Apr-2025 | 22-Apr-2025 |
| 716 | Fitout COLO4 | C4 CELL 2 Electrical Room | Electrical | EE57 | Terminate Electrical Equipments [Inside Electrical Room] | 15-May-2025 | 19-May-2025 |
| 717 | Fitout COLO4 | C4 CELL 3 Electrical Room | Electrical | EE57 | Terminate Electrical Equipments [Inside Electrical Room] | 09-Jul-2025 | 12-Jul-2025 |
| 718 | Fitout COLO4 | C4 CELL 4 Electrical Room | Electrical | EE57 | Terminate Electrical Equipments [Inside Electrical Room] | 10-Jun-2025 | 13-Jun-2025 |
| 719 | Fitout COLO4 | C4 CELL 1 Mechanical Gallery | Mech | M7 | Terminate Mechanical Equipments | 26-Apr-2025 | 30-Apr-2025 |
| 720 | Fitout COLO4 | C4 CELL 2 Mechanical Gallery | Mech | M7 | Terminate Mechanical Equipments | 06-May-2025 | 09-May-2025 |
| 721 | Fitout COLO4 | C4 CELL 3 Mechanical Gallery | Mech | M7 | Terminate Mechanical Equipments | 29-May-2025 | 02-Jun-2025 |
| 722 | Fitout COLO4 | C4 CELL 4 Mechanical Gallery | Mech | M7 | Terminate Mechanical Equipments | 16-May-2025 | 20-May-2025 |
| 723 | Fitout COLO4 | C4 CELL 1 Data Hall | Electrical | EE58 | Terminate PDUs | 01-May-2025 | 05-May-2025 |
| 724 | Fitout COLO4 | C4 CELL 2 Data Hall | Electrical | EE58 | Terminate PDUs | 28-May-2025 | 30-May-2025 |
| 725 | Fitout COLO4 | C4 CELL 3 Data Hall | Electrical | EE58 | Terminate PDUs | 18-Jul-2025 | 21-Jul-2025 |
| 726 | Fitout COLO4 | C4 CELL 4 Data Hall | Electrical | EE58 | Terminate PDUs | 24-Jun-2025 | 26-Jun-2025 |
| 727 | Fitout COLO5 | C5 CELL 1 Data Hall | HACs | S1 | Assemble HACs [Qty - 5] | 02-May-2025 | 08-May-2025 |
| 728 | Fitout COLO5 | C5 CELL 2 Data Hall | HACs | S1 | Assemble HACs [Qty - 5] | 12-May-2025 | 16-May-2025 |
| 729 | Fitout COLO5 | C5 CELL 3 Data Hall | HACs | S1 | Assemble HACs [Qty - 5] | 04-Jun-2025 | 09-Jun-2025 |
| 730 | Fitout COLO5 | C5 CELL 4 Data Hall | HACs | S1 | Assemble HACs [Qty - 5] | 22-May-2025 | 28-May-2025 |
| 731 | Fitout COLO5 | C5 CELL 1 Data Hall | Electrical | EE43 | Connect Perimeter Cable Trays to HAC Cable Trays | 19-May-2025 | 21-May-2025 |
| 732 | Fitout COLO5 | C5 CELL 2 Data Hall | Electrical | EE43 | Connect Perimeter Cable Trays to HAC Cable Trays | 28-May-2025 | 30-May-2025 |
| 733 | Fitout COLO5 | C5 CELL 3 Data Hall | Electrical | EE43 | Connect Perimeter Cable Trays to HAC Cable Trays | 20-Jun-2025 | 23-Jun-2025 |
| 734 | Fitout COLO5 | C5 CELL 4 Data Hall | Electrical | EE43 | Connect Perimeter Cable Trays to HAC Cable Trays | 07-Jun-2025 | 10-Jun-2025 |
| 735 | Fitout COLO5 | C5 CELL 1 Data Hall | HACs | S4 | Detail HACs | 19-May-2025 | 22-May-2025 |
| 736 | Fitout COLO5 | C5 CELL 2 Data Hall | HACs | S4 | Detail HACs | 28-May-2025 | 31-May-2025 |
| 737 | Fitout COLO5 | C5 CELL 3 Data Hall | HACs | S4 | Detail HACs | 20-Jun-2025 | 24-Jun-2025 |
| 738 | Fitout COLO5 | C5 CELL 4 Data Hall | HACs | S4 | Detail HACs | 07-Jun-2025 | 11-Jun-2025 |
| 739 | Fitout COLO5 | C5 CELL 1 Data Hall | Framing | X30 | Drop Cable Tray [Hanging Rods] | 15-Apr-2025 | 16-Apr-2025 |
| 740 | Fitout COLO5 | C5 CELL 1 Electrical Room | Framing | X30 | Drop Cable Tray [Hanging Rods] | 15-Apr-2025 | 15-Apr-2025 |
| 741 | Fitout COLO5 | C5 CELL 1 Mechanical Gallery | Framing | X30 | Drop Cable Tray [Hanging Rods] | 02-May-2025 | 02-May-2025 |
| 742 | Fitout COLO5 | C5 CELL 2 Data Hall | Framing | X30 | Drop Cable Tray [Hanging Rods] | 23-Apr-2025 | 24-Apr-2025 |
| 743 | Fitout COLO5 | C5 CELL 2 Electrical Room | Framing | X30 | Drop Cable Tray [Hanging Rods] | 23-Apr-2025 | 23-Apr-2025 |
| 744 | Fitout COLO5 | C5 CELL 2 Mechanical Gallery | Framing | X30 | Drop Cable Tray [Hanging Rods] | 12-May-2025 | 12-May-2025 |
| 745 | Fitout COLO5 | C5 CELL 3 Data Hall | Framing | X30 | Drop Cable Tray [Hanging Rods] | 16-May-2025 | 17-May-2025 |
| 746 | Fitout COLO5 | C5 CELL 3 Electrical Room | Framing | X30 | Drop Cable Tray [Hanging Rods] | 16-May-2025 | 16-May-2025 |
| 747 | Fitout COLO5 | C5 CELL 3 Mechanical Gallery | Framing | X30 | Drop Cable Tray [Hanging Rods] | 04-Jun-2025 | 04-Jun-2025 |
| 748 | Fitout COLO5 | C5 CELL 4 Data Hall | Framing | X30 | Drop Cable Tray [Hanging Rods] | 05-May-2025 | 06-May-2025 |
| 749 | Fitout COLO5 | C5 CELL 4 Electrical Room | Framing | X30 | Drop Cable Tray [Hanging Rods] | 05-May-2025 | 05-May-2025 |
| 750 | Fitout COLO5 | C5 CELL 4 Mechanical Gallery | Framing | X30 | Drop Cable Tray [Hanging Rods] | 22-May-2025 | 22-May-2025 |
| 751 | Fitout COLO5 | C5 CELL 1 Data Hall | Drywall | D5 | Finish Drywall | 11-Apr-2025 | 15-Apr-2025 |
| 752 | Fitout COLO5 | C5 CELL 1 Electrical Room | Drywall | D5 | Finish Drywall | 15-Apr-2025 | 16-Apr-2025 |
| 753 | Fitout COLO5 | C5 CELL 1 Mechanical Gallery | Drywall | D5 | Finish Drywall | 02-May-2025 | 05-May-2025 |
| 754 | Fitout COLO5 | C5 CELL 2 Data Hall | Drywall | D5 | Finish Drywall | 21-Apr-2025 | 23-Apr-2025 |
| 755 | Fitout COLO5 | C5 CELL 2 Electrical Room | Drywall | D5 | Finish Drywall | 23-Apr-2025 | 24-Apr-2025 |
| 756 | Fitout COLO5 | C5 CELL 2 Mechanical Gallery | Drywall | D5 | Finish Drywall | 12-May-2025 | 13-May-2025 |
| 757 | Fitout COLO5 | C5 CELL 3 Data Hall | Drywall | D5 | Finish Drywall | 14-May-2025 | 16-May-2025 |
| 758 | Fitout COLO5 | C5 CELL 3 Electrical Room | Drywall | D5 | Finish Drywall | 16-May-2025 | 17-May-2025 |
| 759 | Fitout COLO5 | C5 CELL 3 Mechanical Gallery | Drywall | D5 | Finish Drywall | 04-Jun-2025 | 05-Jun-2025 |
| 760 | Fitout COLO5 | C5 CELL 4 Data Hall | Drywall | D5 | Finish Drywall | 01-May-2025 | 05-May-2025 |
| 761 | Fitout COLO5 | C5 CELL 4 Electrical Room | Drywall | D5 | Finish Drywall | 05-May-2025 | 06-May-2025 |
| 762 | Fitout COLO5 | C5 CELL 4 Mechanical Gallery | Drywall | D5 | Finish Drywall | 22-May-2025 | 23-May-2025 |
| 763 | Fitout COLO5 | C5 CELL 1 Data Hall | CLAYCO | CC | General Cleaning | 28-Apr-2025 | 28-Apr-2025 |
| 764 | Fitout COLO5 | C5 CELL 1 Electrical Room | CLAYCO | CC | General Cleaning | 19-Apr-2025 | 19-Apr-2025 |
| 765 | Fitout COLO5 | C5 CELL 1 Mechanical Gallery | CLAYCO | CC | General Cleaning | 08-May-2025 | 10-May-2025 |
| 766 | Fitout COLO5 | C5 CELL 2 Data Hall | CLAYCO | CC | General Cleaning | 07-May-2025 | 07-May-2025 |
| 767 | Fitout COLO5 | C5 CELL 2 Electrical Room | CLAYCO | CC | General Cleaning | 28-Apr-2025 | 28-Apr-2025 |
| 768 | Fitout COLO5 | C5 CELL 2 Mechanical Gallery | CLAYCO | CC | General Cleaning | 16-May-2025 | 19-May-2025 |
| 769 | Fitout COLO5 | C5 CELL 3 Data Hall | CLAYCO | CC | General Cleaning | 30-May-2025 | 30-May-2025 |
| 770 | Fitout COLO5 | C5 CELL 3 Electrical Room | CLAYCO | CC | General Cleaning | 21-May-2025 | 21-May-2025 |

| entry | phase | location | trade | activity_code | activity_name | start | finish |
| --- | --- | --- | --- | --- | --- | --- | --- |
| 771 | Fitout COLO5 | C5 CELL 3 Mechanical Gallery | CLAYCO | CC | General Cleaning | 09-Jun-2025 | 11-Jun-2025 |
| 772 | Fitout COLO5 | C5 CELL 4 Data Hall | CLAYCO | CC | General Cleaning | 17-May-2025 | 17-May-2025 |
| 773 | Fitout COLO5 | C5 CELL 4 Electrical Room | CLAYCO | CC | General Cleaning | 09-May-2025 | 09-May-2025 |
| 774 | Fitout COLO5 | C5 CELL 4 Mechanical Gallery | CLAYCO | CC | General Cleaning | 28-May-2025 | 30-May-2025 |
| 775 | Fitout COLO5 | C5 CELL 1 Data Hall | Drywall | D1 | In-Wall R/I | 04-Apr-2025 | 07-Apr-2025 |
| 776 | Fitout COLO5 | C5 CELL 1 Electrical Room | Drywall | D1 | In-Wall R/I | 07-Apr-2025 | 08-Apr-2025 |
| 777 | Fitout COLO5 | C5 CELL 2 Data Hall | Drywall | D1 | In-Wall R/I | 14-Apr-2025 | 16-Apr-2025 |
| 778 | Fitout COLO5 | C5 CELL 2 Electrical Room | Drywall | D1 | In-Wall R/I | 16-Apr-2025 | 17-Apr-2025 |
| 779 | Fitout COLO5 | C5 CELL 3 Data Hall | Drywall | D1 | In-Wall R/I | 07-May-2025 | 09-May-2025 |
| 780 | Fitout COLO5 | C5 CELL 3 Electrical Room | Drywall | D1 | In-Wall R/I | 09-May-2025 | 10-May-2025 |
| 781 | Fitout COLO5 | C5 CELL 4 Data Hall | Drywall | D1 | In-Wall R/I | 24-Apr-2025 | 26-Apr-2025 |
| 782 | Fitout COLO5 | C5 CELL 4 Electrical Room | Drywall | D1 | In-Wall R/I | 26-Apr-2025 | 28-Apr-2025 |
| 783 | Fitout COLO5 | C5 CELL 1 Mechanical Gallery | BAS | BA | Install BAS Equipments | 09-May-2025 | 20-May-2025 |
| 784 | Fitout COLO5 | C5 CELL 2 Mechanical Gallery | BAS | BA | Install BAS Equipments | 17-May-2025 | 29-May-2025 |
| 785 | Fitout COLO5 | C5 CELL 3 Mechanical Gallery | BAS | BA | Install BAS Equipments | 10-Jun-2025 | 21-Jun-2025 |
| 786 | Fitout COLO5 | C5 CELL 4 Mechanical Gallery | BAS | BA | Install BAS Equipments | 29-May-2025 | 09-Jun-2025 |
| 787 | Fitout COLO5 | C5 CELL 1 Data Hall | Electrical | EE39 | Install Busways on HAC Arms | 06-May-2025 | 10-May-2025 |
| 788 | Fitout COLO5 | C5 CELL 2 Data Hall | Electrical | EE39 | Install Busways on HAC Arms | 14-May-2025 | 19-May-2025 |
| 789 | Fitout COLO5 | C5 CELL 3 Data Hall | Electrical | EE39 | Install Busways on HAC Arms | 06-Jun-2025 | 11-Jun-2025 |
| 790 | Fitout COLO5 | C5 CELL 4 Data Hall | Electrical | EE39 | Install Busways on HAC Arms | 27-May-2025 | 30-May-2025 |
| 791 | Fitout COLO5 | C5 CELL 1 Electrical Room | Electrical | EE35 | Install Cable Trays / Pathways | 16-Apr-2025 | 17-Apr-2025 |
| 792 | Fitout COLO5 | C5 CELL 1 Mechanical Gallery | Electrical | EE35 | Install Cable Trays / Pathways | 09-May-2025 | 10-May-2025 |
| 793 | Fitout COLO5 | C5 CELL 2 Electrical Room | Electrical | EE35 | Install Cable Trays / Pathways | 24-Apr-2025 | 25-Apr-2025 |
| 794 | Fitout COLO5 | C5 CELL 2 Mechanical Gallery | Electrical | EE35 | Install Cable Trays / Pathways | 17-May-2025 | 19-May-2025 |
| 795 | Fitout COLO5 | C5 CELL 3 Electrical Room | Electrical | EE35 | Install Cable Trays / Pathways | 17-May-2025 | 19-May-2025 |
| 796 | Fitout COLO5 | C5 CELL 3 Mechanical Gallery | Electrical | EE35 | Install Cable Trays / Pathways | 10-Jun-2025 | 11-Jun-2025 |
| 797 | Fitout COLO5 | C5 CELL 4 Electrical Room | Electrical | EE35 | Install Cable Trays / Pathways | 06-May-2025 | 07-May-2025 |
| 798 | Fitout COLO5 | C5 CELL 4 Mechanical Gallery | Electrical | EE35 | Install Cable Trays / Pathways | 29-May-2025 | 30-May-2025 |
| 799 | Fitout COLO5 | C5 CELL 1 Data Hall | Framing | X26 | Install Ceiling Grid | 28-Apr-2025 | 01-May-2025 |
| 800 | Fitout COLO5 | C5 CELL 2 Data Hall | Framing | X26 | Install Ceiling Grid | 07-May-2025 | 10-May-2025 |
| 801 | Fitout COLO5 | C5 CELL 3 Data Hall | Framing | X26 | Install Ceiling Grid | 30-May-2025 | 03-Jun-2025 |
| 802 | Fitout COLO5 | C5 CELL 4 Data Hall | Framing | X26 | Install Ceiling Grid | 17-May-2025 | 21-May-2025 |
| 803 | Fitout COLO5 | C5 CELL 1 Mechanical Gallery | Framing | X27 | Install Ceiling Grid + Device Tiles | 05-May-2025 | 08-May-2025 |
| 804 | Fitout COLO5 | C5 CELL 2 Mechanical Gallery | Framing | X27 | Install Ceiling Grid + Device Tiles | 13-May-2025 | 16-May-2025 |
| 805 | Fitout COLO5 | C5 CELL 3 Mechanical Gallery | Framing | X27 | Install Ceiling Grid + Device Tiles | 05-Jun-2025 | 09-Jun-2025 |
| 806 | Fitout COLO5 | C5 CELL 4 Mechanical Gallery | Framing | X27 | Install Ceiling Grid + Device Tiles | 23-May-2025 | 28-May-2025 |
| 807 | Fitout COLO5 | C5 CELL 1 Data Hall | Electrical | EE43 | Install Conduits PDU to Cable Trays | 22-May-2025 | 23-May-2025 |
| 808 | Fitout COLO5 | C5 CELL 2 Data Hall | Electrical | EE43 | Install Conduits PDU to Cable Trays | 31-May-2025 | 03-Jun-2025 |
| 809 | Fitout COLO5 | C5 CELL 3 Data Hall | Electrical | EE43 | Install Conduits PDU to Cable Trays | 24-Jun-2025 | 26-Jun-2025 |
| 810 | Fitout COLO5 | C5 CELL 4 Data Hall | Electrical | EE43 | Install Conduits PDU to Cable Trays | 11-Jun-2025 | 13-Jun-2025 |
| 811 | Fitout COLO5 | C5 CELL 1 Data Hall | Framing | X35 | Install Device Tiles | 08-May-2025 | 09-May-2025 |
| 812 | Fitout COLO5 | C5 CELL 2 Data Hall | Framing | X35 | Install Device Tiles | 16-May-2025 | 17-May-2025 |
| 813 | Fitout COLO5 | C5 CELL 3 Data Hall | Framing | X35 | Install Device Tiles | 09-Jun-2025 | 10-Jun-2025 |
| 814 | Fitout COLO5 | C5 CELL 4 Data Hall | Framing | X35 | Install Device Tiles | 28-May-2025 | 29-May-2025 |
| 815 | Fitout COLO5 | C5 CELL 1 Data Hall | Drywall | D2 | Install Drywall | 08-Apr-2025 | 10-Apr-2025 |
| 816 | Fitout COLO5 | C5 CELL 2 Data Hall | Drywall | D2 | Install Drywall | 17-Apr-2025 | 19-Apr-2025 |
| 817 | Fitout COLO5 | C5 CELL 3 Data Hall | Drywall | D2 | Install Drywall | 10-May-2025 | 13-May-2025 |
| 818 | Fitout COLO5 | C5 CELL 4 Data Hall | Drywall | D2 | Install Drywall | 28-Apr-2025 | 30-Apr-2025 |
| 819 | Fitout COLO5 | C5 CELL 2 Electrical Room | Drywall | D2 | Install Drywall | 18-Apr-2025 | 22-Apr-2025 |
| 820 | Fitout COLO5 | C5 CELL 1 Electrical Room | Drywall | D2 | Install Drywall | 09-Apr-2025 | 14-Apr-2025 |
| 821 | Fitout COLO5 | C5 CELL 3 Electrical Room | Drywall | D2 | Install Drywall | 12-May-2025 | 15-May-2025 |
| 822 | Fitout COLO5 | C5 CELL 4 Electrical Room | Drywall | D2 | Install Drywall | 29-Apr-2025 | 02-May-2025 |
| 823 | Fitout COLO5 | C5 CELL 1 Mechanical Gallery | Drywall | D2 | Install Drywall | 30-Apr-2025 | 01-May-2025 |
| 824 | Fitout COLO5 | C5 CELL 2 Mechanical Gallery | Drywall | D2 | Install Drywall | 09-May-2025 | 10-May-2025 |
| 825 | Fitout COLO5 | C5 CELL 3 Mechanical Gallery | Drywall | D2 | Install Drywall | 02-Jun-2025 | 03-Jun-2025 |
| 826 | Fitout COLO5 | C5 CELL 4 Mechanical Gallery | Drywall | D2 | Install Drywall | 20-May-2025 | 21-May-2025 |
| 827 | Fitout COLO5 | C5 CELL 1 Data Hall | Electrical | EE11 | Install Fiber Runner [ Cable Trays on HAC Arms] | 08-May-2025 | 13-May-2025 |
| 828 | Fitout COLO5 | C5 CELL 2 Data Hall | Electrical | EE11 | Install Fiber Runner [ Cable Trays on HAC Arms] | 16-May-2025 | 21-May-2025 |
| 829 | Fitout COLO5 | C5 CELL 3 Data Hall | Electrical | EE11 | Install Fiber Runner [ Cable Trays on HAC Arms] | 09-Jun-2025 | 13-Jun-2025 |
| 830 | Fitout COLO5 | C5 CELL 4 Data Hall | Electrical | EE11 | Install Fiber Runner [ Cable Trays on HAC Arms] | 28-May-2025 | 02-Jun-2025 |
| 831 | Fitout COLO5 | C5 CELL 1 Data Hall | Framing | X21 | Framing | 01-Apr-2025 | 03-Apr-2025 |
| 832 | Fitout COLO5 | C5 CELL 1 Electrical Room | Framing | X21 | Framing | 04-Apr-2025 | 05-Apr-2025 |
| 833 | Fitout COLO5 | C5 CELL 2 Data Hall | Framing | X21 | Framing | 09-Apr-2025 | 11-Apr-2025 |
| 834 | Fitout COLO5 | C5 CELL 2 Electrical Room | Framing | X21 | Framing | 14-Apr-2025 | 15-Apr-2025 |
| 835 | Fitout COLO5 | C5 CELL 3 Data Hall | Framing | X21 | Framing | 02-May-2025 | 06-May-2025 |
| 836 | Fitout COLO5 | C5 CELL 3 Electrical Room | Framing | X21 | Framing | 07-May-2025 | 08-May-2025 |
| 837 | Fitout COLO5 | C5 CELL 4 Data Hall | Framing | X21 | Framing | 21-Apr-2025 | 23-Apr-2025 |
| 838 | Fitout COLO5 | C5 CELL 4 Electrical Room | Framing | X21 | Framing | 24-Apr-2025 | 25-Apr-2025 |
| 839 | Fitout COLO5 | C5 CELL 1 Data Hall | Electrical | EE44 | Install Perimeter Cable Trays | 02-May-2025 | 07-May-2025 |
| 840 | Fitout COLO5 | C5 CELL 2 Data Hall | Electrical | EE44 | Install Perimeter Cable Trays | 12-May-2025 | 15-May-2025 |

| entry | phase | location | trade | activity_code | activity_name | start | finish |
| --- | --- | --- | --- | --- | --- | --- | --- |
| 841 | Fitout COLO5 | C5 CELL 3 Data Hall | Electrical | EE44 | Install Perimeter Cable Trays | 04-Jun-2025 | 07-Jun-2025 |
| 842 | Fitout COLO5 | C5 CELL 4 Data Hall | Electrical | EE44 | Install Perimeter Cable Trays | 22-May-2025 | 27-May-2025 |
| 843 | Fitout COLO5 | C5 CELL 1 Data Hall | Framing | X19 | Install Screen Mesh + Caulking | 19-Apr-2025 | 22-Apr-2025 |
| 844 | Fitout COLO5 | C5 CELL 2 Data Hall | Framing | X19 | Install Screen Mesh + Caulking | 28-Apr-2025 | 30-Apr-2025 |
| 845 | Fitout COLO5 | C5 CELL 3 Data Hall | Framing | X19 | Install Screen Mesh + Caulking | 21-May-2025 | 23-May-2025 |
| 846 | Fitout COLO5 | C5 CELL 4 Data Hall | Framing | X19 | Install Screen Mesh + Caulking | 09-May-2025 | 12-May-2025 |
| 847 | Fitout COLO5 | C5 CELL 1 Data Hall | Framing | X38 | Install Secondary Steel | 23-Apr-2025 | 24-Apr-2025 |
| 848 | Fitout COLO5 | C5 CELL 2 Data Hall | Framing | X38 | Install Secondary Steel | 01-May-2025 | 02-May-2025 |
| 849 | Fitout COLO5 | C5 CELL 3 Data Hall | Framing | X38 | Install Secondary Steel | 27-May-2025 | 27-May-2025 |
| 850 | Fitout COLO5 | C5 CELL 4 Data Hall | Framing | X38 | Install Secondary Steel | 13-May-2025 | 14-May-2025 |
| 851 | Fitout COLO5 | C5 CELL 1 Data Hall | Framing | X9 | Layout Framing | 31-Mar-2025 | 31-Mar-2025 |
| 852 | Fitout COLO5 | C5 CELL 2 Data Hall | Framing | X9 | Layout Framing | 08-Apr-2025 | 08-Apr-2025 |
| 853 | Fitout COLO5 | C5 CELL 3 Data Hall | Framing | X9 | Layout Framing | 01-May-2025 | 01-May-2025 |
| 854 | Fitout COLO5 | C5 CELL 4 Data Hall | Framing | X9 | Layout Framing | 19-Apr-2025 | 19-Apr-2025 |
| 855 | Fitout COLO5 | C5 CELL 4 Mechanical Gallery | Electrical | EE1 | Overhead R/I - Electrical | 05-May-2025 | 07-May-2025 |
| 856 | Fitout COLO5 | C5 CELL 1 Data Hall | Electrical | EE1 | Overhead R/I - Electrical | 11-Apr-2025 | 16-Apr-2025 |
| 857 | Fitout COLO5 | C5 CELL 1 Electrical Room | Electrical | EE1 | Overhead R/I - Electrical | 11-Apr-2025 | 15-Apr-2025 |
| 858 | Fitout COLO5 | C5 CELL 1 Mechanical Gallery | Electrical | EE1 | Overhead R/I - Electrical | 15-Apr-2025 | 17-Apr-2025 |
| 859 | Fitout COLO5 | C5 CELL 2 Data Hall | Electrical | EE1 | Overhead R/I - Electrical | 21-Apr-2025 | 24-Apr-2025 |
| 860 | Fitout COLO5 | C5 CELL 2 Electrical Room | Electrical | EE1 | Overhead R/I - Electrical | 21-Apr-2025 | 23-Apr-2025 |
| 861 | Fitout COLO5 | C5 CELL 2 Mechanical Gallery | Electrical | EE1 | Overhead R/I - Electrical | 23-Apr-2025 | 25-Apr-2025 |
| 862 | Fitout COLO5 | C5 CELL 3 Data Hall | Electrical | EE1 | Overhead R/I - Electrical | 14-May-2025 | 17-May-2025 |
| 863 | Fitout COLO5 | C5 CELL 3 Electrical Room | Electrical | EE1 | Overhead R/I - Electrical | 14-May-2025 | 16-May-2025 |
| 864 | Fitout COLO5 | C5 CELL 3 Mechanical Gallery | Electrical | EE1 | Overhead R/I - Electrical | 16-May-2025 | 19-May-2025 |
| 865 | Fitout COLO5 | C5 CELL 4 Data Hall | Electrical | EE1 | Overhead R/I - Electrical | 01-May-2025 | 06-May-2025 |
| 866 | Fitout COLO5 | C5 CELL 4 Electrical Room | Electrical | EE1 | Overhead R/I - Electrical | 01-May-2025 | 05-May-2025 |
| 867 | Fitout COLO5 | C5 CELL 1 Data Hall | Fire Protection | R1 | Overhead R/I - Fire Alarm | 11-Apr-2025 | 15-Apr-2025 |
| 868 | Fitout COLO5 | C5 CELL 1 Electrical Room | Fire Protection | R1 | Overhead R/I - Fire Alarm | 11-Apr-2025 | 14-Apr-2025 |
| 869 | Fitout COLO5 | C5 CELL 1 Mechanical Gallery | Fire Protection | R1 | Overhead R/I - Fire Alarm | 15-Apr-2025 | 16-Apr-2025 |
| 870 | Fitout COLO5 | C5 CELL 2 Data Hall | Fire Protection | R1 | Overhead R/I - Fire Alarm | 21-Apr-2025 | 23-Apr-2025 |
| 871 | Fitout COLO5 | C5 CELL 2 Electrical Room | Fire Protection | R1 | Overhead R/I - Fire Alarm | 21-Apr-2025 | 22-Apr-2025 |
| 872 | Fitout COLO5 | C5 CELL 2 Mechanical Gallery | Fire Protection | R1 | Overhead R/I - Fire Alarm | 23-Apr-2025 | 24-Apr-2025 |
| 873 | Fitout COLO5 | C5 CELL 3 Data Hall | Fire Protection | R1 | Overhead R/I - Fire Alarm | 14-May-2025 | 16-May-2025 |
| 874 | Fitout COLO5 | C5 CELL 3 Electrical Room | Fire Protection | R1 | Overhead R/I - Fire Alarm | 14-May-2025 | 15-May-2025 |
| 875 | Fitout COLO5 | C5 CELL 3 Mechanical Gallery | Fire Protection | R1 | Overhead R/I - Fire Alarm | 16-May-2025 | 17-May-2025 |
| 876 | Fitout COLO5 | C5 CELL 4 Data Hall | Fire Protection | R1 | Overhead R/I - Fire Alarm | 01-May-2025 | 05-May-2025 |
| 877 | Fitout COLO5 | C5 CELL 4 Electrical Room | Fire Protection | R1 | Overhead R/I - Fire Alarm | 01-May-2025 | 02-May-2025 |
| 878 | Fitout COLO5 | C5 CELL 4 Mechanical Gallery | Fire Protection | R1 | Overhead R/I - Fire Alarm | 05-May-2025 | 06-May-2025 |
| 879 | Fitout COLO5 | C5 CELL 1 Data Hall | Fire Protection | R19 | Fire Protection OH R/I | 08-Apr-2025 | 10-Apr-2025 |
| 880 | Fitout COLO5 | C5 CELL 1 Electrical Room | Fire Protection | R20 | Fire Protection OH R/I | 09-Apr-2025 | 10-Apr-2025 |
| 881 | Fitout COLO5 | C5 CELL 1 Mechanical Gallery | Fire Protection | R21 | Fire Protection OH R/I | 11-Apr-2025 | 14-Apr-2025 |
| 882 | Fitout COLO5 | C5 CELL 2 Data Hall | Fire Protection | R22 | Fire Protection OH R/I | 17-Apr-2025 | 19-Apr-2025 |
| 883 | Fitout COLO5 | C5 CELL 2 Electrical Room | Fire Protection | R23 | Fire Protection OH R/I | 18-Apr-2025 | 19-Apr-2025 |
| 884 | Fitout COLO5 | C5 CELL 2 Mechanical Gallery | Fire Protection | R24 | Fire Protection OH R/I | 21-Apr-2025 | 22-Apr-2025 |
| 885 | Fitout COLO5 | C5 CELL 3 Data Hall | Fire Protection | R25 | Fire Protection OH R/I | 10-May-2025 | 13-May-2025 |
| 886 | Fitout COLO5 | C5 CELL 3 Electrical Room | Fire Protection | R26 | Fire Protection OH R/I | 12-May-2025 | 13-May-2025 |
| 887 | Fitout COLO5 | C5 CELL 3 Mechanical Gallery | Fire Protection | R27 | Fire Protection OH R/I | 14-May-2025 | 15-May-2025 |
| 888 | Fitout COLO5 | C5 CELL 4 Data Hall | Fire Protection | R28 | Fire Protection OH R/I | 28-Apr-2025 | 30-Apr-2025 |
| 889 | Fitout COLO5 | C5 CELL 4 Electrical Room | Fire Protection | R29 | Fire Protection OH R/I | 29-Apr-2025 | 30-Apr-2025 |
| 890 | Fitout COLO5 | C5 CELL 4 Mechanical Gallery | Fire Protection | R30 | Fire Protection OH R/I | 01-May-2025 | 02-May-2025 |
| 891 | Fitout COLO5 | C5 CELL 1 Data Hall | Mech | M5 | Overhead R/I - Mechanical | 15-Apr-2025 | 16-Apr-2025 |
| 892 | Fitout COLO5 | C5 CELL 1 Mechanical Gallery | Mech | M5 | Overhead R/I - Mechanical | 18-Apr-2025 | 24-Apr-2025 |
| 893 | Fitout COLO5 | C5 CELL 2 Data Hall | Mech | M5 | Overhead R/I - Mechanical | 23-Apr-2025 | 24-Apr-2025 |
| 894 | Fitout COLO5 | C5 CELL 2 Mechanical Gallery | Mech | M5 | Overhead R/I - Mechanical | 26-Apr-2025 | 02-May-2025 |
| 895 | Fitout COLO5 | C5 CELL 3 Data Hall | Mech | M5 | Overhead R/I - Mechanical | 16-May-2025 | 17-May-2025 |
| 896 | Fitout COLO5 | C5 CELL 3 Mechanical Gallery | Mech | M5 | Overhead R/I - Mechanical | 20-May-2025 | 27-May-2025 |
| 897 | Fitout COLO5 | C5 CELL 4 Data Hall | Mech | M5 | Overhead R/I - Mechanical | 05-May-2025 | 06-May-2025 |
| 898 | Fitout COLO5 | C5 CELL 4 Mechanical Gallery | Mech | M5 | Overhead R/I - Mechanical | 08-May-2025 | 14-May-2025 |
| 899 | Fitout COLO5 | C5 CELL 1 Mechanical Gallery | Plumbing | P4 | Overhead R/I - Plumbing | 25-Apr-2025 | 01-May-2025 |
| 900 | Fitout COLO5 | C5 CELL 2 Mechanical Gallery | Plumbing | P4 | Overhead R/I - Plumbing | 05-May-2025 | 10-May-2025 |
| 901 | Fitout COLO5 | C5 CELL 3 Mechanical Gallery | Plumbing | P4 | Overhead R/I - Plumbing | 28-May-2025 | 03-Jun-2025 |
| 902 | Fitout COLO5 | C5 CELL 4 Mechanical Gallery | Plumbing | P4 | Overhead R/I - Plumbing | 15-May-2025 | 21-May-2025 |
| 903 | Fitout COLO5 | C5 CELL 1 Data Hall | Painting | Y2 | Paint Dry-Wall | 16-Apr-2025 | 18-Apr-2025 |
| 904 | Fitout COLO5 | C5 CELL 1 Electrical Room | Painting | Y2 | Paint Dry-Wall | 17-Apr-2025 | 18-Apr-2025 |
| 905 | Fitout COLO5 | C5 CELL 1 Mechanical Gallery | Painting | Y2 | Paint Dry-Wall | 06-May-2025 | 07-May-2025 |
| 906 | Fitout COLO5 | C5 CELL 2 Data Hall | Painting | Y2 | Paint Dry-Wall | 24-Apr-2025 | 26-Apr-2025 |
| 907 | Fitout COLO5 | C5 CELL 2 Electrical Room | Painting | Y2 | Paint Dry-Wall | 25-Apr-2025 | 26-Apr-2025 |
| 908 | Fitout COLO5 | C5 CELL 2 Mechanical Gallery | Painting | Y2 | Paint Dry-Wall | 14-May-2025 | 15-May-2025 |
| 909 | Fitout COLO5 | C5 CELL 3 Data Hall | Painting | Y2 | Paint Dry-Wall | 17-May-2025 | 20-May-2025 |
| 910 | Fitout COLO5 | C5 CELL 3 Electrical Room | Painting | Y2 | Paint Dry-Wall | 19-May-2025 | 20-May-2025 |

| entry | phase | location | trade | activity_code | activity_name | start | finish |
| --- | --- | --- | --- | --- | --- | --- | --- |
| 911 | Fitout COLO5 | C5 CELL 3 Mechanical Gallery | Painting | Y2 | Paint Dry-Wall | 06-Jun-2025 | 07-Jun-2025 |
| 912 | Fitout COLO5 | C5 CELL 4 Data Hall | Painting | Y2 | Paint Dry-Wall | 06-May-2025 | 08-May-2025 |
| 913 | Fitout COLO5 | C5 CELL 4 Electrical Room | Painting | Y2 | Paint Dry-Wall | 07-May-2025 | 08-May-2025 |
| 914 | Fitout COLO5 | C5 CELL 4 Mechanical Gallery | Painting | Y2 | Paint Dry-Wall | 27-May-2025 | 27-May-2025 |
| 915 | Fitout COLO5 | C5 CELL 1 Data Hall | Painting | Y7 | Paint Secondary Steel | 25-Apr-2025 | 26-Apr-2025 |
| 916 | Fitout COLO5 | C5 CELL 2 Data Hall | Painting | Y7 | Paint Secondary Steel | 05-May-2025 | 06-May-2025 |
| 917 | Fitout COLO5 | C5 CELL 3 Data Hall | Painting | Y7 | Paint Secondary Steel | 28-May-2025 | 29-May-2025 |
| 918 | Fitout COLO5 | C5 CELL 4 Data Hall | Painting | Y7 | Paint Secondary Steel | 15-May-2025 | 16-May-2025 |
| 919 | Fitout COLO5 | C5 CELL 1 Mechanical Gallery | BAS | BA1 | Pull & Terminate BAS Equipments | 21-May-2025 | 30-May-2025 |
| 920 | Fitout COLO5 | C5 CELL 2 Mechanical Gallery | BAS | BA1 | Pull & Terminate BAS Equipments | 30-May-2025 | 07-Jun-2025 |
| 921 | Fitout COLO5 | C5 CELL 3 Mechanical Gallery | BAS | BA1 | Pull & Terminate BAS Equipments | 23-Jun-2025 | 01-Jul-2025 |
| 922 | Fitout COLO5 | C5 CELL 4 Mechanical Gallery | BAS | BA1 | Pull & Terminate BAS Equipments | 10-Jun-2025 | 19-Jun-2025 |
| 923 | Fitout COLO5 | C5 CELL 1 Electrical Room | Electrical | EE47 | Pull Cable between Elec Equipments [Inside Electrical Room] Pull Crew 1 | 02-May-2025 | 15-May-2025 |
| 924 | Fitout COLO5 | C5 CELL 2 Electrical Room | Electrical | EE47 | Pull Cable between Elec Equipments [Inside Electrical Room] Pull Crew 1 | 30-May-2025 | 11-Jun-2025 |
| 925 | Fitout COLO5 | C5 CELL 3 Electrical Room | Electrical | EE47.1 | Pull Cable between Elec Equipments [Inside Electrical Room] Pull Crew 2 | 11-Jul-2025 | 23-Jul-2025 |
| 926 | Fitout COLO5 | C5 CELL 4 Electrical Room | Electrical | EE47.1 | Pull Cable between Elec Equipments [Inside Electrical Room] Pull Crew 2 | 12-Jun-2025 | 25-Jun-2025 |
| 927 | Fitout COLO5 | C5 CELL 1 Mechanical Gallery | Electrical | EE48 | Pull Cable to Mechanical Equipments [From Electrical Room] | 16-May-2025 | 30-May-2025 |
| 928 | Fitout COLO5 | C5 CELL 2 Mechanical Gallery | Electrical | EE48 | Pull Cable to Mechanical Equipments [From Electrical Room] | 27-May-2025 | 07-Jun-2025 |
| 929 | Fitout COLO5 | C5 CELL 3 Mechanical Gallery | Electrical | EE48 | Pull Cable to Mechanical Equipments [From Electrical Room] | 18-Jun-2025 | 01-Jul-2025 |
| 930 | Fitout COLO5 | C5 CELL 4 Mechanical Gallery | Electrical | EE48 | Pull Cable to Mechanical Equipments [From Electrical Room] | 05-Jun-2025 | 19-Jun-2025 |
| 931 | Fitout COLO5 | C5 CELL 1 Electrical Room | Electrical | EE50 | Pull Feeders from Electrical Room to PDUs Pull Crew 1 | 16-May-2025 | 29-May-2025 |
| 932 | Fitout COLO5 | C5 CELL 2 Electrical Room | Electrical | EE50 | Pull Feeders from Electrical Room to PDUs Pull Crew 1 | 12-Jun-2025 | 24-Jun-2025 |
| 933 | Fitout COLO5 | C5 CELL 3 Electrical Room | Electrical | EE50 | Pull Feeders from Electrical Room to PDUs Pull Crew 2 | 24-Jul-2025 | 05-Aug-2025 |
| 934 | Fitout COLO5 | C5 CELL 4 Electrical Room | Electrical | EE50 | Pull Feeders from Electrical Room to PDUs Pull Crew 2 | 26-Jun-2025 | 10-Jul-2025 |
| 935 | Fitout COLO5 | C5 CELL 1 Data Hall | Electrical | EE17 | Pull Feeders from PDUs to Busways | 27-May-2025 | 31-May-2025 |
| 936 | Fitout COLO5 | C5 CELL 2 Data Hall | Electrical | EE17 | Pull Feeders from PDUs to Busways | 04-Jun-2025 | 09-Jun-2025 |
| 937 | Fitout COLO5 | C5 CELL 3 Data Hall | Electrical | EE17 | Pull Feeders from PDUs to Busways | 27-Jun-2025 | 02-Jul-2025 |
| 938 | Fitout COLO5 | C5 CELL 4 Data Hall | Electrical | EE17 | Pull Feeders from PDUs to Busways | 16-Jun-2025 | 20-Jun-2025 |
| 939 | Fitout COLO5 | C5 CELL 1 Punchlist | CLAYCO | CP | Punchlist | 05-Jun-2025 | 17-Jun-2025 |
| 940 | Fitout COLO5 | C5 CELL 2 Punchlist | CLAYCO | CP | Punchlist | 28-Jun-2025 | 11-Jul-2025 |
| 941 | Fitout COLO5 | C5 CELL 3 Punchlist | CLAYCO | CP | Punchlist | 09-Aug-2025 | 21-Aug-2025 |
| 942 | Fitout COLO5 | C5 CELL 4 Punchlist | CLAYCO | CP | Punchlist | 15-Jul-2025 | 25-Jul-2025 |
| 943 | Fitout COLO5 | C5 CELL 1 Data Hall | HACs | S2 | Raise HACs | 14-May-2025 | 17-May-2025 |
| 944 | Fitout COLO5 | C5 CELL 2 Data Hall | HACs | S2 | Raise HACs | 22-May-2025 | 27-May-2025 |
| 945 | Fitout COLO5 | C5 CELL 3 Data Hall | HACs | S2 | Raise HACs | 16-Jun-2025 | 19-Jun-2025 |
| 946 | Fitout COLO5 | C5 CELL 4 Data Hall | HACs | S2 | Raise HACs | 03-Jun-2025 | 06-Jun-2025 |
| 947 | Fitout COLO5 | C5 CELL 1 Electrical Room | Electrical | EE51 | Set Electrical Equipments | 21-Apr-2025 | 01-May-2025 |
| 948 | Fitout COLO5 | C5 CELL 2 Electrical Room | Electrical | EE51 | Set Electrical Equipments | 29-Apr-2025 | 02-May-2025 |
| 949 | Fitout COLO5 | C5 CELL 3 Electrical Room | Electrical | EE51 | Set Electrical Equipments | 22-May-2025 | 27-May-2025 |
| 950 | Fitout COLO5 | C5 CELL 4 Electrical Room | Electrical | EE51 | Set Electrical Equipments | 10-May-2025 | 14-May-2025 |
| 951 | Fitout COLO5 | C5 CELL 1 Mechanical Gallery | Mech | M6 | Set Mechanical Equipments | 12-May-2025 | 15-May-2025 |
| 952 | Fitout COLO5 | C5 CELL 2 Mechanical Gallery | Mech | M6 | Set Mechanical Equipments | 20-May-2025 | 23-May-2025 |
| 953 | Fitout COLO5 | C5 CELL 3 Mechanical Gallery | Mech | M6 | Set Mechanical Equipments | 12-Jun-2025 | 17-Jun-2025 |
| 954 | Fitout COLO5 | C5 CELL 4 Mechanical Gallery | Mech | M6 | Set Mechanical Equipments | 31-May-2025 | 04-Jun-2025 |
| 955 | Fitout COLO5 | C5 CELL 1 Data Hall | Electrical | EE7 | Set PDUs | 08-May-2025 | 12-May-2025 |
| 956 | Fitout COLO5 | C5 CELL 2 Data Hall | Electrical | EE7 | Set PDUs | 16-May-2025 | 20-May-2025 |
| 957 | Fitout COLO5 | C5 CELL 3 Data Hall | Electrical | EE7 | Set PDUs | 09-Jun-2025 | 12-Jun-2025 |
| 958 | Fitout COLO5 | C5 CELL 4 Data Hall | Electrical | EE7 | Set PDUs | 28-May-2025 | 31-May-2025 |
| 959 | Fitout COLO5 | C5 CELL 1 Electrical Room | Electrical | EE57 | Terminate Electrical Equipments [Inside Electrical Room] | 16-May-2025 | 20-May-2025 |
| 960 | Fitout COLO5 | C5 CELL 2 Electrical Room | Electrical | EE57 | Terminate Electrical Equipments [Inside Electrical Room] | 12-Jun-2025 | 17-Jun-2025 |
| 961 | Fitout COLO5 | C5 CELL 3 Electrical Room | Electrical | EE57 | Terminate Electrical Equipments [Inside Electrical Room] | 24-Jul-2025 | 29-Jul-2025 |
| 962 | Fitout COLO5 | C5 CELL 4 Electrical Room | Electrical | EE57 | Terminate Electrical Equipments [Inside Electrical Room] | 26-Jun-2025 | 30-Jun-2025 |
| 963 | Fitout COLO5 | C5 CELL 3 Mechanical Gallery | Mech | M7 | Terminate Mechanical Equipments | 02-Jul-2025 | 08-Jul-2025 |
| 964 | Fitout COLO5 | C5 CELL 1 Mechanical Gallery | Mech | M7 | Terminate Mechanical Equipments | 31-May-2025 | 04-Jun-2025 |
| 965 | Fitout COLO5 | C5 CELL 2 Mechanical Gallery | Mech | M7 | Terminate Mechanical Equipments | 09-Jun-2025 | 12-Jun-2025 |
| 966 | Fitout COLO5 | C5 CELL 4 Mechanical Gallery | Mech | M7 | Terminate Mechanical Equipments | 20-Jun-2025 | 24-Jun-2025 |
| 967 | Fitout COLO5 | C5 CELL 1 Data Hall | Electrical | EE58 | Terminate PDUs | 02-Jun-2025 | 04-Jun-2025 |
| 968 | Fitout COLO5 | C5 CELL 2 Data Hall | Electrical | EE58 | Terminate PDUs | 25-Jun-2025 | 27-Jun-2025 |
| 969 | Fitout COLO5 | C5 CELL 3 Data Hall | Electrical | EE58 | Terminate PDUs | 06-Aug-2025 | 08-Aug-2025 |
| 970 | Fitout COLO5 | C5 CELL 4 Data Hall | Electrical | EE58 | Terminate PDUs | 11-Jul-2025 | 14-Jul-2025 |
| 971 | Foundations | Foundations | Foundations | F1 | Foundations / Stem Walls | 19-Sep-2024 | 09-Oct-2024 |
| 972 | Foundations | Foundations | Foundations | F1 | Foundations / Stem Walls | 10-Oct-2024 | 12-Nov-2024 |
| 973 | Preconstruction | BIM | BIM | 0.1 | Above ground BIM Co-ordination | 27-Sep-2024 | 23-Dec-2024 |
| 974 | Preconstruction | BIM | BIM |  | BIM Kickoff | 18-Jul-2024 | 18-Jul-2024 |
| 975 | Preconstruction | RFP / PSR | Precon | PC1 | PSR Executed (Early Works) | 06-Jun-2024 | 06-Jun-2024 |
| 976 | Preconstruction | RFP / PSR | Precon | PC2 | PSR Executed (Full GMP) | 30-Sep-2024 | 30-Sep-2024 |
| 977 | Preconstruction | RFP / PSR | Precon | PC3 | RFP Issued (Revised 3.21.24) and Proposal Due to MSFT | 25-Mar-2024 | 12-Apr-2024 |
| 978 | Preconstruction | BIM | BIM |  | UG BIM Co-ordination | 19-Jul-2024 | 26-Sep-2024 |
| 979 | Procurement | Early Awards | Procure | 19 | ARL & Subcontractor Awards | 07-Jun-2024 | 07-Sep-2024 |
| 980 | Procurement | Early Awards | Procure | 14 | Buyouts & Early Procurement | 07-Jun-2024 | 30-Sep-2024 |

| entry | phase | location | trade | activity_code | activity_name | start | finish |
| --- | --- | --- | --- | --- | --- | --- | --- |
| 981 | Procurement MSFT OFCI ROJ CFCI (Critical Only) | CFCI (Critical Only) | Procure | 20 | Cable Bus Fabrication/ Lead Time | 15-Nov-2024 | 03-Mar-2025 |
| 982 | Procurement MSFT OFCI ROJ CFCI (Critical Only) | CFCI (Critical Only) | Procure | 21 | CFCI- MV Cables Fabrication/ Lead Time | 17-Aug-2024 | 24-Apr-2025 |
| 983 | Procurement MSFT OFCI ROJ CFCI (Critical Only) | CFCI (Critical Only) | Procure | 31 | HACs Fabrication/ Lead Time | 15-Nov-2024 | 05-Dec-2024 |
| 984 | Procurement MSFT OFCI ROJ CFCI (Critical Only) | CFCI (Critical Only) | Procure | 116 | MV Metering Cabinet - *Not Used* [65 Weeks] - Not Tied | 07-Aug-2024 | 21-Nov-2025 |
| 985 | Procurement MSFT OFCI ROJ CFCI (Critical Only) | CFCI (Critical Only) | Procure | 117 | MV Metering Cabinet - Substitute [43 Weeks] | 07-Aug-2024 | 18-Jun-2025 |
| 986 | Procurement MSFT OFCI ROJ COLO3 | C3 Building Automation System | Procure | 15 | Admin/C03- OFCI- Building Automation System (BAS) (ALC) Shipping/ ROJ | 19-Feb-2025 | 23-Feb-2025 |
| 987 | Procurement MSFT OFCI ROJ COLO3 | C3 UPS System W / Battery | Procure | 16 | Admin/C03- OFCI- Received SUB Warehouse 9/28/2023 UPS System w/ Battery (UPS) (Eaton) (SOW Del Date- 8/13/23) | 02-Sep-2024 | 02-Sep-2024 |
| 988 | Procurement MSFT OFCI ROJ COLO3 | C3 Air Handling Units | Procure | 17 | Air Handling Units (AHU) (Stulz) Delivered | 13-Mar-2025 | 13-Mar-2025 |
| 989 | Procurement MSFT OFCI ROJ COLO3 | C3 Air Handling Units | Procure | 18 | Air Handling Units (AHU) (Stulz) Shipped/ROJ | 09-Mar-2025 | 13-Mar-2025 |
| 990 | Procurement MSFT OFCI ROJ COLO3 | C3 Auto Transfer Control Panel | Procure | 1 | Auto Transfer Control Panel (TCP) Delivered | 08-Mar-2025 | 08-Mar-2025 |
| 991 | Procurement MSFT OFCI ROJ COLO3 | C3 Auto Transfer Control Panel | Procure | 2 | Auto Transfer Control Panel (TCP) Shipping/ ROJ | 08-Mar-2025 | 08-Mar-2025 |
| 992 | Procurement MSFT OFCI ROJ COLO3 | C3 Automatic Transfer Switches | Procure | 3 | Automatic Transfer Switches (ATS) (Schneider) Delivered | 23-Feb-2025 | 23-Feb-2025 |
| 993 | Procurement MSFT OFCI ROJ COLO3 | C3 Automatic Transfer Switches | Procure | 4 | Automatic Transfer Switches (ATS) (Schneider) Shipping/ ROJ | 19-Feb-2025 | 23-Feb-2025 |
| 994 | Procurement MSFT OFCI ROJ COLO3 | C3 Auxillary Power Distribution | Procure | 5 | Auxillary (Mech) Power Distribution Panels (ADP) Delivered | 08-Mar-2025 | 08-Mar-2025 |
| 995 | Procurement MSFT OFCI ROJ COLO3 | C3 Auxillary Power Distribution | Procure | 6 | Auxillary (Mech) Power Distribution Panels (ADP) Shipping/ ROJ | 08-Mar-2025 | 08-Mar-2025 |
| 996 | Procurement MSFT OFCI ROJ COLO3 | C3 Building Automation System | Procure | 9 | Building Automation System (BAS) (ALC) Delivered | 23-Feb-2025 | 23-Feb-2025 |
| 997 | Procurement MSFT OFCI ROJ COLO3 | C3 Busway / Busplugs | Procure | 12 | Busway / Busplugs (Starline Holding) Delivered | 23-Feb-2025 | 23-Feb-2025 |
| 998 | Procurement MSFT OFCI ROJ COLO3 | C3 Busway / Busplugs | Procure | 13 | Busway / Busplugs (Starline Holding) Shipping/ ROJ | 19-Feb-2025 | 23-Feb-2025 |
| 999 | Procurement MSFT OFCI ROJ COLO3 | C3 Elec Performance Monitoring System | Procure | 27 | Elec. Performance Monitoring System (EPMS) (Schneider) Delivered | 23-Feb-2025 | 23-Feb-2025 |
| 1000 | Procurement MSFT OFCI ROJ COLO3 | C3 Elec Performance Monitoring System | Procure | 28 | Elec. Performance Monitoring System (EPMS) (Schneider) Shipping/ ROJ | 19-Feb-2025 | 23-Feb-2025 |
| 1001 | Procurement MSFT OFCI ROJ COLO3 | C3 HAC/Racking | Procure | 29 | HAC/Racking (Tate Access) Delivered | 21-Feb-2025 | 21-Feb-2025 |
| 1002 | Procurement MSFT OFCI ROJ COLO3 | C3 HAC/Racking | Procure | 30 | HAC/Racking (Tate Access) Shipping/ ROJ | 19-Feb-2025 | 21-Feb-2025 |
| 1003 | Procurement MSFT OFCI ROJ COLO3 | C3 LV Switchgear | Procure | 34 | LV Switchgear (LVS) (Eaton) Delivered | 04-Mar-2025 | 04-Mar-2025 |
| 1004 | Procurement MSFT OFCI ROJ COLO3 | C3 LV Switchgear | Procure | 35 | LV Switchgear (LVS) (Eaton) Shipping/ ROJ | 28-Feb-2025 | 04-Mar-2025 |
| 1005 | Procurement MSFT OFCI ROJ COLO3 | C3 Main LV Switch Board | Procure | 36 | Main LV Switch Board (MSB) Delivered | 08-Mar-2025 | 08-Mar-2025 |
| 1006 | Procurement MSFT OFCI ROJ COLO3 | C3 Main LV Switch Board | Procure | 37 | Main LV Switch Board (MSB) Shipping/ ROJ | 08-Mar-2025 | 08-Mar-2025 |
| 1007 | Procurement MSFT OFCI ROJ COLO3 | C3 Medium Voltage Switchgear | Procure | 42 | Medium Voltage Switchgear (MVS) (JD Power Sys) Delivered | 23-Feb-2025 | 23-Feb-2025 |
| 1008 | Procurement MSFT OFCI ROJ COLO3 | C3 Medium Voltage Switchgear | Procure | 43 | Medium Voltage Switchgear (MVS) (JD Power Sys) Shipping/ ROJ | 19-Feb-2025 | 23-Feb-2025 |
| 1009 | Procurement MSFT OFCI ROJ COLO3 | C3 Packaged Diesel Generator Set | Procure | 46 | Packaged Diesel Generator Set (CAT Holt) Delivered | 24-Feb-2025 | 24-Feb-2025 |
| 1010 | Procurement MSFT OFCI ROJ COLO3 | C3 Packaged Diesel Generator Set | Procure | 47 | Packaged Diesel Generator Set (CAT Holt) Shipping/ ROJ | 20-Feb-2025 | 24-Feb-2025 |
| 1011 | Procurement MSFT OFCI ROJ COLO3 | C3 Pad Mounted Transformers | Procure | 52 | Pad Mounted Transformers (XFM-TX) Delivered | 23-Feb-2025 | 23-Feb-2025 |
| 1012 | Procurement MSFT OFCI ROJ COLO3 | C3 Pad Mounted Transformers | Procure | 53 | Pad Mounted Transformers (XFM-TX) Shipping/ ROJ | 19-Feb-2025 | 23-Feb-2025 |
| 1013 | Procurement MSFT OFCI ROJ COLO3 | C3 PEMB Procurement (1st Del) | Procure | 56 | PEMB Procurement (1st Del) (Nucor) Delivered | 14-Oct-2024 | 14-Oct-2024 |
| 1014 | Procurement MSFT OFCI ROJ COLO3 | C3 PEMB Procurement (1st Del) | Procure | 57 | PEMB Procurement (1st Del) (Nucor) Shipping/ ROJ | 14-Oct-2024 | 14-Oct-2024 |
| 1015 | Procurement MSFT OFCI ROJ COLO3 | C3 Power Distribution Units | Procure | 60 | Power Distribution Units (PDU) Delivered | 23-Feb-2025 | 23-Feb-2025 |
| 1016 | Procurement MSFT OFCI ROJ COLO3 | C3 Power Distribution Units | Procure | 61 | Power Distribution Units (PDU) Shipping/ ROJ | 19-Feb-2025 | 23-Feb-2025 |
| 1017 | Procurement MSFT OFCI ROJ COLO3 | C3 Elec Performance Monitoring System | Procure | 62 | Receive Elec. Performance Monitoring System (EPMS) (Schneider) (SOW Del Date- 4/30/24) | 15-Nov-2024 | 15-Nov-2024 |
| 1018 | Procurement MSFT OFCI ROJ COLO3 | C3 Air Handling Units | Procure | 63 | Receive Air Handling Units (AHU) (Stulz) (SOW Del Date- 9/04/24) | 09-Oct-2024 | 09-Oct-2024 |
| 1019 | Procurement MSFT OFCI ROJ COLO3 | C3 Auto Transfer Control Panel | Procure | 67 | Receive Auto Transfer Control Panel (TCP) (Del Date- 3/8/2025) | 08-Mar-2025 | 08-Mar-2025 |
| 1020 | Procurement MSFT OFCI ROJ COLO3 | C3 Automatic Transfer Switches | Procure | 69 | Receive Automatic Transfer Switches (ATS) (Schneider) (SOW Del Date- 4/30/24) | 15-Nov-2024 | 15-Nov-2024 |
| 1021 | Procurement MSFT OFCI ROJ COLO3 | C3 Auxillary Power Distribution | Procure | 72 | Receive Auxillary (Mech) Power Distribution Panels (ADP) (Del Date- 3/8/2025) | 08-Mar-2025 | 08-Mar-2025 |
| 1022 | Procurement MSFT OFCI ROJ COLO3 | C3 Building Automation System | Procure | 75 | Receive Building Automation System (BAS) (Automated Logic Corp) (SOW Del Date- 11/28/24) | 30-Nov-2024 | 30-Nov-2024 |
| 1023 | Procurement MSFT OFCI ROJ COLO3 | C3 Busway / Busplugs | Procure | 78 | Receive Busway / Busplugs (Starline Holding) (Del Date- 1/25/24) | 09-Apr-2024 | 09-Apr-2024 |
| 1024 | Procurement MSFT OFCI ROJ COLO3 | C3 HAC/Racking | Procure | 81 | Receive HAC/Racking (Tate Access) (SOW Del Date- 5/17/24) | 15-Nov-2024 | 15-Nov-2024 |
| 1025 | Procurement MSFT OFCI ROJ COLO3 | C3 LV Switchgear | Procure | 86 | Receive LV Switchgear (LVS) (Eaton) (SOW Del Date- 2/28/25) | 28-Feb-2025 | 28-Feb-2025 |
| 1026 | Procurement MSFT OFCI ROJ COLO3 | C3 Main LV Switch Board | Procure | 89 | Receive Main LV Switch Board (MSB) (SOW Del Date- 3/8/2025) | 08-Mar-2025 | 08-Mar-2025 |
| 1027 | Procurement MSFT OFCI ROJ COLO3 | C3 Medium Voltage Switchgear | Procure | 92 | Receive Medium Voltage Switchgear (JDC Power Sys) (SOW Del Date- 7/30/24) | 15-Oct-2024 | 15-Oct-2024 |
| 1028 | Procurement MSFT OFCI ROJ COLO3 | C3 Packaged Diesel Generator Set | Procure | 95 | Receive Packaged Diesel Generator Set (CAT Holt) (SOW Del Date- 5/14/24) | 15-Nov-2024 | 15-Nov-2024 |
| 1029 | Procurement MSFT OFCI ROJ COLO3 | C3 Pad Mounted Transformers | Procure | 98 | Receive Pad Mounted Transformers (XFM-TX) (Del Date- 7/30/2024) | 15-Nov-2024 | 15-Nov-2024 |
| 1030 | Procurement MSFT OFCI ROJ COLO3 | C3 PEMB Procurement (1st Del) | Procure | 100 | Receive PEMB Procurement (1st Del) (Nucor) (SOW Del Date-10/3/24) | 14-Oct-2024 | 14-Oct-2024 |
| 1031 | Procurement MSFT OFCI ROJ COLO3 | C3 Power Distribution Units | Procure | 101 | Receive Power Distribution Units (PDU) (ABB) (SOW Del Date- 4/30/24) | 15-Nov-2024 | 15-Nov-2024 |
| 1032 | Procurement MSFT OFCI ROJ COLO3 | C3 Utility Pad Mount Switchgear | Procure | 103 | Receive Utility Pad Mount Switchgear (Del Date- 7/30/2024) | 23-Oct-2024 | 23-Oct-2024 |
| 1033 | Procurement MSFT OFCI ROJ COLO3 | C3 UPS System W / Battery | Procure | 112 | UPS System w/ Battery (UPS) (Eaton) Delivered | 23-Feb-2025 | 23-Feb-2025 |
| 1034 | Procurement MSFT OFCI ROJ COLO3 | C3 UPS System W / Battery | Procure | 113 | UPS System w/ Battery (UPS) (Eaton) Shipping/ ROJ | 19-Feb-2025 | 23-Feb-2025 |
| 1035 | Procurement MSFT OFCI ROJ COLO3 | C3 Utility Pad Mount Switchgear | Procure | 114 | Utility Pad Mount Switchgear (UPM) Delivered | 24-Feb-2025 | 28-Feb-2025 |
| 1036 | Procurement MSFT OFCI ROJ COLO3 | C3 Utility Pad Mount Switchgear | Procure | 115 | Utility Pad Mount Switchgear (UPM) Shipping/ ROJ | 19-Feb-2025 | 23-Feb-2025 |
| 1037 | Procurement MSFT OFCI ROJ COLO4 | C4 Air Handling Units | Procure | 17 | Air Handling Units (AHU) (Stulz) Delivered | 05-Apr-2025 | 05-Apr-2025 |
| 1038 | Procurement MSFT OFCI ROJ COLO4 | C4 Air Handling Units | Procure | 18 | Air Handling Units (AHU) (Stulz) Shipping/ ROJ | 01-Apr-2025 | 05-Apr-2025 |
| 1039 | Procurement MSFT OFCI ROJ COLO4 | C4 Auto Transfer Control Panel | Procure | 1 | Auto Transfer Control Panel (TCP) Delivered | 30-Mar-2025 | 30-Mar-2025 |
| 1040 | Procurement MSFT OFCI ROJ COLO4 | C4 Auto Transfer Control Panel | Procure | 2 | Auto Transfer Control Panel (TCP) Shipping/ROJ | 30-Mar-2025 | 30-Mar-2025 |
| 1041 | Procurement MSFT OFCI ROJ COLO4 | C4 Automatic Transfer Switches | Procure | 3 | Automatic Transfer Switches (ATS) (Schneider) Delivered | 30-Mar-2025 | 30-Mar-2025 |
| 1042 | Procurement MSFT OFCI ROJ COLO4 | C4 Automatic Transfer Switches | Procure | 4 | Automatic Transfer Switches (ATS) (Schneider) Shipping/ROJ | 26-Mar-2025 | 30-Mar-2025 |
| 1043 | Procurement MSFT OFCI ROJ COLO4 | C4 Building Automation System | Procure | 7 | Building Automation System (BAS) (Automated Logic Corp) Delivered | 04-Jan-2025 | 04-Jan-2025 |
| 1044 | Procurement MSFT OFCI ROJ COLO4 | C4 Building Automation System | Procure | 8 | Building Automation System (BAS) (Automated Logic Corp) Shipping/ROJ | 29-Dec-2024 | 04-Jan-2025 |
| 1045 | Procurement MSFT OFCI ROJ COLO4 | C4 Busway / Busplugs | Procure | 10 | Busway / Busplugs (BSW) (Starline Holding) Delivered | 30-Mar-2025 | 30-Mar-2025 |
| 1046 | Procurement MSFT OFCI ROJ COLO4 | C4 Busway / Busplugs | Procure | 11 | Busway / Busplugs (BSW) (Starline Holding) Shipping/ROJ | 26-Mar-2025 | 30-Mar-2025 |
| 1047 | Procurement MSFT OFCI ROJ COLO4 | C4 Elec Performance Monitoring System | Procure | 23 | Elec. Performance Monitoring Syst. (EPMS) (EPMS) (Schneider) Delivered | 30-Mar-2025 | 30-Mar-2025 |
| 1048 | Procurement MSFT OFCI ROJ COLO4 | C4 Elec Performance Monitoring System | Procure | 24 | Elec. Performance Monitoring Syst. (EPMS) (EPMS) (Schneider) Shipping/ROJ | 26-Mar-2025 | 30-Mar-2025 |
| 1049 | Procurement MSFT OFCI ROJ COLO4 | C4 HAC/Racking | Procure | 29 | HAC/Racking (Tate Access) Delivered | 28-Mar-2025 | 28-Mar-2025 |
| 1050 | Procurement MSFT OFCI ROJ COLO4 | C4 HAC/Racking | Procure | 30 | HAC/Racking (Tate Access) Shipping/ROJ | 26-Mar-2025 | 28-Mar-2025 |

| entry | phase | location | trade | activity_code | activity_name | start | finish |
| --- | --- | --- | --- | --- | --- | --- | --- |
| 1051 | Procurement MSFT OFCI ROJ COLO4 | C4 LV Switchgear | Procure | 32 | LV Switchgear (Eaton) Delivered | 02-Mar-2025 | 02-Mar-2025 |
| 1052 | Procurement MSFT OFCI ROJ COLO4 | C4 LV Switchgear | Procure | 33 | LV Switchgear (Eaton) Shipping/ROJ | 28-Feb-2025 | 02-Mar-2025 |
| 1053 | Procurement MSFT OFCI ROJ COLO4 | C4 Main LV Switch Board | Procure | 36 | Main LV Switch Board (MSB) Delivered | 30-Mar-2025 | 30-Mar-2025 |
| 1054 | Procurement MSFT OFCI ROJ COLO4 | C4 Main LV Switch Board | Procure | 37 | Main LV Switch Board (MSB) Shipping/ROJ | 30-Mar-2025 | 30-Mar-2025 |
| 1055 | Procurement MSFT OFCI ROJ COLO4 | C4 Auxillary Power Distribution | Procure | 38 | Mech Power Distribution Panels (ADP) Delivered | 30-Mar-2025 | 30-Mar-2025 |
| 1056 | Procurement MSFT OFCI ROJ COLO4 | C4 Auxillary Power Distribution | Procure | 39 | Mech Power Distribution Panels (ADP) Shipping/ROJ | 30-Mar-2025 | 30-Mar-2025 |
| 1057 | Procurement MSFT OFCI ROJ COLO4 | C4 Medium Voltage Switchgear | Procure | 40 | Medium Voltage Switchgear (JDC Power Sys) Delivered | 30-Mar-2025 | 30-Mar-2025 |
| 1058 | Procurement MSFT OFCI ROJ COLO4 | C4 Medium Voltage Switchgear | Procure | 41 | Medium Voltage Switchgear (JDC Power Sys) Shipping/ROJ | 26-Mar-2025 | 30-Mar-2025 |
| 1059 | Procurement MSFT OFCI ROJ COLO4 | C4 Packaged Diesel Generator Set | Procure | 48 | Packaged Diesel Generator Set (GEN) (CAT Holt) Delivered | 10-Apr-2025 | 10-Apr-2025 |
| 1060 | Procurement MSFT OFCI ROJ COLO4 | C4 Packaged Diesel Generator Set | Procure | 49 | Packaged Diesel Generator Set (GEN) (CAT Holt) Shipping/ROJ | 06-Apr-2025 | 10-Apr-2025 |
| 1061 | Procurement MSFT OFCI ROJ COLO4 | C4 Pad Mounted Transformers | Procure | 54 | Pad Mounted Transformers (XMF) Delivered | 30-Mar-2025 | 30-Mar-2025 |
| 1062 | Procurement MSFT OFCI ROJ COLO4 | C4 Pad Mounted Transformers | Procure | 55 | Pad Mounted Transformers (XMF) Shipping/ROJ | 26-Mar-2025 | 30-Mar-2025 |
| 1063 | Procurement MSFT OFCI ROJ COLO4 | C4 Power Distribution Units | Procure | 58 | Power Distribution Units (PDU) (ABB) Delivered | 30-Mar-2025 | 30-Mar-2025 |
| 1064 | Procurement MSFT OFCI ROJ COLO4 | C4 Power Distribution Units | Procure | 59 | Power Distribution Units (PDU) (ABB) Shipping/ROJ | 26-Mar-2025 | 30-Mar-2025 |
| 1065 | Procurement MSFT OFCI ROJ COLO4 | C4 Air Handling Units | Procure | 65 | Receive Air Handling Units (AHU) (Stulz) (SOW Del Date- 9/9/24) | 30-Sep-2024 | 30-Sep-2024 |
| 1066 | Procurement MSFT OFCI ROJ COLO4 | C4 Auto Transfer Control Panel | Procure | 68 | Receive Auto Transfer Control Panel (TCP) (Del Date-3/30/2025) | 30-Mar-2025 | 30-Mar-2025 |
| 1067 | Procurement MSFT OFCI ROJ COLO4 | C4 Automatic Transfer Switches | Procure | 70 | Receive Automatic Transfer Switches (ATS) (Schneider) (SOW Del Date- 6/30/24) | 15-Nov-2024 | 15-Nov-2024 |
| 1068 | Procurement MSFT OFCI ROJ COLO4 | C4 Building Automation System | Procure | 74 | Receive Building Automation System (BAS) (Automated Logic Corp) (SOW Del Date- 12/29/24) | 29-Dec-2024 | 29-Dec-2024 |
| 1069 | Procurement MSFT OFCI ROJ COLO4 | C4 Busway / Busplugs | Procure | 76 | Receive Busway / Busplugs (BSW) (Starline Holding) (SOW Del Date- 2/23/24) | 15-Nov-2024 | 15-Nov-2024 |
| 1070 | Procurement MSFT OFCI ROJ COLO4 | C4 Elec Performance Monitoring System | Procure | 79 | Receive Elec. Performance Monitoring Syst. (EPMS) (EPMS) (Schneider) (SOW Del Date- 6/30/24) | 15-Nov-2024 | 15-Nov-2024 |
| 1071 | Procurement MSFT OFCI ROJ COLO4 | C4 HAC/Racking | Procure | 82 | Receive HAC/Racking (Tate Access) (SOW Del Date- 6/18/24) | 15-Nov-2024 | 15-Nov-2024 |
| 1072 | Procurement MSFT OFCI ROJ COLO4 | C4 LV Switchgear | Procure | 84 | Receive LV Switchgear (Eaton) (SOW Del Date- 2/28/25) | 28-Feb-2025 | 28-Feb-2025 |
| 1073 | Procurement MSFT OFCI ROJ COLO4 | C4 Main LV Switch Board | Procure | 87 | Receive Main LV Switch Board (MSB) (Del Date 3/30/2025) | 30-Mar-2025 | 30-Mar-2025 |
| 1074 | Procurement MSFT OFCI ROJ COLO4 | C4 Auxillary Power Distribution | Procure | 90 | Receive Mech Power Distribution Panels (ADP) (Del Date 3/30/2025) | 30-Mar-2025 | 30-Mar-2025 |
| 1075 | Procurement MSFT OFCI ROJ COLO4 | C4 Medium Voltage Switchgear | Procure | 93 | Receive Medium Voltage Switchgear (JDC Power Sys) (SOW Del Date- 8/30/24) | 23-Oct-2024 | 23-Oct-2024 |
| 1076 | Procurement MSFT OFCI ROJ COLO4 | C4 Packaged Diesel Generator Set | Procure | 96 | Receive Packaged Diesel Generator Set (GEN) (CAT Holt) (SOW Del Date- 6/4/24) | 15-Nov-2024 | 15-Nov-2024 |
| 1077 | Procurement MSFT OFCI ROJ COLO4 | C4 Utility Pad Mount Switchgear | Procure | 105 | Receive Utility Pad Mount Switchgear (UPM) (Del Date 8/30/2024) | 23-Oct-2024 | 23-Oct-2024 |
| 1078 | Procurement MSFT OFCI ROJ COLO4 | C4 UPS System W / Battery | Procure | 106 | Received SUB Warehouse 11/23/2023 Static UPS System W/Batt (UPS) (Eaton) (SOW Del Date- 11/11/23) | 02-Sep-2024 | 02-Sep-2024 |
| 1079 | Procurement MSFT OFCI ROJ COLO4 | C4 Pad Mounted Transformers | Procure | 108 | Reveive Pad Mounted Transformers (XMF) (Del Date 8/30/2024) | 15-Nov-2024 | 15-Nov-2024 |
| 1080 | Procurement MSFT OFCI ROJ COLO4 | C4 Power Distribution Units | Procure | 109 | Reveive Power Distribution Units (PDU) (ABB) (SOW Del Date- 7/12/24) | 15-Nov-2024 | 15-Nov-2024 |
| 1081 | Procurement MSFT OFCI ROJ COLO4 | C4 UPS System W / Battery | Procure | 110 | Static UPS System W/Batt (UPS) (Eaton) Delivered | 30-Mar-2025 | 30-Mar-2025 |
| 1082 | Procurement MSFT OFCI ROJ COLO4 | C4 UPS System W / Battery | Procure | 111 | Static UPS System W/Batt (UPS) (Eaton) Shipping/ROJ | 26-Mar-2025 | 30-Mar-2025 |
| 1083 | Procurement MSFT OFCI ROJ COLO4 | C4 Utility Pad Mount Switchgear | Procure | 114 | Utility Pad Mount Switchgear (UPM) Delivered | 30-Mar-2025 | 30-Mar-2025 |
| 1084 | Procurement MSFT OFCI ROJ COLO4 | C4 Utility Pad Mount Switchgear | Procure | 115 | Utility Pad Mount Switchgear (UPM) Shipping/ROJ | 26-Mar-2025 | 30-Mar-2025 |
| 1085 | Procurement MSFT OFCI ROJ COLO5 | C5 Air Handling Units | Procure | 17 | Air Handling Units (AHU) (Stulz) Delivered | 11-May-2025 | 11-May-2025 |
| 1086 | Procurement MSFT OFCI ROJ COLO5 | C5 Air Handling Units | Procure | 18 | Air Handling Units (AHU) (Stulz) Shipping/ROJ | 11-May-2025 | 11-May-2025 |
| 1087 | Procurement MSFT OFCI ROJ COLO5 | C5 Auto Transfer Control Panel | Procure | 1 | Auto Transfer Control Panel (TCP) Delivered | 04-Apr-2025 | 04-Apr-2025 |
| 1088 | Procurement MSFT OFCI ROJ COLO5 | C5 Auto Transfer Control Panel | Procure | 2 | Auto Transfer Control Panel (TCP) Shipping/ROJ | 30-Mar-2025 | 04-Apr-2025 |
| 1089 | Procurement MSFT OFCI ROJ COLO5 | C5 Automatic Transfer Switches | Procure | 3 | Automatic Transfer Switches (ATS) (Schneider) Delivered | 20-Apr-2025 | 20-Apr-2025 |
| 1090 | Procurement MSFT OFCI ROJ COLO5 | C5 Automatic Transfer Switches | Procure | 4 | Automatic Transfer Switches (ATS) (Schneider) Shipping/ROJ | 20-Apr-2025 | 20-Apr-2025 |
| 1091 | Procurement MSFT OFCI ROJ COLO5 | C5 Building Automation System | Procure | 7 | Building Automation System (BAS) (Automated Logic Corp) Delivered | 02-Feb-2025 | 02-Feb-2025 |
| 1092 | Procurement MSFT OFCI ROJ COLO5 | C5 Building Automation System | Procure | 8 | Building Automation System (BAS) (Automated Logic Corp) Shipping/ROJ | 28-Jan-2025 | 02-Feb-2025 |
| 1093 | Procurement MSFT OFCI ROJ COLO5 | C5 Busway / Busplugs | Procure | 10 | Busway / Busplugs (BSW) (Starline Holding) Delivered | 03-May-2025 | 03-May-2025 |
| 1094 | Procurement MSFT OFCI ROJ COLO5 | C5 Busway / Busplugs | Procure | 11 | Busway / Busplugs (BSW) (Starline Holding) Shipping/ROJ | 29-Apr-2025 | 03-May-2025 |
| 1095 | Procurement MSFT OFCI ROJ COLO5 | C5 Elec Performance Monitoring System | Procure | 25 | Elec. Performance Monitoring Syst. (EPMS) (Schneider) Delivered | 20-Apr-2025 | 20-Apr-2025 |
| 1096 | Procurement MSFT OFCI ROJ COLO5 | C5 Elec Performance Monitoring System | Procure | 26 | Elec. Performance Monitoring Syst. (EPMS) (Schneider) Shipping/ROJ | 20-Apr-2025 | 20-Apr-2025 |
| 1097 | Procurement MSFT OFCI ROJ COLO5 | C5 HAC/Racking | Procure | 29 | HAC/Racking (Tate Access) Delivered | 28-Apr-2025 | 28-Apr-2025 |
| 1098 | Procurement MSFT OFCI ROJ COLO5 | C5 HAC/Racking | Procure | 30 | HAC/Racking (Tate Access) Shipping/ROJ | 25-Apr-2025 | 28-Apr-2025 |
| 1099 | Procurement MSFT OFCI ROJ COLO5 | C5 LV Switchgear | Procure | 32 | LV Switchgear (Eaton) Delivered | 03-Apr-2025 | 03-Apr-2025 |
| 1100 | Procurement MSFT OFCI ROJ COLO5 | C5 LV Switchgear | Procure | 33 | LV Switchgear (Eaton) Shipping/ROJ | 30-Mar-2025 | 03-Apr-2025 |
| 1101 | Procurement MSFT OFCI ROJ COLO5 | C5 Main LV Switch Board | Procure | 36 | Main LV Switch Board (MSB) Delivered | 04-Apr-2025 | 04-Apr-2025 |
| 1102 | Procurement MSFT OFCI ROJ COLO5 | C5 Main LV Switch Board | Procure | 37 | Main LV Switch Board (MSB) Shipping/ROJ | 30-Mar-2025 | 04-Apr-2025 |
| 1103 | Procurement MSFT OFCI ROJ COLO5 | C5 Auxillary Power Distribution | Procure | 38 | Mech Power Distribution Panels (ADP) Delivered | 04-Apr-2025 | 04-Apr-2025 |
| 1104 | Procurement MSFT OFCI ROJ COLO5 | C5 Auxillary Power Distribution | Procure | 39 | Mech Power Distribution Panels (ADP) Shipping/ROJ | 30-Mar-2025 | 04-Apr-2025 |
| 1105 | Procurement MSFT OFCI ROJ COLO5 | C5 Medium Voltage Switchgear | Procure | 44 | Medium Voltage Switchgear (MVS) (JDC Power Sys) Delivered | 03-May-2025 | 03-May-2025 |
| 1106 | Procurement MSFT OFCI ROJ COLO5 | C5 Medium Voltage Switchgear | Procure | 45 | Medium Voltage Switchgear (MVS) (JDC Power Sys) Shipping/ROJ | 29-Apr-2025 | 03-May-2025 |
| 1107 | Procurement MSFT OFCI ROJ COLO5 | C5 Packaged Diesel Generator Set | Procure | 50 | Packaged Diesel Generator Set (GPC) (CAT Holt) Delivered | 15-May-2025 | 15-May-2025 |
| 1108 | Procurement MSFT OFCI ROJ COLO5 | C5 Packaged Diesel Generator Set | Procure | 51 | Packaged Diesel Generator Set (GPC) (CAT Holt) Shipping/ROJ | 11-May-2025 | 15-May-2025 |
| 1109 | Procurement MSFT OFCI ROJ COLO5 | C5 Pad Mounted Transformers | Procure | 54 | Pad Mounted Transformers (XMF) Delivered | 03-May-2025 | 03-May-2025 |
| 1110 | Procurement MSFT OFCI ROJ COLO5 | C5 Pad Mounted Transformers | Procure | 55 | Pad Mounted Transformers (XMF) Shipping/ROJ | 29-Apr-2025 | 03-May-2025 |
| 1111 | Procurement MSFT OFCI ROJ COLO5 | C5Power Distribution Units | Procure | 58 | Power Distribution Units (PDU) (ABB) Delivered | 07-May-2025 | 07-May-2025 |
| 1112 | Procurement MSFT OFCI ROJ COLO5 | C5Power Distribution Units | Procure | 59 | Power Distribution Units (PDU) (ABB) Shipping/ROJ | 03-May-2025 | 07-May-2025 |
| 1113 | Procurement MSFT OFCI ROJ COLO5 | C5 Air Handling Units | Procure | 64 | Receive Air Handling Units (AHU) (Stulz) (SOW Del Date- 9/16/24) | 12-Sep-2024 | 12-Sep-2024 |
| 1114 | Procurement MSFT OFCI ROJ COLO5 | C5 Auto Transfer Control Panel | Procure | 66 | Receive Auto Transfer Control Panel (TCP) (Del Date 3/30/2025) | 30-Mar-2025 | 30-Mar-2025 |
| 1115 | Procurement MSFT OFCI ROJ COLO5 | C5 Automatic Transfer Switches | Procure | 71 | Receive Automatic Transfer Switches (ATS) (Schneider) (SOW Del Date- 8/31/24) | 15-Nov-2024 | 15-Nov-2024 |
| 1116 | Procurement MSFT OFCI ROJ COLO5 | C5 Building Automation System | Procure | 73 | Receive Building Automation System (BAS) (Automated Logic Corp) (SOW Del Date- 1/28/25) | 28-Jan-2025 | 28-Jan-2025 |
| 1117 | Procurement MSFT OFCI ROJ COLO5 | C5 Busway / Busplugs | Procure | 77 | Receive Busway / Busplugs (BSW) (Starline Holding) (SOW Del Date- 4/23/24) | 15-Nov-2024 | 15-Nov-2024 |
| 1118 | Procurement MSFT OFCI ROJ COLO5 | C5 Elec Performance Monitoring System | Procure | 80 | Receive Elec. Performance Monitoring Syst. (EPMS) (Schneider) (SOW Del Date- 8/31/24) | 15-Nov-2024 | 15-Nov-2024 |
| 1119 | Procurement MSFT OFCI ROJ COLO5 | C5 HAC/Racking | Procure | 83 | Receive HAC/Racking (Tate Access) (SOW Del Date- 7/3/24) | 15-Nov-2024 | 15-Nov-2024 |
| 1120 | Procurement MSFT OFCI ROJ COLO5 | C5 LV Switchgear | Procure | 85 | Receive LV Switchgear (Eaton) (SOW Del Date- 3/30/25) | 30-Mar-2025 | 30-Mar-2025 |

| entry | phase | location | trade | activity_code | activity_name | start | finish |
| --- | --- | --- | --- | --- | --- | --- | --- |
| 1121 | Procurement MSFT OFCI ROJ COLO5 | C5 Main LV Switch Board | Procure | 88 | Receive Main LV Switch Board (MSB) (Del Date 3/30/2025) | 30-Mar-2025 | 30-Mar-2025 |
| 1122 | Procurement MSFT OFCI ROJ COLO5 | C5 Auxillary Power Distribution | Procure | 91 | Receive Mech Power Distribution Panels (ADP) (Del Date 3/30/2025) | 30-Mar-2025 | 30-Mar-2025 |
| 1123 | Procurement MSFT OFCI ROJ COLO5 | C5 Medium Voltage Switchgear | Procure | 94 | Receive Medium Voltage Switchgear (MVS) (JDC Power Sys) (SOW Del Date- 10/30/24) | 30-Oct-2024 | 30-Oct-2024 |
| 1124 | Procurement MSFT OFCI ROJ COLO5 | C5 Packaged Diesel Generator Set | Procure | 97 | Receive Packaged Diesel Generator Set (GPC) (CAT Holt) (SOW Del Date- 6/26/24) | 15-Nov-2024 | 15-Nov-2024 |
| 1125 | Procurement MSFT OFCI ROJ COLO5 | C5 Pad Mounted Transformers | Procure | 99 | Receive Pad Mounted Transformers (XMF) (Del Date 10/30/2024) | 15-Nov-2024 | 15-Nov-2024 |
| 1126 | Procurement MSFT OFCI ROJ COLO5 | C5Power Distribution Units | Procure | 102 | Receive Power Distribution Units (PDU) (ABB) (SOW Del Date- 9/30/24) | 15-Nov-2024 | 15-Nov-2024 |
| 1127 | Procurement MSFT OFCI ROJ COLO5 | C5 Utility Pad Mount Switchgear | Procure | 104 | Receive Utility Pad Mount Switchgear (UPM) (Del Date 10/30/2024) | 23-Oct-2024 | 23-Oct-2024 |
| 1128 | Procurement MSFT OFCI ROJ COLO5 | C5 UPS System W / Battery | Procure | 107 | Received SUB Warehouse 12/28/2023 Static UPS System W/Batt (UPS) (Eaton) (SOW Del Date- 12/11/23) | 02-Sep-2024 | 02-Sep-2024 |
| 1129 | Procurement MSFT OFCI ROJ COLO5 | C5 UPS System W / Battery | Procure | 110 | Static UPS System W/Batt (UPS) (Eaton) Delivered | 30-Mar-2025 | 30-Mar-2025 |
| 1130 | Procurement MSFT OFCI ROJ COLO5 | C5 UPS System W / Battery | Procure | 111 | Static UPS System W/Batt (UPS) (Eaton) Shipping/ROJ | 26-Mar-2025 | 30-Mar-2025 |
| 1131 | Procurement MSFT OFCI ROJ COLO5 | C5 Utility Pad Mount Switchgear | Procure | 114 | Utility Pad Mount Switchgear (UPM) Delivered | 03-May-2025 | 03-May-2025 |
| 1132 | Procurement MSFT OFCI ROJ COLO5 | C5 Utility Pad Mount Switchgear | Procure | 115 | Utility Pad Mount Switchgear (UPM) Shipping/ROJ | 29-Apr-2025 | 03-May-2025 |
| 1133 | Site Prep/ Mobilization | Site Prep/ Mobilization | Earthwork | U2 | Fine Grading Building Pad | 19-Aug-2024 | 04-Sep-2024 |
| 1134 | Site Prep/ Mobilization | Site Prep/ Mobilization | CLAYCO | CT | Set-Up Trailers & Install Temp Utilities | 25-Jul-2024 | 16-Sep-2024 |
| 1135 | Site Prep/ Mobilization | Site Prep/ Mobilization | CLAYCO | CM | Site Mobilization | 24-Jul-2024 | 24-Jul-2024 |
| 1136 | Site Utilities | Under Building Pad | Earthwork | U1 | Backfill after UG work (MV / Telecom) | 05-Nov-2024 | 15-Nov-2024 |
| 1137 | Site Utilities | Overall | Telecom | T1 | Install Deep Telecom | 08-Oct-2024 | 14-Nov-2024 |
| 1138 | Site Utilities | Overall | Electrical | E18 | Install MV Ductbanks | 25-Oct-2024 | 22-Nov-2024 |
| 1139 | Site Utilities | Overall | Plumbing | P1 | Install Sanitary Lines | 04-Nov-2024 | 09-Dec-2024 |
| 1140 | Site Utilities | Overall | Plumbing | P2 | Install Storm Lines | 09-Oct-2024 | 06-Dec-2024 |
| 1141 | Site Utilities | Under Building Pad | Electrical | E17 | Install UG Electrical / UPM Crossing (under Building Pad) | 25-Oct-2024 | 13-Nov-2024 |
| 1142 | Site Utilities | Under Building Pad | Telecom | T1 | Install UG Telecom (under Building Pad) | 08-Oct-2024 | 10-Oct-2024 |
| 1143 | Site Utilities | Overall | Plumbing | P3 | Install Water Line | 04-Nov-2024 | 26-Dec-2024 |
| 1144 | Site Utilities | Overall | Electrical | E16 | Permanent Power | 05-May-2025 | 05-May-2025 |
