| entry | phase | location | area | trade | activity_code | activity_name | start | finish |
| --- | --- | --- | --- | --- | --- | --- | --- | --- |
| 1 | Pre-Construction | Precon | N/A | Precon Team | PREC-1 | 28. Assign Pre excavation checklist | 08-Jan-2024 | 08-Jan-2024 |
| 2 | Pre-Construction | Precon | N/A | Precon Team | PREC-2 | 3.0 Pre construction and mobilization | 28-Sep-2023 | 20-Dec-2023 |
| 3 | Pre-Construction | Precon | N/A | Precon Team | PREC-3 | 3.0, 4.0. 5.0 pre, during and post construction total job | 28-Sep-2023 | 05-May-2025 |
| 4 | Pre-Construction | Precon | N/A | Precon Team | PREC-4 | Assign conrete pour checklist | 09-Sep-2024 | 09-Sep-2024 |
| 5 | Mobilization | Mobilization | N/A | Mobilization Team | MOB-1 | Assign Mobilization check list | 28-Sep-2023 | 20-Dec-2023 |
| 6 | Pre-Construction | Precon | N/A | Precon Team | PREC-5 | Assign Equipment & Tools check list | 28-Sep-2023 | 20-Dec-2023 |
| 7 | Pre-Construction | Precon | N/A | Precon Team | PREC-6 | Assign exterior wall pre board inspection check list | 08-Nov-2024 | 08-Nov-2024 |
| 8 | Pre-Construction | Precon | N/A | Precon Team | PREC-7 | Assign Final Building Checklist | 03-Mar-2025 | 03-Mar-2025 |
| 9 | Mobilization | Mobilization | N/A | Mobilization Team | MOB-2 | Assign Site Services Planning check list | 28-Sep-2023 | 20-Dec-2023 |
| 10 | Mobilization | Mobilization | N/A | Mobilization Team | MOB-3 | Assign Sub Contractor planning checklist | 28-Sep-2023 | 20-Dec-2023 |
| 11 | Pre-Construction | Precon | N/A | Precon Team | PREC-8 | Assign framing check list | 14-May-2024 | 14-May-2024 |
| 12 | Pre-Construction | Precon | N/A | Precon Team | PREC-8 | Assign framing checklist | 16-Apr-2024 | 16-Apr-2024 |
| 13 | Pre-Construction | Precon | N/A | Precon Team | PREC-8 | Assign framing checklist | 10-Jun-2024 | 10-Jun-2024 |
| 14 | Pre-Construction | Precon | N/A | Precon Team | PREC-8 | Assign framing checklist | 08-Jul-2024 | 08-Jul-2024 |
| 15 | Pre-Construction | Precon | N/A | Precon Team | PREC-8 | Assign gypcrete pour checklist | 25-Nov-2024 | 25-Nov-2024 |
| 16 | Sitework | Site | N/A | Site Sub | SIT- | 4.1 Site Services & Foundation Work | 21-Dec-2023 | 25-Mar-2024 |
| 17 | Sitework | Site | N/A | Site Sub | SIT- | Site Preparation | 21-Dec-2023 | 05-Jan-2024 |
| 18 | Sitework | Site | N/A | Site Sub | SIT- | 18. Assign site prep check list (First) | 28-Dec-2023 | 28-Dec-2023 |
| 19 | Foundation | Interior Bldg | N/A | Concrete | CON-1 | Assign hollow core erection checklist | 27-May-2024 | 27-May-2024 |
| 20 | Foundation | Interior Bldg | N/A | Concrete | CON-1 | Assign pre back fill check list | 01-Mar-2024 | 01-Mar-2024 |
| 21 | Pre-Construction | Precon | N/A | Precon Team | PREC-8 | Assign Health and Safety checklist | 28-Sep-2023 | 20-Dec-2023 |
| 22 | Foundation | Interior Bldg | N/A | Concrete | CON-1 | Assign pre concrete pour checklist | 27-Feb-2024 | 27-Feb-2024 |
| 23 | Pre-Construction | Precon | N/A | Precon Team | PREC-8 | Assign hollow core checklist | 13-Jun-2024 | 13-Jun-2024 |
| 24 | Foundation | Interior Bldg | N/A | Concrete | CON-1 | Assign pre concrete pour checklist | 08-Jul-2024 | 08-Jul-2024 |
| 25 | Sitework | Site | N/A | Site Sub | SIT- | Strip site | 29-Dec-2023 | 04-Jan-2024 |
| 26 | Foundation | Interior Bldg | N/A | Concrete | CON-1 | Assign pre concrete pour checklist | 12-Dec-2024 | 16-Dec-2024 |
| 27 | Foundation | Parkade | N/A | Concrete | CON-2 | Back fill and level parkade | 20-Jun-2024 | 26-Jun-2024 |
| 28 | Pre-Construction | Precon | N/A | Precon Team | PREC-8 | Assign hollow core erection checklist | 19-Apr-2024 | 19-Apr-2024 |
| 29 | Foundation | Interior Bldg | N/A | Concrete | CON-2 | Back fill exterior grade beam | 06-Mar-2024 | 07-Mar-2024 |
| 30 | Foundation | Interior Bldg | N/A | Concrete | CON-2 | Back fill foundation | 01-Mar-2024 | 14-Mar-2024 |
| 31 | Interior | Interior Bldg | N/A | Inspection | INS-2 | Architectural walk throughs | 19-Feb-2025 | 20-Feb-2025 |
| 32 | Foundation | Parkade | N/A | Concrete | CON-2 | Back fill interior parkade | 08-Mar-2024 | 14-Mar-2024 |
| 33 | Foundation | Interior Bldg | N/A | Concrete | CON-3 | Build templates for Anchor bolts | 15-Feb-2024 | 15-Feb-2024 |
| 34 | Foundation | Interior Bldg | N/A | Concrete | CON-4 | Deliver pakade slab rebar | 19-Jun-2024 | 19-Jun-2024 |
| 35 | Interior | Interior Bldg | N/A | Inspection | INS-3 | Building inspector walk throughs | 21-Feb-2025 | 24-Feb-2025 |
| 36 | Pre-Construction | Precon | N/A | Precon Team | PREC-8 | Assign hollow core ordering checklist | 28-Sep-2023 | 28-Sep-2023 |
| 37 | Foundation | Interior Bldg | N/A | Concrete | CON-5 | deliver rebar (footings and gradebeam only) | 21-Dec-2023 | 21-Dec-2023 |
| 38 | Foundation | Parkade | N/A | Concrete | CON-6 | Dig footing and parkade foot print | 08-Jan-2024 | 16-Jan-2024 |
| 39 | Foundation | Interior Bldg | N/A | Concrete | CON-7 | Ensure Sleeves for electrical are run in the grade beam prior to pouring | 06-Feb-2024 | 06-Feb-2024 |
| 40 | Foundation | Interior Bldg | N/A | Concrete | CON-8 | Excavate areas | 26-Aug-2024 | 27-Aug-2024 |
| 41 | Foundation | Interior Bldg | N/A | Concrete | CON-8 | Excavation | 08-Jan-2024 | 18-Jan-2024 |
| 42 | Foundation | Interior Bldg | N/A | Concrete | CON-9 | Exterior concrete works | 26-Aug-2024 | 19-Dec-2024 |
| 43 | Interior | Interior Bldg | N/A | CX | CX- | Assign water and sewer commissioning checklist | 25-Mar-2024 | 25-Mar-2024 |
| 44 | Foundation | Interior Bldg | N/A | Concrete | CON-10 | Form footings | 19-Jan-2024 | 24-Jan-2024 |
| 45 | Foundation | Interior Bldg | N/A | Concrete | CON-11 | Form grade beam | 06-Feb-2024 | 14-Feb-2024 |
| 46 | Foundation | Interior Bldg | N/A | Concrete | CON-12 | Foundation | 19-Jan-2024 | 29-Feb-2024 |
| 47 | Foundation | Level 2 | N/A | Concrete | CON-13 | Hollowcore 2nd floor | 16-Apr-2024 | 17-Jun-2024 |
| 48 | Foundation | Level 3 | N/A | Concrete | CON-13 | Hollowcore 3rd floor | 23-May-2024 | 28-May-2024 |
| 49 | Foundation | Level 4 | N/A | Concrete | CON-13 | Hollowcore 4th floor | 11-Jun-2024 | 13-Jun-2024 |
| 50 | Sitework | Site | N/A | Site Sub | SIT- | Site services W/S/S install | 15-Mar-2024 | 25-Mar-2024 |
| 51 | Pre-Construction | Precon | N/A | Precon Team | PREC-8 | Assign parkade slab rough in checklist | 27-Jun-2024 | 27-Jun-2024 |
| 52 | Sitework | Site | N/A | Site Sub | SIT- | Install water and sewer | 18-Mar-2024 | 22-Mar-2024 |
| 53 | Interior | Interior Bldg | N/A | CX | CX- | Commision Water/sewer/storm | 25-Mar-2024 | 25-Mar-2024 |
| 54 | Interior | Interior Bldg | N/A | Steel | STL-1 | Strucutral Steel | 15-Mar-2024 | 21-Mar-2024 |
| 55 | Interior | Interior Bldg | N/A | Steel | STL-2 | Structural steel erection | 20-Mar-2024 | 21-Mar-2024 |
| 56 | Pre-Construction | Precon | N/A | Precon Team | PREC-8 | Assign Permits check list | 28-Sep-2023 | 20-Dec-2023 |
| 57 | Sitework | Site | N/A | Site Sub | SIT- | Structural steel delivered and sorted onsite | 18-Mar-2024 | 18-Mar-2024 |
| 58 | Interior | Interior Bldg | N/A | Framing | FRA- | 4.2 Framing | 11-Apr-2024 | 03-Jan-2025 |
| 59 | Interior | Interior Bldg | N/A | Mechanical | MCH-1 | Mechanical rough in in slab | 12-Jun-2024 | 18-Jun-2024 |
| 60 | Interior | Interior Bldg | N/A | Electrical | ELE-1 | Electrical rough in in slab | 12-Jun-2024 | 18-Jun-2024 |
| 61 | Interior | Interior Bldg | N/A | Drywall | DRY-1 | 4.3 Rough In, Steel Stud Drywall | 05-Aug-2024 | 23-Jan-2025 |
| 62 | Interior | Interior Bldg | N/A | Inspection | INS-4 | Call for Electrical and Mechanical Inspection | 23-Jan-2025 | 23-Jan-2025 |
| 63 | Foundation | Interior Bldg | N/A | Concrete | CON-14 | Install balcony piles | 25-Dec-2023 | 27-Dec-2023 |
| 64 | Foundation | Level 3 | N/A | Concrete | CON-15 | Install hollow core 3rd floor, Install backer rod & grout | 23-May-2024 | 28-May-2024 |
| 65 | Foundation | Level 4 | N/A | Concrete | CON-15 | Install hollow core 4th floor and grout | 11-Jun-2024 | 12-Jun-2024 |
| 66 | Pre-Construction | Precon | N/A | Precon Team | PREC-8 | Assign post decking install check list | 17-Sep-2024 | 17-Sep-2024 |
| 67 | Sitework | Site | N/A | Site Sub | SIT-1 | Radon rock install | 28-Jun-2024 | 01-Jul-2024 |
| 68 | Sitework | Site | N/A | Site Sub | SIT-2 | Install poly | 02-Jul-2024 | 02-Jul-2024 |
| 69 | Foundation | Level 2 | N/A | Concrete | CON-15 | Install hollowcore 2nd floor , Install backer rod & Grout 2nd floor | 16-Apr-2024 | 18-Apr-2024 |
| 70 | Foundation | Interior Bldg | N/A | Concrete | INSU-1 | Install underground insulation | 04-Mar-2024 | 05-Mar-2024 |

| entry | phase | location | area | trade | activity_code | activity_name | start | finish |
| --- | --- | --- | --- | --- | --- | --- | --- | --- |
| 71 | Foundation | Interior Bldg | N/A | Concrete | CON-16 | Measure corner offsets for excavation | 05-Jan-2024 | 05-Jan-2024 |
| 72 | Interior | Interior Bldg | N/A | Plumbing | PLU-1 | Deliver tubs & showers to suites / checklist | 17-Jul-2024 | 18-Jul-2024 |
| 73 | Interior | Interior Bldg | N/A | Vertical Flow | VF-1 | Install stairs | 30-Jul-2024 | 30-Jul-2024 |
| 74 | Pre-Construction | Precon | N/A | Precon Team | PREC-8 | Assign post landscaping checklist | 02-May-2025 | 02-May-2025 |
| 75 | Foundation | Interior Bldg | N/A | Concrete | CON-17 | Order all Anchor bolts | 21-Dec-2023 | 21-Dec-2023 |
| 76 | Foundation | Interior Bldg | N/A | Concrete | CON-18 | Pour exterior pads | 10-Sep-2024 | 10-Sep-2024 |
| 77 | Pre-Construction | Precon | N/A | Precon Team | PREC-8 | Assign pre-pour checklist | 02-Feb-2024 | 02-Feb-2024 |
| 78 | Interior | Interior Bldg | N/A | Inspection | INS-4 | Call for Electrical and Mechanical inspection | 31-Oct-2024 | 31-Oct-2024 |
| 79 | Interior | Interior Bldg | N/A | Vertical Flow | VF-2 | Delivery of Elevator & Install | 14-Oct-2024 | 03-Jan-2025 |
| 80 | Interior | Interior Bldg | N/A | Cleaning | CL-2 | Final suite clean | 27-Feb-2025 | 28-Feb-2025 |
| 81 | Pre-Construction | Precon | N/A | Precon Team | PREC-8 | Assign Procurement Plan check list | 28-Sep-2023 | 20-Dec-2023 |
| 82 | Foundation | Interior Bldg | N/A | Concrete | CON-19 | Pour exterior sidewalks | 17-Dec-2024 | 19-Dec-2024 |
| 83 | Foundation | Interior Bldg | N/A | Concrete | CON-20 | Pour footings | 05-Feb-2024 | 05-Feb-2024 |
| 84 | Foundation | Interior Bldg | N/A | Concrete | CON-21 | Pour grade beam | 29-Feb-2024 | 29-Feb-2024 |
| 85 | Interior | Interior Bldg | N/A | Inspection | INS-5 | Call for envelope reviewer inspection | 26-Nov-2024 | 26-Nov-2024 |
| 86 | Interior | Interior Bldg | N/A | Drywall | DRY-2 | Assign Corridor & Stairwell pre board inspection checklist | 28-Nov-2024 | 28-Nov-2024 |
| 87 | Pre-Construction | Precon | N/A | Precon Team | PREC-8 | Assign Project Team | 28-Sep-2023 | 20-Dec-2023 |
| 88 | Interior | Interior Bldg | N/A | Drywall | DRY-2 | Assign corridor & stairwell pre board inspection checklist | 12-Nov-2024 | 12-Nov-2024 |
| 89 | Interior | Interior Bldg | N/A | Drywall | DRY-2 | Assign Corridor & Stairwell pre board inspection checklist | 08-Nov-2024 | 08-Nov-2024 |
| 90 | Foundation | Interior Bldg | N/A | Concrete | GYP-1 | Pour Gypcrete | 25-Nov-2024 | 26-Nov-2024 |
| 91 | Foundation | Parkade | N/A | Concrete | CON-22 | Pour parakde slab | 27-Jun-2024 | 10-Jul-2024 |
| 92 | Pre-Construction | Precon | N/A | Precon Team | PREC-8 | Assign roofing and water proofing checklist | 07-Aug-2024 | 07-Aug-2024 |
| 93 | Interior | Interior Bldg | N/A | Drywall | DRY-3 | Assign pre board inspection check list | 28-Nov-2024 | 28-Nov-2024 |
| 94 | Interior | Interior Bldg | N/A | Drywall | DRY-3 | Assign pre board inspection check list | 15-Nov-2024 | 15-Nov-2024 |
| 95 | Pre-Construction | Precon | N/A | Precon Team | PREC-8 | Assign Safety Equipment and Materials checklist | 28-Sep-2023 | 20-Dec-2023 |
| 96 | Interior | Interior Bldg | N/A | Drywall | DRY-3 | Assign pre board inspection checklist | 22-Jan-2025 | 22-Jan-2025 |
| 97 | Interior | Interior Bldg | N/A | Drywall | DRY-3 | Assign pre board inspection checklist | 22-Jan-2025 | 22-Jan-2025 |
| 98 | Interior | Interior Bldg | N/A | Drywall | DRY-3 | Assign pre board interior walls checklist | 28-Nov-2024 | 28-Nov-2024 |
| 99 | Interior | Interior Bldg | N/A | Drywall | DRY-3 | Assign pre board interior walls checklist | 15-Nov-2024 | 15-Nov-2024 |
| 100 | Interior | Interior Bldg | N/A | Drywall | DRY-3 | Assign pre board interior walls checklist | 08-Nov-2024 | 08-Nov-2024 |
| 101 | Interior | Interior Bldg | N/A | Drywall | DRY-4 | Board and prepare electrical/mechanical room | 06-Dec-2024 | 10-Dec-2024 |
| 102 | Interior | Interior Bldg | N/A | Gypcrete | GYP-1 | Gypcrete | 25-Nov-2024 | 26-Nov-2024 |
| 103 | Interior | Interior Bldg | N/A | Finishing | FIN-1 | 4.4 Finishing | 09-Aug-2024 | 05-May-2025 |
| 104 | Exteriors | Outside Bldg | N/A | Windows | WIN-1 | install windows and doors | 08-Jul-2024 | 26-Nov-2024 |
| 105 | Interior | Interior Bldg | N/A | Inspection | INS-6 | Call for Mechanical & Electrical inspection of attic | 04-Sep-2024 | 04-Sep-2024 |
| 106 | Pre-Construction | Precon | N/A | Precon Team | PREC-8 | Assign structural steel checklist | 15-Mar-2024 | 15-Mar-2024 |
| 107 | Interior | Interior Bldg | N/A | Inspection | INS-6 | Call for Mechanical and Electrical inspection | 25-Nov-2024 | 25-Nov-2024 |
| 108 | Interior | Interior Bldg | N/A | Inspection | INS-6 | Call for Mechanical and Electrical Inspection | 12-Nov-2024 | 12-Nov-2024 |
| 109 | Interior | Interior Bldg | N/A | Inspection | INS-7 | Call for structural inspection | 20-Aug-2024 | 20-Aug-2024 |
| 110 | Exteriors | Outside Bldg | N/A | Exteriors | EXT-1 | Roofing and water proofing | 07-Aug-2024 | 23-Aug-2024 |
| 111 | Pre-Construction | Precon | N/A | Precon Team | PREC-8 | Assign taping inspection checklist | 23-Dec-2024 | 23-Dec-2024 |
| 112 | Exteriors | Outside Bldg | N/A | Exteriors | EXT-2 | Install roofing and water proofing | 12-Aug-2024 | 23-Aug-2024 |
| 113 | Exteriors | Outside Bldg | N/A | Siding | SID-1 | Soffit & Tower Siding | 03-Sep-2024 | 03-Jan-2025 |
| 114 | Exteriors | Outside Bldg | N/A | Exteriors | EXT-3 | Building paper the whole building | 03-Sep-2024 | 25-Nov-2024 |
| 115 | Interior | Interior Bldg | N/A | Inspection | INS-8 | Contact Canada Post to get the address's created | 14-Feb-2025 | 14-Feb-2025 |
| 116 | Pre-Construction | Precon | N/A | Precon Team | PREC-8 | Assign taping inspection checklist | 07-Oct-2024 | 07-Oct-2024 |
| 117 | Exteriors | Outside Bldg | N/A | Siding | SID-2 | Siding towers | 27-Nov-2024 | 16-Dec-2024 |
| 118 | Interior | Interior Bldg | N/A | Electrical | ELE-3 | Electrical rough in in ceiling | 26-Aug-2024 | 03-Sep-2024 |
| 119 | Foundation | Parkade | N/A | Concrete | CON-22 | Pour parkade floor | 09-Jul-2024 | 10-Jul-2024 |
| 120 | Foundation | Interior Bldg | N/A | Concrete | CON-23 | Rebar exterior sidewalks | 09-Dec-2024 | 11-Dec-2024 |
| 121 | Sitework | Site | N/A | Site Sub | SIT-3 | Form exterior pads | 28-Aug-2024 | 03-Sep-2024 |
| 122 | Foundation | Interior Bldg | N/A | Concrete | CON-24 | Survey for balcony piles | 21-Dec-2023 | 22-Dec-2023 |
| 123 | Pre-Construction | Precon | N/A | Precon Team | PREC-8 | Assign taping inspection checklist | 19-Dec-2024 | 19-Dec-2024 |
| 124 | Foundation | Interior Bldg | N/A | Concrete | CON-25 | Survey offsets, and footings | 17-Jan-2024 | 17-Jan-2024 |
| 125 | Sitework | Site | N/A | Site Sub | SIT-4 | Excatae exterior sidewalks | 11-Sep-2024 | 03-Dec-2024 |
| 126 | Sitework | Site | N/A | Site Sub | SIT-5 | Form exterior sidewalks | 04-Dec-2024 | 06-Dec-2024 |
| 127 | Foundation | Interior Bldg | N/A | Concrete | CON-26 | Tie footing rebar | 25-Jan-2024 | 31-Jan-2024 |
| 128 | Foundation | Interior Bldg | N/A | Concrete | CON-27 | Tie Grade beam rebar | 16-Feb-2024 | 26-Feb-2024 |
| 129 | Foundation | Parkade | N/A | Concrete | CON-28 | Tie parkade rebar | 03-Jul-2024 | 05-Jul-2024 |
| 130 | Interior | Interior Bldg | N/A | Paint | PAI-2 | Final coat of paint | 13-Feb-2025 | 25-Feb-2025 |
| 131 | Interior | Interior Bldg | N/A | Paint | PAI-2 | Final coat of paint | 03-Feb-2025 | 13-Feb-2025 |
| 132 | Interior | Interior Bldg | N/A | Paint | PAI-2 | Final coat of paint | 24-Jan-2025 | 05-Feb-2025 |
| 133 | Interior | Interior Bldg | N/A | Flooring | FLO-8 | Install railings on all floors | 20-Jan-2025 | 06-Feb-2025 |
| 134 | Interior | Interior Bldg | N/A | Framing | FRA-5 | Install metal doors and frames | 24-Dec-2024 | 06-Jan-2025 |
| 135 | Interior | Interior Bldg | N/A | Framing | FRA-6 | Install pocket door frames | 06-Sep-2024 | 12-Sep-2024 |
| 136 | Interior | Interior Bldg | N/A | Framing | FRA-6 | Install pocket door frames | 20-Sep-2024 | 26-Sep-2024 |
| 137 | Interior | Interior Bldg | N/A | Framing | FRA-6 | Install pocket foor frame | 28-Aug-2024 | 03-Sep-2024 |
| 138 | Interior | Interior Bldg | N/A | Flooring | FLO-10 | Install windows & doors all floors | 01-Aug-2024 | 13-Aug-2024 |
| 139 | Interior | Interior Bldg | N/A | Plumbing | PLU-2 | Install tubs and showers | 30-Aug-2024 | 04-Sep-2024 |
| 140 | Interior | Interior Bldg | N/A | Plumbing | PLU-2 | Install tubs and showers | 06-Sep-2024 | 11-Sep-2024 |

| entry | phase | location | area | trade | activity_code | activity_name | start | finish |
| --- | --- | --- | --- | --- | --- | --- | --- | --- |
| 141 | Interior | Interior Bldg | N/A | Plumbing | PLU-2 | Install tubs and showers | 26-Sep-2024 | 27-Sep-2024 |
| 142 | Interior | Interior Bldg | N/A | Electrical | ELE-4 | Main service electrical room install | 28-Nov-2024 | 26-Dec-2024 |
| 143 | Interior | Interior Bldg | N/A | Mechanical | MCH-2 | Main service mechanical room install | 28-Nov-2024 | 22-Jan-2025 |
| 144 | Interior | Interior Bldg | N/A | Mechanical | MCH-4 | Mechanical rough in in ceiling | 05-Aug-2024 | 14-Aug-2024 |
| 145 | Interior | Interior Bldg | N/A | Rough-In (General) | RI-3 | Rough in interior walls | 21-Nov-2024 | 04-Dec-2024 |
| 146 | Interior | Interior Bldg | N/A | Sprinkler | SPR-2 | Sprinkler install in attic | 07-Aug-2024 | 21-Aug-2024 |
| 147 | Interior | Interior Bldg | N/A | Exteriors | EXT-11 | Install exterior decking all floors | 03-Sep-2024 | 16-Sep-2024 |
| 148 | Interior | Interior Bldg | N/A | Sprinkler | SPR-4 | Install underground sprinklers | 11-Apr-2025 | 17-Apr-2025 |
| 149 | Interior | Interior Bldg | N/A | CX | CX- | Commision landscaping | 02-May-2025 | 05-May-2025 |
| 150 | Interior | Interior Bldg | N/A | CX | CX- | Final commissioning and deficiency | 14-Feb-2025 | 03-Mar-2025 |
| 151 | Interior | Interior Bldg | N/A | Inspection | INS-9 | Enginering walk throughs | 19-Feb-2025 | 20-Feb-2025 |
| 152 | Interior | Interior Bldg | N/A | Inspection | INS-10 | Fire alarm verification | 14-Feb-2025 | 17-Feb-2025 |
| 153 | Interior | Interior Bldg | N/A | Inspection | INS-13 | Sprinkler testing | 14-Feb-2025 | 17-Feb-2025 |
| 154 | Interior | Interior Bldg | N/A | CX | CX- | Elevator commissioning | 14-Feb-2025 | 17-Feb-2025 |
| 155 | Exteriors | Outside Bldg | N/A | Siding | SID-3 | Assign siding checklist | 24-Dec-2024 | 24-Dec-2024 |
| 156 | Exteriors | Outside Bldg | N/A | Siding | SID-3 | Assign siding checklist | 10-Dec-2024 | 10-Dec-2024 |
| 157 | Exteriors | Outside Bldg | N/A | Siding | SID-3 | Assign siding checklist | 22-Nov-2024 | 22-Nov-2024 |
| 158 | Exteriors | Outside Bldg | N/A | Siding | SID-3 | Assign siding checklist | 06-Nov-2024 | 06-Nov-2024 |
| 159 | Pre-Construction | Precon | N/A | Precon Team | PREC-8 | Assign taping inspection checklist | 05-Dec-2024 | 05-Dec-2024 |
| 160 | Pre-Construction | Precon | N/A | Precon Team | PREC-8 | Assign taping inspection checklist | 15-Nov-2024 | 15-Nov-2024 |
| 161 | Pre-Construction | Precon | N/A | Precon Team | PREC-8 | Assign taping inspection checklist | 28-Nov-2024 | 28-Nov-2024 |
| 162 | Pre-Construction | Precon | N/A | Precon Team | PREC-8 | Assign taping inspection checklist for suites | 19-Dec-2024 | 19-Dec-2024 |
| 163 | Pre-Construction | Precon | N/A | Precon Team | PREC-8 | Assign taping inspection checklist for suites | 05-Dec-2024 | 05-Dec-2024 |
| 164 | Pre-Construction | Precon | N/A | Precon Team | PREC-8 | Assign tower siding checklist | 26-Nov-2024 | 26-Nov-2024 |
| 165 | Pre-Construction | Precon | N/A | Precon Team | PREC-8 | Assign water and sewer and storm checklist | 15-Mar-2024 | 15-Mar-2024 |
| 166 | Pre-Construction | Precon | N/A | Precon Team | PREC-8 | Assign window & door installation checklist | 08-Jul-2024 | 08-Jul-2024 |
| 167 | Interior | Interior Bldg | N/A | COO | COO-1 | Prepare occupancy paperwork | 25-Feb-2025 | 26-Feb-2025 |
| 168 | Interior | Interior Bldg | N/A | COO | COO-2 | Receive occupancy | 27-Feb-2025 | 28-Feb-2025 |
| 169 | Interior | Interior Bldg | N/A | COO | COO-3 | Move in dates confirmed | 03-Mar-2025 | 03-Mar-2025 |
| 170 | Interior | Interior Bldg | N/A | COO | COO-4 | 5.0 Sales, Occupancy, Closings | 03-Mar-2025 | 01-May-2025 |
| 171 | Interior | Interior Bldg | N/A | COO | COO-5 | Pre sale move in dates confirmed | 03-Mar-2025 | 03-Mar-2025 |
| 172 | Interior | Interior Bldg | N/A | CX | CX-1 | Finalize home owner extras | 04-Mar-2025 | 10-Mar-2025 |
| 173 | Exteriors | Level 2 | N/A | Exteriors | EXT-4 | Board exterior walls on 2nd and sheds | 28-Nov-2024 | 04-Dec-2024 |
| 174 | Exteriors | Parkade | N/A | Exteriors | EXT-5 | Board parkade exterior walls and sheds | 09-Dec-2024 | 09-Dec-2024 |
| 175 | Exteriors | Parkade | N/A | Exteriors | EXT-6 | Board Parkade interior walls | 10-Dec-2024 | 13-Dec-2024 |
| 176 | Interior | Interior Bldg | N/A | CX | CX-2 | Load home owners into copper | 04-Mar-2025 | 04-Mar-2025 |
| 177 | Interior | Interior Bldg | N/A | CX | CX-3 | Move in binders created | 04-Mar-2025 | 10-Mar-2025 |
| 178 | Interior | Interior Bldg | N/A | CX | CX-4 | Update home owner permissions in Construction online | 04-Mar-2025 | 04-Mar-2025 |
| 179 | Interior | Interior Bldg | N/A | CX | CX-5 | Unit Commissioning Inspection list | 04-Mar-2025 | 10-Mar-2025 |
| 180 | Interior | Interior Bldg | N/A | Cleaning | CL-3 | Unit Commissioning deficiency clean up confirmed | 11-Mar-2025 | 17-Mar-2025 |
| 181 | Interior | Interior Bldg | N/A | Cleaning | CL-4 | Building close out cleanup deficiencies confirmed | 05-Mar-2025 | 11-Mar-2025 |
| 182 | Interior | Interior Bldg | N/A | CX | CX-6 | Keys and gift cards and welcome package created | 04-Mar-2025 | 10-Mar-2025 |
| 183 | Interior | Interior Bldg | N/A | CX | CX-7 | Home owner walk through and punch list | 11-Mar-2025 | 11-Mar-2025 |
| 184 | Interior | Interior Bldg | N/A | Cleaning | CL-5 | Home owner walk through punch list clean up | 12-Mar-2025 | 18-Mar-2025 |
| 185 | Interior | Interior Bldg | N/A | CX | CX-8 | New move ins and warranty through service manager | 04-Mar-2025 | 01-May-2025 |
| 186 | Interior | Interior Bldg | N/A | CX | CX-9 | Send out contractor surveys | 05-Mar-2025 | 05-Mar-2025 |
| 187 | Interior | Interior Bldg | N/A | CX | CX-10 | Schedule 1 on 1 contractor review meetings | 06-Mar-2025 | 12-Mar-2025 |
| 188 | Pre-Construction | Precon | N/A | Precon Team | PREC-9 | Building close out check list | 04-Mar-2025 | 04-Mar-2025 |
| 189 | Interior | Interior Bldg | N/A | CX | CX-11 | Schedule contractor group meeting to review survey results | 06-Mar-2025 | 12-Mar-2025 |
| 190 | Foundation | Interior Bldg | N/A | Concrete | CON-29 | Tie rebar exterior pads | 04-Sep-2024 | 06-Sep-2024 |
| 191 | Interior | Interior Bldg | N/A | CX | CX-12 | Project post mordem internal | 13-Mar-2025 | 13-Mar-2025 |
| 192 | Interior | Interior Bldg | N/A | CX | CX-13 | Move info to Dev co work flow 1.0, 2.0, 6.0 | 18-Mar-2025 | 18-Mar-2025 |
| 193 | Interior | Level 1 | Common Areas | Cleaning | CL-1 | Construction clean on 1 | 14-Feb-2025 | 18-Feb-2025 |
| 194 | Interior | Level 1 | Common Areas | Cleaning | CL-2 | Final suite clean on 1 | 20-Feb-2025 | 24-Feb-2025 |
| 195 | Interior | Level 1 | Common Areas | CX | CX- | Assign Unit Commissioning Inspection list on 1 | 19-Feb-2025 | 19-Feb-2025 |
| 196 | Interior | Level 1 | Ceilings | Finishing | FIN-2 | Ceiling texture on 1 | 02-Jan-2025 | 03-Jan-2025 |
| 197 | Interior | Level 1 | Electrical Systems | Electrical | ELE-2 | Electrical finishing on 1 | 11-Feb-2025 | 13-Feb-2025 |
| 198 | Pre-Construction | Precon | Cabinets | Precon Team | PREC-10 | Building handover (PM to SM) checklist | 04-Mar-2025 | 10-Mar-2025 |
| 199 | Exteriors | Outside Bldg | Attic | Exteriors | EXT-7 | Blow in attic insulation | 18-Sep-2024 | 20-Sep-2024 |
| 200 | Interior | Level 1 | Cabinets | Finishing | FIN-3 | finishing parkade level 1 | 02-Jan-2025 | 24-Feb-2025 |
| 201 | Interior | Level 1 | Flooring | Flooring | FLO-7 | Install flooring on 1 | 15-Jan-2025 | 16-Jan-2025 |
| 202 | Interior | Level 1 | Cabinets | Carpentry | CAR-2 | Install cabinets on 1 | 17-Jan-2025 | 20-Jan-2025 |
| 203 | Interior | Level 1 | Countertops | Carpentry | CAR-3 | Install countertops on 1 | 10-Feb-2025 | 10-Feb-2025 |
| 204 | Interior | Level 1 | Doors and Frames | Carpentry | CAR-4 | Install interior doors and case on 1 | 08-Jan-2025 | 09-Jan-2025 |
| 205 | Sitework | Site | Survey | Site Sub | SIT-6 | Call the surveyor to measure for condo plan | 29-Oct-2024 | 31-Oct-2024 |
| 206 | Interior | Level 1 | Doors and Frames | Framing | FRA-7 | Install suite entry doors and frames and Interior doors, trims and jambs | 23-Dec-2024 | 03-Jan-2025 |
| 207 | Interior | Level 1 | Doors and Frames | Framing | FRA-7 | Install suite entry doors and frames and Interior doors, trims and jambs | 09-Dec-2024 | 13-Dec-2024 |
| 208 | Interior | Level 1 | Doors and Frames | Framing | FRA-7 | Install suite entry doors and frames and Interior doors, trims and jambs | 02-Dec-2024 | 06-Dec-2024 |
| 209 | Interior | Level 1 | Mechanical Systems | Mechanical | MCH-3 | Mechanical finishing on 1 | 11-Feb-2025 | 13-Feb-2025 |
| 210 | Interior | Level 1 | Fire Systems | Paint | PAI-3 | Paint 1rst coat of color on 1 | 10-Jan-2025 | 16-Jan-2025 |

| entry | phase | location | area | trade | activity_code | activity_name | start | finish |
| --- | --- | --- | --- | --- | --- | --- | --- | --- |
| 211 | Interior | Level 1 | Structural | Paint | PAI-4 | Prime paint on 1 | 03-Jan-2025 | 07-Jan-2025 |
| 212 | Interior | Level 1 | Closets | Carpentry | CAR-6 | Spray out closet interiors and trim on 1 | 10-Jan-2025 | 10-Jan-2025 |
| 213 | Interior | Level 1 | Hallways and Stairwells | Sprinkler | SPR-1 | Sprinkler finishing on 1 | 11-Feb-2025 | 13-Feb-2025 |
| 214 | Interior | Level 2 | Flooring | Framing | FRA- | Framing 2nd floor | 19-Apr-2024 | 14-May-2024 |
| 215 | Interior | Level 2 | Flooring | Framing | FRA- | Frame 2nd floor | 19-Apr-2024 | 13-May-2024 |
| 216 | Interior | Level 2 | Hallways and Stairwells | Flooring | FLO-2 | 2nd floor - Taper do the rectification of deficiences | 23-Dec-2024 | 23-Dec-2024 |
| 217 | Interior | Level 2 | Countertops | Flooring | FLO-3 | 2nd floor counter top measurement for template | 16-Jan-2025 | 20-Jan-2025 |
| 218 | Interior | Level 2 | Flooring | Flooring | FLO-4 | 2nd floor finishing | 16-Dec-2024 | 28-Feb-2025 |
| 219 | Interior | Level 2 | Hallways and Stairwells | Cleaning | CL-1 | Construction clean 2nd floor | 24-Feb-2025 | 27-Feb-2025 |
| 220 | Interior | Level 2 | Common Areas | CX | CX- | Assign Unit Commissioning Inspection list 2nd floor | 27-Feb-2025 | 27-Feb-2025 |
| 221 | Interior | Level 2 | Common Areas | Framing | FRA-1 | Back framing on 2nd | 21-Aug-2024 | 27-Aug-2024 |
| 222 | Interior | Level 2 | Hallways and Stairwells | Drywall | DRY-4 | Board 2nd floor hallways and stairwells | 28-Nov-2024 | 04-Dec-2024 |
| 223 | Interior | Level 2 | Walls | Drywall | DRY-4 | Board 2nd floor walls | 28-Nov-2024 | 04-Dec-2024 |
| 224 | Interior | Level 2 | Walls / Ceilings | Drywall | DRY-4 | Board upper 16" strips in common area and all suites on 2nd | 30-Aug-2024 | 04-Sep-2024 |
| 225 | Interior | Level 2 | Walls / Ceilings | Drywall | DRY-5 | Fire tape / Fire caulk upper strips on 2nd | 25-Nov-2024 | 25-Nov-2024 |
| 226 | Interior | Level 2 | Ceilings | Framing | FRA-3 | Frame drops on 2nd | 26-Nov-2024 | 02-Dec-2024 |
| 227 | Interior | Level 2 | Flooring | Flooring | FLO-5 | Core floors begin at 2nd | 24-Jul-2024 | 26-Jul-2024 |
| 228 | Interior | Level 2 | Cabinets | Carpentry | CAR-6 | Install cabinets 2nd floor | 13-Jan-2025 | 17-Jan-2025 |
| 229 | Interior | Level 2 | Suites | Drywall | DRY-7 | Layout suites on 2nd floor | 18-Jul-2024 | 22-Jul-2024 |
| 230 | Interior | Level 2 | Flooring | Flooring | FLO-7 | Install flooring 2nd floor | 08-Jan-2025 | 16-Jan-2025 |
| 231 | Interior | Level 2 | Ceilings | Finishing | FIN-2 | Ceiling texture on 2nd | 16-Dec-2024 | 17-Dec-2024 |
| 232 | Interior | Level 2 | Electrical Systems | Electrical | ELE-2 | Electrical finishing 2nd floor | 07-Feb-2025 | 13-Feb-2025 |
| 233 | Interior | Level 2 | Hallways and Stairwells | Electrical | ELE-3 | Electrical rough in hallways & stairwells on 2nd | 08-Nov-2024 | 22-Nov-2024 |
| 234 | Interior | Level 2 | Suites | Electrical | ELE-3 | Electrical rough in on 2nd | 08-Nov-2024 | 22-Nov-2024 |
| 235 | Interior | Level 2 | Base and Hardware | Carpentry | CAR-1 | Install base and hardware 2nd floor | 17-Jan-2025 | 24-Jan-2025 |
| 236 | Interior | Level 2 | Doors and Frames | Carpentry | CAR-4 | Install interior doors and case on 2nd | 23-Dec-2024 | 03-Jan-2025 |
| 237 | Interior | Level 2 | Countertops | Carpentry | CAR-5 | Manufacturing and Install countertops 2nd floor | 21-Jan-2025 | 07-Feb-2025 |
| 238 | Interior | Level 2 | Mechanical Systems | Mechanical | MCH-3 | Mechanical finishing 2nd floor | 07-Feb-2025 | 13-Feb-2025 |
| 239 | Interior | Level 2 | Hallways and Stairwells | Mechanical | MCH-4 | Mechanical rough in hallways & stairwells on 2nd | 01-Nov-2024 | 15-Nov-2024 |
| 240 | Interior | Level 2 | Suites | Mechanical | MCH-4 | Mechanical rough in on 2nd | 01-Nov-2024 | 15-Nov-2024 |
| 241 | Interior | Level 2 | Fire Systems | Paint | PAI-3 | Paint 1st coat of color 2nd floor | 27-Dec-2024 | 03-Jan-2025 |
| 242 | Interior | Level 2 | Fire Systems | Paint | PAI-4 | Prime paint on 2nd | 18-Dec-2024 | 23-Dec-2024 |
| 243 | Interior | Level 2 | Suites | Rough-In (General) | RI-1 | Rough in 2nd floor | 12-Aug-2024 | 03-Jan-2025 |
| 244 | Interior | Level 2 | Fire Systems | Sprinkler | SPR-1 | Sprinkler finishing 2nd floor | 07-Feb-2025 | 13-Feb-2025 |
| 245 | Interior | Level 2 | Hallways and Stairwells | Sprinkler | SPR-3 | Sprinkler rough in corridor & stairwells on 2nd | 26-Aug-2024 | 06-Sep-2024 |
| 246 | Interior | Level 2 | Suites | Sprinkler | SPR-3 | Sprinkler rough in on 2nd | 26-Aug-2024 | 06-Sep-2024 |
| 247 | Interior | Level 2 | Walls / Ceilings | Drywall | DRY-9 | Steel stud install on 2nd & drywall behind the tubs including fire wall taping if it is a fire wall | 12-Aug-2024 | 29-Aug-2024 |
| 248 | Interior | Level 2 | Hallways and Stairwells | Drywall | DRY-11 | Tape 2nd floor hallways and stair wells | 05-Dec-2024 | 19-Dec-2024 |
| 249 | Interior | Level 2 | Suites | Drywall | DRY-10 | Tape suites on 2nd | 05-Dec-2024 | 19-Dec-2024 |
| 250 | Interior | Level 2 | Bathrooms | Plumbing | PLU-3 | Water dams 2nd floor | 19-Aug-2024 | 23-Aug-2024 |
| 251 | Interior | Level 3 | Flooring | Framing | FRA- | Framing 3rd floor | 28-May-2024 | 26-Jul-2024 |
| 252 | Interior | Level 3 | Flooring | Framing | FRA- | Frame 3rd floor | 28-May-2024 | 07-Jun-2024 |
| 253 | Interior | Level 3 | Suites | Framing | FRA- | Layout suites on 3rd floor | 23-Jul-2024 | 26-Jul-2024 |
| 254 | Interior | Level 3 | Walls / Ceilings | Flooring | FLO-2 | 3rd floor - Taper do the rectification of deficiencies | 10-Dec-2024 | 10-Dec-2024 |
| 255 | Interior | Level 3 | Countertops | Flooring | FLO- | 3rd floor counter top measurement for template | 08-Jan-2025 | 10-Jan-2025 |
| 256 | Interior | Level 3 | Flooring | Flooring | FLO-3 | 3rd floor finishing | 02-Dec-2024 | 18-Feb-2025 |
| 257 | Interior | Level 3 | Common Areas | Cleaning | CL-1 | Construction clean on 3rd | 11-Feb-2025 | 17-Feb-2025 |
| 258 | Interior | Level 3 | Common Areas | Cleaning | CL-2 | Final suite clean on 3rd | 17-Feb-2025 | 18-Feb-2025 |
| 259 | Interior | Level 3 | Common Areas | CX | CX- | Assign Unit Commissioning Inspection list on 3rd | 17-Feb-2025 | 17-Feb-2025 |
| 260 | Interior | Level 3 | Flooring | Flooring | FLO-5 | Core floor beings at 3rd floor | 29-Jul-2024 | 31-Jul-2024 |
| 261 | Interior | Level 3 | Hallways and Stairwells | Framing | FRA-1 | Back framing on 3rd | 10-Sep-2024 | 16-Sep-2024 |
| 262 | Interior | Level 3 | Walls / Ceilings | Drywall | DRY-4 | Board upper 16" strips in common area & all suites on 3rd | 11-Sep-2024 | 16-Sep-2024 |
| 263 | Interior | Level 3 | Walls / Ceilings | Drywall | DRY-5 | Fire tape / Fire caulk upper strips on 3rd | 11-Nov-2024 | 11-Nov-2024 |
| 264 | Interior | Level 3 | Ceilings | Framing | FRA-3 | Frame drops on 3rd | 12-Nov-2024 | 18-Nov-2024 |
| 265 | Interior | Level 3 | Ceilings | Finishing | FIN-2 | Ceiling texture on 3rd | 02-Dec-2024 | 03-Dec-2024 |
| 266 | Interior | Level 3 | Electrical Systems | Electrical | ELE-2 | Electrical finishing on 3rd | 29-Jan-2025 | 04-Feb-2025 |
| 267 | Interior | Level 3 | Hallways and Stairwells | Electrical | ELE-3 | Electrical rough in hallways & stairwells on 3rd | 28-Oct-2024 | 08-Nov-2024 |
| 268 | Interior | Level 3 | Suites | Electrical | ELE-3 | Electrical rough in on 3rd | 28-Oct-2024 | 08-Nov-2024 |
| 269 | Interior | Level 3 | Base and Hardware | Carpentry | CAR-1 | Install base and hardware on 3rd | 08-Jan-2025 | 13-Jan-2025 |
| 270 | Interior | Level 3 | Cabinets | Carpentry | CAR-2 | Install cabinets on 3rd | 18-Dec-2024 | 10-Jan-2025 |
| 271 | Interior | Level 3 | Flooring | Flooring | FLO-7 | Install flooring on 3rd | 17-Dec-2024 | 07-Jan-2025 |
| 272 | Interior | Level 3 | Doors and Frames | Carpentry | CAR-4 | Install interior doors and case on 3rd | 09-Dec-2024 | 13-Dec-2024 |
| 273 | Interior | Level 3 | Walls / Ceilings | Drywall | DRY-8 | Load boards on floor and Board 3rd floor walls | 15-Nov-2024 | 22-Nov-2024 |
| 274 | Interior | Level 3 | Walls / Ceilings | Drywall | DRY-8 | Load boards on floor and Board exterior walls on 3rd and sheds | 15-Nov-2024 | 22-Nov-2024 |
| 275 | Interior | Level 3 | Hallways and Stairwells | Drywall | DRY-8 | Load the board on floor and Board 3rd floor hallways and stairwells | 15-Nov-2024 | 22-Nov-2024 |
| 276 | Interior | Level 3 | Countertops | Carpentry | CAR-5 | Manufacturing and Install countertops on 3rd | 10-Jan-2025 | 29-Jan-2025 |
| 277 | Interior | Level 3 | Mechanical Systems | Mechanical | MCH-3 | Mechanical finishing on 3rd | 29-Jan-2025 | 04-Feb-2025 |
| 278 | Interior | Level 3 | Hallways and Stairwells | Mechanical | MCH-4 | Mechanical rough in hallways & stairwells on 3rd | 28-Oct-2024 | 07-Nov-2024 |
| 279 | Sitework | Parkade | Mechanical Systems | Site Sub | SIT-7 | Parkade - Measurement for template | 21-Jan-2025 | 21-Jan-2025 |
| 280 | Sitework | Parkade | Paint | Site Sub | SIT-8 | Parkade - Taper to rectify deficiencies | 07-Jan-2025 | 07-Jan-2025 |

| entry | phase | location | area | trade | activity_code | activity_name | start | finish |
| --- | --- | --- | --- | --- | --- | --- | --- | --- |
| 281 | Interior | Level 3 | Suites | Mechanical | MCH-4 | Mechanical rough in on 3rd | 28-Oct-2024 | 07-Nov-2024 |
| 282 | Exteriors | Level 2 | Walls / Ceilings | Insulation | INSU-1 | Poly and insulate on 2nd exterior walls | 25-Nov-2024 | 28-Nov-2024 |
| 283 | Exteriors | Level 3 | Walls / Ceilings | Insulation | INSU-1 | Poly and insulate on 3rd exterior walls | 12-Nov-2024 | 15-Nov-2024 |
| 284 | Exteriors | Level 4 | Walls / Ceilings | Insulation | INSU-1 | Poly and insulate on 4th exterior walls | 05-Nov-2024 | 07-Nov-2024 |
| 285 | Exteriors | Parkade | Walls / Ceilings | Insulation | INSU-2 | Poly and insulate parkade exterior walls | 22-Aug-2024 | 23-Aug-2024 |
| 286 | Interior | Level 3 | Fire Systems | Paint | PAI-3 | Paint 1st coat of color on 3rd | 12-Dec-2024 | 17-Dec-2024 |
| 287 | Interior | Level 3 | Walls / Ceilings | Paint | PAI-4 | Prime paint on 3rd | 05-Dec-2024 | 10-Dec-2024 |
| 288 | Interior | Level 3 | Suites | Rough-In (General) | RI-1 | Rough in 3rd floor | 19-Aug-2024 | 13-Dec-2024 |
| 289 | Interior | Level 3 | Closets | Carpentry | CAR-6 | Spray out closet interiors and trim on 3rd | 12-Dec-2024 | 17-Dec-2024 |
| 290 | Interior | Level 3 | Fire Systems | Sprinkler | SPR-1 | Sprinkler finishing on 3rd | 29-Jan-2025 | 04-Feb-2025 |
| 291 | Interior | Level 3 | Hallways and Stairwells | Sprinkler | SPR-3 | Sprinkler rough in hallways & stairwells on 3rd | 09-Sep-2024 | 20-Sep-2024 |
| 292 | Interior | Level 3 | Suites | Sprinkler | SPR-3 | Sprinkler rough in on 3rd | 09-Sep-2024 | 20-Sep-2024 |
| 293 | Interior | Level 3 | Walls / Ceilings | Drywall | DRY-9 | Steel stud install on 3rd & drywall behind the tubs including fire wall taping if it is a fire wall | 30-Aug-2024 | 05-Sep-2024 |
| 294 | Exteriors | Parkade | Walls / Ceilings | Rough-In (General) | RI-2 | Rough in exterior walls - parkade and sheds | 18-Nov-2024 | 06-Dec-2024 |
| 295 | Exteriors | Level 2 | Walls / Ceilings | Rough-In (General) | RI-2 | Rough in exterior walls on 2nd and sheds | 08-Nov-2024 | 21-Nov-2024 |
| 296 | Exteriors | Level 3 | Walls / Ceilings | Rough-In (General) | RI-2 | Rough in exterior walls on 3rd and sheds | 28-Oct-2024 | 08-Nov-2024 |
| 297 | Interior | Level 3 | Hallways and Stairwells | Drywall | DRY-11 | Tape 3rd floor hallways and stair wells | 22-Nov-2024 | 05-Dec-2024 |
| 298 | Interior | Level 3 | Suites | Drywall | DRY-10 | Tape suites on 3rd | 22-Nov-2024 | 05-Dec-2024 |
| 299 | Exteriors | Parkade | Parkade | Rough-In (General) | RI-4 | Rough in Parkade | 19-Aug-2024 | 23-Jan-2025 |
| 300 | Exteriors | Level 2 | Walls / Ceilings | Siding | SID-4 | Siding 2nd floor | 22-Nov-2024 | 09-Dec-2024 |
| 301 | Exteriors | Level 3 | Walls / Ceilings | Siding | SID-4 | Siding 3rd floor | 06-Nov-2024 | 21-Nov-2024 |
| 302 | Exteriors | Level 4 | Walls / Ceilings | Siding | SID-4 | Siding 4th floor | 21-Oct-2024 | 05-Nov-2024 |
| 303 | Exteriors | Parkade | Walls / Ceilings | Siding | SID-4 | Siding parkade level | 10-Dec-2024 | 23-Dec-2024 |
| 304 | Interior | Level 3 | Bathrooms | Plumbing | PLU-3 | Water dams 3rd floor | 19-Aug-2024 | 23-Aug-2024 |
| 305 | Interior | Level 4 | Framing | Inspection | INS-1 | 4th floor framing inspection | 04-Nov-2024 | 04-Nov-2024 |
| 306 | Interior | Level 4 | Walls / Ceilings | Framing | FRA- | Framing 4th floor | 19-Jun-2024 | 31-Jul-2024 |
| 307 | Interior | Level 4 | Walls / Ceilings | Framing | FRA- | Frame 4th floor | 19-Jun-2024 | 05-Jul-2024 |
| 308 | Interior | Level 4 | Common Areas | Cleaning | CL-1 | Construction clean on 4th | 03-Feb-2025 | 07-Feb-2025 |
| 309 | Interior | Level 4 | Suites | Cleaning | CL-2 | Final suite clean on 4th | 07-Feb-2025 | 10-Feb-2025 |
| 310 | Interior | Level 4 | Walls / Ceilings | Flooring | FLO-2 | 4th floor - Taper do the rectification of deficiencies | 02-Dec-2024 | 03-Dec-2024 |
| 311 | Interior | Level 4 | Countertops | Flooring | FLO-4 | 4th floor counter top measurements for template | 17-Dec-2024 | 19-Dec-2024 |
| 312 | Interior | Level 4 | Common Areas | Framing | FRA-1 | Back framing on 4th | 23-Sep-2024 | 27-Sep-2024 |
| 313 | Interior | Level 4 | Walls / Ceilings | Drywall | DRY-4 | Board upper 16" strips in common area and all suites on 4th | 27-Sep-2024 | 02-Oct-2024 |
| 314 | Interior | Level 4 | Fire Systems | Drywall | DRY-5 | Fire tape / Fire caulk upper strips on 4th | 01-Nov-2024 | 01-Nov-2024 |
| 315 | Interior | Level 4 | Ceilings | Framing | FRA-3 | Frame drops on 4th | 29-Nov-2024 | 05-Dec-2024 |
| 316 | Interior | Level 4 | Ceilings | Drywall | DRY-6 | Install drywall on 4th floor ceiling | 11-Sep-2024 | 17-Sep-2024 |
| 317 | Interior | Level 4 | Flooring | Flooring | FLO-5 | Core floor beings at 4th floor | 01-Aug-2024 | 02-Aug-2024 |
| 318 | Interior | Level 4 | Exterior Walls | Flooring | FLO-6 | Install fascia and soffit 4th floor | 15-Nov-2024 | 25-Nov-2024 |
| 319 | Interior | Level 4 | Ceilings | Finishing | FIN-2 | Ceiling texture on 4th | 26-Nov-2024 | 27-Nov-2024 |
| 320 | Interior | Level 4 | Electrical Systems | Electrical | ELE-2 | Electrical finishing on 4th | 21-Jan-2025 | 27-Jan-2025 |
| 321 | Interior | Level 4 | Hallways and Stairwells | Electrical | ELE-3 | Electrical rough in hallways stairwells on 4th | 21-Oct-2024 | 31-Oct-2024 |
| 322 | Interior | Level 4 | Suites | Electrical | ELE-3 | Electrical rough in on 4th | 21-Oct-2024 | 31-Oct-2024 |
| 323 | Interior | Level 4 | Suites | Finishing | FIN-3 | finishing on 4th | 26-Nov-2024 | 10-Feb-2025 |
| 324 | Interior | Level 4 | Base and Hardware | Carpentry | CAR-1 | Install base and hardware on 4th | 20-Dec-2024 | 03-Jan-2025 |
| 325 | Interior | Level 4 | Cabinets | Carpentry | CAR-2 | Install cabinets on 4th | 11-Dec-2024 | 18-Dec-2024 |
| 326 | Interior | Level 4 | Flooring | Flooring | FLO-7 | Install flooring on 4th | 09-Dec-2024 | 16-Dec-2024 |
| 327 | Interior | Level 4 | Ceilings | Flooring | FLO-9 | Install sound bar 4th floor | 09-Sep-2024 | 10-Sep-2024 |
| 328 | Interior | Level 4 | Doors and Frames | Carpentry | CAR-4 | Install interior doors and case on 4th | 02-Dec-2024 | 06-Dec-2024 |
| 329 | Interior | Level 4 | Hallways and Stairwells | Drywall | DRY-8 | Load the board on floor and Board 4th floor hallways and stairwells | 08-Nov-2024 | 15-Nov-2024 |
| 330 | Interior | Level 4 | Walls / Ceilings | Drywall | DRY-8 | Load the board on floor and Board 4th floor walls | 08-Nov-2024 | 15-Nov-2024 |
| 331 | Interior | Level 4 | Exterior Walls | Drywall | DRY-8 | Load the board on floor and Board exterior walls on 4th and sheds | 08-Nov-2024 | 15-Nov-2024 |
| 332 | Interior | Level 4 | Countertops | Carpentry | CAR-5 | manufacturing and Install countertops on 4th | 02-Jan-2025 | 21-Jan-2025 |
| 333 | Exteriors | Outside Bldg | Mechanical Systems | Exteriors | EXT-8 | Exterior | 09-Aug-2024 | 05-May-2025 |
| 334 | Exteriors | Outside Bldg | Balconies | Exteriors | EXT-9 | Grind all balconys smooth | 09-Aug-2024 | 22-Aug-2024 |
| 335 | Interior | Level 4 | Suites | Mechanical | MCH-3 | Mechanical finishing on 4th | 21-Jan-2025 | 27-Jan-2025 |
| 336 | Pre-Construction | Precon | Mobilization | Precon Team | PREC-11 | De mobilization (checklist) | 05-Mar-2025 | 11-Mar-2025 |
| 337 | Interior | Level 4 | Hallways and Stairwells | Mechanical | MCH-4 | Mechanical rough in hallways stairwells on 4th | 21-Oct-2024 | 25-Oct-2024 |
| 338 | Sitework | Landscaping | Landscaping | Site Sub | SIT-9 | Rough grade landscaping | 04-Apr-2025 | 10-Apr-2025 |
| 339 | Interior | Level 4 | Suites | Mechanical | MCH-4 | Mechanical rough in on 4th | 21-Oct-2024 | 25-Oct-2024 |
| 340 | Sitework | Landscaping | Landscaping | Site Sub | SIT-10 | Install landscaping | 18-Apr-2025 | 01-May-2025 |
| 341 | Interior | Level 4 | Closets | Paint | PAI-3 | Paint 1st coat of color on 4th | 05-Dec-2024 | 10-Dec-2024 |
| 342 | Sitework | Landscaping | Signage | Site Sub | SIT-11 | Install building signage | 28-Feb-2025 | 28-Feb-2025 |
| 343 | Pre-Construction | Precon | Commissioning | Precon Team | PREC-12 | Hold Pre Kick-Off meeting with Engineers and Trades people | 28-Sep-2023 | 02-Oct-2023 |
| 344 | Interior | Level 4 | Suites | Flooring | FLO-11 | Layout suites 4th floor | 29-Jul-2024 | 01-Aug-2024 |
| 345 | Interior | Level 4 | Fire Systems | Paint | PAI-4 | Prime paint on 4th | 28-Nov-2024 | 03-Dec-2024 |
| 346 | Interior | Level 4 | Suites | Rough-In (General) | RI-1 | Rough in 4th floor | 19-Aug-2024 | 06-Dec-2024 |
| 347 | Foundation | Interior Bldg | Ceilings | Inspection | INS-11 | Geo Tech Engineer inspection | 18-Jan-2024 | 18-Jan-2024 |
| 348 | Exteriors | Level 3 | Exterior Walls | Exteriors | EXT-10 | Organize 3rd party building exterior review, including roof, siding and flashings | 19-Feb-2025 | 19-Feb-2025 |
| 349 | Foundation | Interior Bldg | Walls / Ceilings | Inspection | INS-12 | Rebar Inspection Structural Engineer | 01-Feb-2024 | 01-Feb-2024 |
| 350 | Foundation | Interior Bldg | Bathrooms | Inspection | INS-12 | Rebar inspection Structural Engineer | 28-Feb-2024 | 28-Feb-2024 |

| entry | phase | location | area | trade | activity_code | activity_name | start | finish |
| --- | --- | --- | --- | --- | --- | --- | --- | --- |
| 351 | Interior | Level 4 | Ceilings | Rough-In (General) | RI-1 | Rough in 4th floor ceiling | 05-Aug-2024 | 07-Oct-2024 |
| 352 | Interior | Level 4 | Exterior Walls | Rough-In (General) | RI-2 | Rough in exterior walls on 4th and sheds | 21-Oct-2024 | 31-Oct-2024 |
| 353 | Interior | Level 4 | Closets | Carpentry | CAR-6 | Spray out closet interiors and trim on 4th | 05-Dec-2024 | 10-Dec-2024 |
| 354 | Interior | Level 4 | Fire Systems | Sprinkler | SPR-1 | Sprinkler finishing on 4th | 21-Jan-2025 | 27-Jan-2025 |
| 355 | Interior | Level 4 | Common Areas | CX | CX- | Assign Unit Commissioning Inspection list on 4th | 07-Feb-2025 | 07-Feb-2025 |
| 356 | Pre-Construction | Precon | Structural | Precon Team | PREC-13 | Order Rebar (30 days before site delivery date required) | 08-Dec-2023 | 08-Dec-2023 |
| 357 | Interior | Level 4 | Hallways and Stairwells | Sprinkler | SPR-3 | Sprinkler rough in hallways stairwells on 4th | 23-Sep-2024 | 30-Sep-2024 |
| 358 | Interior | Level 4 | Suites | Sprinkler | SPR-3 | Sprinkler rough in on 4th | 23-Sep-2024 | 30-Sep-2024 |
| 359 | Interior | Level 4 | Walls / Ceilings | Drywall | DRY-9 | Steel stud install on 4th & drywall behind the tubs including fire wall taping if it is a fire wall | 18-Sep-2024 | 26-Sep-2024 |
| 360 | Interior | Level 4 | Ceilings | Drywall | DRY-11 | Tape 4th floor ceiling | 23-Sep-2024 | 04-Oct-2024 |
| 361 | Interior | Level 4 | Hallways and Stairwells | Drywall | DRY-11 | Tape 4th floor hallways and stair wells | 15-Nov-2024 | 28-Nov-2024 |
| 362 | Interior | Level 4 | Suites | Drywall | DRY-10 | Tape suites on 4th | 15-Nov-2024 | 28-Nov-2024 |
| 363 | Interior | Level 4 | Bathrooms | Plumbing | PLU-3 | Water dams 4th floor | 19-Aug-2024 | 23-Aug-2024 |
| 364 | Interior | Level 4 | Ceilings | Flooring | FLO-12 | Poly 4th floor ceiling | 05-Sep-2024 | 06-Sep-2024 |
| 365 | Pre-Construction | Precon | Training | Precon Team | PREC-14 | Organize site team to have training and certificates | 28-Sep-2023 | 28-Sep-2023 |
| 366 | Interior | Parkade | Parkade | Rough-In (General) | RI-1 | Rough in parkade slab | 12-Jun-2024 | 26-Jun-2024 |
| 367 | Pre-Construction | Precon | Locates | Precon Team | PREC-15 | Schedule locates to be done | 21-Dec-2023 | 27-Dec-2023 |
| 368 | Pre-Construction | Precon | Pile Contractor | Precon Team | PREC-16 | Schedule Pile contractor | 21-Dec-2023 | 21-Dec-2023 |
| 369 | Interior | Parkade | Parkade | Framing | FRA- | Framing parkade | 11-Apr-2024 | 16-Apr-2024 |
| 370 | Interior | Parkade | Parkade | Framing | FRA- | Frame parkade level | 11-Apr-2024 | 15-Apr-2024 |
| 371 | Interior | Parkade | Ceilings | Paint | PAI-1 | Paint underside of ceiling in parkade | 17-Jun-2024 | 17-Jun-2024 |
| 372 | Interior | Parkade | Parkade | Framing | FRA-2 | Frame and board Parkade beams | 16-Dec-2024 | 20-Dec-2024 |
| 373 | Interior | Parkade | Parkade | Framing | FRA-4 | Frame interior parkade walls | 19-Aug-2024 | 23-Aug-2024 |
| 374 | Interior | Parkade | Parkade | Drywall | DRY-10 | Tape parkade interior and exterior walls | 13-Dec-2024 | 23-Dec-2024 |
| 375 | Interior | Roof | Roof | Framing | FRA- | Roof trusses install | 09-Jul-2024 | 20-Aug-2024 |
| 376 | Interior | Roof | Roof | Framing | FRA- | Install roof trusses and sheeting and towers | 09-Jul-2024 | 06-Aug-2024 |
| 377 | Interior | Roof | Roof | Framing | FRA- | Assign roof trusses framing checklist | 07-Aug-2024 | 07-Aug-2024 |
