| entry | activity_id | activity_name | activity_status | finish | total_float | wbs_code | start | location |
| --- | --- | --- | --- | --- | --- | --- | --- | --- |
| 1 | CHI05-05-FC-F | Site Secured Finish (August 04, 2025) | Not Started | 04-Aug-25 17:00:00 | 0 | CHI05-PH2-FIT-BL-D5,2,2,1 |  |  |
| 2 | CHI05-05-NTP-S | Notice To Proceed | Not Started |  | 0 | CHI05-PH2-FIT-BL-D5,2,2,1 | 02-Oct-24 08:00:00 |  |
| 3 | CHI05-03-L1CX-S | Start L1 CX (Red Tag) for Colo 3 | Not Started |  | 95 | CHI05-PH2-FIT-BL-D5,2,2,2 | 22-Jan-25 08:00:00 | COLO3 |
| 4 | CHI05-03-ROJ-F | Complete Last ROJ Arrival for Colo 3 | Not Started | 02-Jan-25 17:00:00 | 119 | CHI05-PH2-FIT-BL-D5,2,2,2 |  | COLO3 |
| 5 | CHI05-03-L2CX-S | Start L2 CX (Yellow Tag) for Colo 3 | Not Started |  | 77 | CHI05-PH2-FIT-BL-D5,2,2,2 | 18-Feb-25 08:00:00 | COLO3 |
| 6 | CHI05-03-L1CX-F | Complete L1 Cx (All Red Tags/ROJ) for Colo 3 | Not Started | 07-Mar-25 17:00:00 | 63 | CHI05-PH2-FIT-BL-D5,2,2,2 |  | COLO3 |
| 7 | CHI05-03-L2CX-F | Complete L2 CX (Yellow Tag) for Colo 3 | Not Started | 06-May-25 17:00:00 | 52 | CHI05-PH2-FIT-BL-D5,2,2,2 |  | COLO3 |
| 8 | CHI05-03-POW-F | Power-ON Utility for Colo 3 | Not Started | 28-Feb-25 17:00:00 | 51 | CHI05-PH2-FIT-BL-D5,2,2,2 |  | COLO3 |
| 9 | CHI05-03-L3CX-S | Start L3 Cx (Green tag) for Colo 3 | Not Started |  | 56 | CHI05-PH2-FIT-BL-D5,2,2,2 | 26-Mar-25 08:00:00 | COLO3 |
| 10 | CHI05-03-SSC-F | Complete Phase 3 Security System Test for Colo 3 | Not Started | 10-Jul-25 17:00:00 | 17 | CHI05-PH2-FIT-BL-D5,2,2,2 |  | COLO3 |
| 11 | CHI05-03-MEQ-S | Start-up Mechanical Equipment for Colo 3 | Not Started |  | 72 | CHI05-PH2-FIT-BL-D5,2,2,2 | 22-Jan-25 08:00:00 | COLO3 |
| 12 | CHI05-03-CSA-F | Interior Finishes/CSA Complete for Colo 3 | Not Started | 25-Mar-25 17:00:00 | 56 | CHI05-PH2-FIT-BL-D5,2,2,2 |  | COLO3 |
| 13 | CHI05-03-GEN-F | Generators Ready Fuel for Colo 3 | Not Started | 02-Oct-24 17:00:00 | 109 | CHI05-PH2-FIT-BL-D5,2,2,2 |  | COLO3 |
| 14 | CHI05-03-MEP-F | MEP Rough-in Complete for Colo 3 | Not Started | 11-Feb-25 17:00:00 | 76 | CHI05-PH2-FIT-BL-D5,2,2,2 |  | COLO3 |
| 15 | CHI05-03-L3CX-F | Complete L3 CX (Green Tag) for Colo 3 | Not Started | 27-May-25 17:00:00 | 38 | CHI05-PH2-FIT-BL-D5,2,2,2 |  | COLO3 |
| 16 | CHI05-03-BAS-F | Complete BAS SAT for Colo 3 | Not Started | 25-Mar-25 17:00:00 | 56 | CHI05-PH2-FIT-BL-D5,2,2,2 |  | COLO3 |
| 17 | CHI05-03-EPMS-F | Complete EPMS SAT for Colo 3 | Not Started | 25-Mar-25 17:00:00 | 56 | CHI05-PH2-FIT-BL-D5,2,2,2 |  | COLO3 |
| 18 | CHI05-03-FIRE-F | Complete Fire Alarm for Colo 3 | Not Started | 25-Mar-25 17:00:00 | 56 | CHI05-PH2-FIT-BL-D5,2,2,2 |  | COLO3 |
| 19 | CHI05-03-L4CX-F | Complete L4 Cx (Blue Tag) for Colo 3 | Not Started | 30-Jun-25 17:00:00 | 17 | CHI05-PH2-FIT-BL-D5,2,2,2 |  | COLO3 |
| 20 | CHI05-03-L5CX-F | Complete L5/IST (White Tag) for Colo 3 | Not Started | 02-Jul-25 17:00:00 | 17 | CHI05-PH2-FIT-BL-D5,2,2,2 |  |  |
| 21 | CHI05-03-RNI-F | Complete Ready for Network Install (RNI) For Colo 3 | Not Started | 03-Jun-25 17:00:00 | 38 | CHI05-PH2-FIT-BL-D5,2,2,2 |  | COLO3 |
| 22 | CHI05-03-CO-F | Complete CorpNet For Colo 3 | Not Started | 27-May-25 17:00:00 | 48 | CHI05-PH2-FIT-BL-D5,2,2,2 |  | COLO3 |
| 23 | CHI05-05-ROJ-F | Complete Last ROJ Arrival for Colo 5 | Not Started | 02-Jan-25 17:00:00 | 119 | CHI05-PH2-FIT-BL-D5,2,2,3 |  | COLO5 |
| 24 | CHI05-05-L2CX-S | Start L2 CX (Yellow Tag) for Colo 5 | Not Started |  | 77 | CHI05-PH2-FIT-BL-D5,2,2,3 | 18-Feb-25 08:00:00 | COLO5 |
| 25 | CHI05-05-L1CX-F | Complete L1 Cx (All Red Tags/ROJ) for Colo 5 | Not Started | 25-Feb-25 17:00:00 | 49 | CHI05-PH2-FIT-BL-D5,2,2,3 |  | COLO5 |
| 26 | CHI05-05-L2CX-F | Complete L2 CX (Yellow Tag) for Colo 5 | Not Started | 17-Apr-25 17:00:00 | 39 | CHI05-PH2-FIT-BL-D5,2,2,3 |  | COLO5 |
| 27 | CHI05-05-POW-F | Power-ON Utility for Colo 5 | Not Started | 28-Feb-25 17:00:00 | 73 | CHI05-PH2-FIT-BL-D5,2,2,3 |  | COLO5 |
| 28 | CHI05-05-L3CX-S | Start L3 Cx (Green tag) for Colo 5 | Not Started |  | 73 | CHI05-PH2-FIT-BL-D5,2,2,3 | 03-Mar-25 08:00:00 | COLO5 |
| 29 | CHI05-05-MEQ-S | Start-up Mechanical Equipment for Colo 5 | Not Started |  | 97 | CHI05-PH2-FIT-BL-D5,2,2,3 | 26-Dec-24 08:00:00 | COLO5 |
| 30 | CHI05-05-CSA-F | Interior Finishes/CSA Complete for Colo 5 | Not Started | 13-Mar-25 17:00:00 | 64 | CHI05-PH2-FIT-BL-D5,2,2,3 |  | COLO5 |
| 31 | CHI05-05-GEN-F | Generators Ready Fuel for Colo 5 | Not Started | 08-Oct-24 17:00:00 | 112 | CHI05-PH2-FIT-BL-D5,2,2,3 |  | COLO5 |
| 32 | CHI05-05-MEP-F | MEP Rough-in Complete for Colo 5 | Not Started | 08-Jan-25 17:00:00 | 100 | CHI05-PH2-FIT-BL-D5,2,2,3 |  | COLO5 |
| 33 | CHI05-05-L3CX-F | Complete L3 CX (Green Tag) for Colo 5 | Not Started | 30-Apr-25 17:00:00 | 35 | CHI05-PH2-FIT-BL-D5,2,2,3 |  | COLO5 |
| 34 | CHI05-05-BAS-F | Complete BAS SAT for Colo 5 | Not Started | 24-Mar-25 17:00:00 | 57 | CHI05-PH2-FIT-BL-D5,2,2,3 |  | COLO5 |
| 35 | CHI05-05-EPMS-F | Complete EPMS SAT for Colo 5 | Not Started | 24-Mar-25 17:00:00 | 57 | CHI05-PH2-FIT-BL-D5,2,2,3 |  | COLO5 |
| 36 | CHI05-05-FIR-F | Complete Fire Alarm for Colo 5 | Not Started | 24-Mar-25 17:00:00 | 57 | CHI05-PH2-FIT-BL-D5,2,2,3 |  | COLO5 |
| 37 | CHI05-05-SSC-F | Complete Phase 3 Security System Test for Colo 5 | Not Started | 13-Jun-25 17:00:00 | 35 | CHI05-PH2-FIT-BL-D5,2,2,3 |  | COLO5 |
| 38 | CHI05-05-L4CX-F | Complete L4 Cx (Blue Tag) for Colo 5 | Not Started | 04-Jun-25 17:00:00 | 35 | CHI05-PH2-FIT-BL-D5,2,2,3 |  | COLO5 |
| 39 | CHI05-05-L5CX-F | Complete L5/IST (White Tag) for Colo 5 | Not Started | 06-Jun-25 17:00:00 | 35 | CHI05-PH2-FIT-BL-D5,2,2,3 |  |  |
| 40 | CHI05-05-L1CX-S | Start L1 CX (Red Tag) for Colo 5 | Not Started |  | 74 | CHI05-PH2-FIT-BL-D5,2,2,3 | 21-Jan-25 08:00:00 | COLO5 |
| 41 | CHI05-05-RNI-F | Complete Ready for Network Install (RNI) For Colo 5 | Not Started | 07-May-25 17:00:00 | 56 | CHI05-PH2-FIT-BL-D5,2,2,3 |  | COLO5 |
| 42 | CHI05-05-CO-F | Complete CorpNet For Colo 5 | Not Started | 30-Apr-25 17:00:00 | 66 | CHI05-PH2-FIT-BL-D5,2,2,3 |  | COLO5 |
| 43 | CHI05-04-ROJ-F | Complete Last ROJ Arrival for Colo 4 | Not Started | 06-Jan-25 17:00:00 | 122 | CHI05-PH2-FIT-BL-D5,2,2,4 |  | COLO4 |
| 44 | CHI05-04-L2CX-S | Start L2 CX (Yellow Tag) for Colo 4 | Not Started |  | 82 | CHI05-PH2-FIT-BL-D5,2,2,4 | 18-Feb-25 08:00:00 | COLO4 |
| 45 | CHI05-04-L1CX-F | Complete L1 Cx (All Red Tags/ROJ) for Colo 4 | Not Started | 14-Apr-25 17:00:00 | 14 | CHI05-PH2-FIT-BL-D5,2,2,4 |  | COLO4 |
| 46 | CHI05-04-L2CX-F | Complete L2 CX (Yellow Tag) for Colo 4 | Not Started | 05-Jun-25 17:00:00 | 15 | CHI05-PH2-FIT-BL-D5,2,2,4 |  | COLO4 |
| 47 | CHI05-04-POW-F | Power-ON Utility for Colo 4 | Not Started | 28-Feb-25 17:00:00 | 58 | CHI05-PH2-FIT-BL-D5,2,2,4 |  | COLO4 |
| 48 | CHI05-04-L3CX-S | Start L3 Cx (Green tag) for Colo 4 | Not Started |  | 28 | CHI05-PH2-FIT-BL-D5,2,2,4 | 12-May-25 08:00:00 | COLO4 |
| 49 | CHI05-04-SSC-F | Complete Phase 3 Security System Test for Colo 4 | Not Started | 11-Aug-25 17:00:00 | 0 | CHI05-PH2-FIT-BL-D5,2,2,4 |  | COLO4 |
| 50 | CHI05-04-MEQ-S | Start-up Mechanical Equipment for Colo 4 | Not Started |  | 22 | CHI05-PH2-FIT-BL-D5,2,2,4 | 10-Apr-25 08:00:00 | COLO4 |
| 51 | CHI05-04-CSA-F | Interior Finishes/CSA Complete for Colo 4 | Not Started | 30-Apr-25 17:00:00 | 35 | CHI05-PH2-FIT-BL-D5,2,2,4 |  | COLO4 |
| 52 | CHI05-04-GEN-F | Generators Ready Fuel for Colo 4 | Not Started | 04-Oct-24 17:00:00 | 113 | CHI05-PH2-FIT-BL-D5,2,2,4 |  | COLO4 |
| 53 | CHI05-04-MEP-F | MEP Rough-in Complete for Colo 4 | Not Started | 04-Apr-25 17:00:00 | 43 | CHI05-PH2-FIT-BL-D5,2,2,4 |  | COLO4 |
| 54 | CHI05-04-L3CX-F | Complete L3 CX (Green Tag) for Colo 4 | Not Started | 26-Jun-25 17:00:00 | 0 | CHI05-PH2-FIT-BL-D5,2,2,4 |  | COLO4 |
| 55 | CHI05-04-BAS-F | Complete BAS SAT for Colo 4 | Not Started | 09-May-25 17:00:00 | 28 | CHI05-PH2-FIT-BL-D5,2,2,4 |  | COLO4 |
| 56 | CHI05-04-EPMS-F | Complete EPMS SAT for Colo 4 | Not Started | 09-May-25 17:00:00 | 28 | CHI05-PH2-FIT-BL-D5,2,2,4 |  | COLO4 |
| 57 | CHI05-04-FIRE-F | Complete Fire Alarm for Colo 4 | Not Started | 09-May-25 17:00:00 | 28 | CHI05-PH2-FIT-BL-D5,2,2,4 |  | COLO4 |
| 58 | CHI05-04-L4CX-F | Complete L4 Cx (Blue Tag) for Colo 4 | Not Started | 31-Jul-25 17:00:00 | 0 | CHI05-PH2-FIT-BL-D5,2,2,4 |  | COLO4 |
| 59 | CHI05-04-L5CX-F | Complete L5/IST (White Tag) for Colo 4 | Not Started | 04-Aug-25 17:00:00 | 0 | CHI05-PH2-FIT-BL-D5,2,2,4 |  |  |
| 60 | CHI05-04-L1CX-S | Start L1 CX (Red Tag) for Colo 4 | Not Started |  | 72 | CHI05-PH2-FIT-BL-D5,2,2,4 | 22-Jan-25 08:00:00 | COLO4 |
| 61 | CHI05-04-RNI-F | Complete Ready for Network Install (RNI) For Colo 4 | Not Started | 03-Jul-25 17:00:00 | 21 | CHI05-PH2-FIT-BL-D5,2,2,4 |  | COLO4 |
| 62 | CHI05-04-CO-F | Complete CorpNet For Colo 4 | Not Started | 26-Jun-25 17:00:00 | 26 | CHI05-PH2-FIT-BL-D5,2,2,4 |  | COLO4 |
| 63 | CHI05-02-L1CX-S | Start L1 CX (Red Tag) for Colo 2 | Not Started |  | 95 | CHI05-PH2-FIT-BL-D5,2,2,5 | 22-Jan-25 08:00:00 | COLO2 |
| 64 | CHI05-02-ROJ-F | Complete Last ROJ Arrival for Colo 2 | Not Started | 10-Feb-25 17:00:00 | 92 | CHI05-PH2-FIT-BL-D5,2,2,5 |  | COLO2 |
| 65 | CHI05-02-L2CX-S | Start L2 CX (Yellow Tag) for Colo 2 | Not Started |  | 77 | CHI05-PH2-FIT-BL-D5,2,2,5 | 18-Feb-25 08:00:00 | COLO2 |
| 66 | CHI05-02-L1CX-F | Complete L1 Cx (All Red Tags/ROJ) for Colo 2 | Not Started | 05-Feb-25 17:00:00 | 90 | CHI05-PH2-FIT-BL-D5,2,2,5 |  | COLO2 |
| 67 | CHI05-02-L2CX-F | Complete L2 CX (Yellow Tag) for Colo 2 | Not Started | 14-Apr-25 17:00:00 | 47 | CHI05-PH2-FIT-BL-D5,2,2,5 |  | COLO2 |
| 68 | CHI05-02-POW-F | Power-ON Utility for Colo 2 | Not Started | 28-Feb-25 17:00:00 | 29 | CHI05-PH2-FIT-BL-D5,2,2,5 |  | COLO2 |
| 69 | CHI05-02-L3CX-S | Start L3 Cx (Green tag) for Colo 2 | Not Started |  | 73 | CHI05-PH2-FIT-BL-D5,2,2,5 | 03-Mar-25 08:00:00 | COLO2 |
| 70 | CHI05-02-MEQ-S | Start-up Mechanical Equipment for Colo 2 | Not Started |  | 96 | CHI05-PH2-FIT-BL-D5,2,2,5 | 27-Dec-24 08:00:00 | COLO2 |

| entry | activity_id | activity_name | activity_status | finish | total_float | wbs_code | start | location | sub_location |
| --- | --- | --- | --- | --- | --- | --- | --- | --- | --- |
| 71 | CHI05-02-CSA-F | Interior Finishes/CSA Complete for Colo 2 | Not Started | 21-Feb-25 17:00:00 | 78 | CHI05-PH2-FIT-BL-D5,2,2,5 |  | COLO2 |  |
| 72 | CHI05-02-GEN-F | Generators Ready Fuel for Colo 2 | Not Started | 30-Sep-24 17:00:00 | 122 | CHI05-PH2-FIT-BL-D5,2,2,5 |  | COLO2 |  |
| 73 | CHI05-02-MEP-F | MEP Rough-in Complete for Colo 2 | Not Started | 16-Jan-25 17:00:00 | 94 | CHI05-PH2-FIT-BL-D5,2,2,5 |  | COLO2 |  |
| 74 | CHI05-02-L3CX-F | Complete L3 CX (Green Tag) for Colo 2 | Not Started | 30-Apr-25 17:00:00 | 35 | CHI05-PH2-FIT-BL-D5,2,2,5 |  | COLO2 |  |
| 75 | CHI05-02-BAS-F | Complete BAS SAT for Colo 2 | Not Started | 24-Mar-25 17:00:00 | 57 | CHI05-PH2-FIT-BL-D5,2,2,5 |  | COLO2 |  |
| 76 | CHI05-02-EPMS-F | Complete EPMS SAT for Colo 2 | Not Started | 24-Mar-25 17:00:00 | 57 | CHI05-PH2-FIT-BL-D5,2,2,5 |  | COLO2 |  |
| 77 | CHI05-02-FIRE-F | Complete Fire Alarm for Colo 2 | Not Started | 24-Mar-25 17:00:00 | 57 | CHI05-PH2-FIT-BL-D5,2,2,5 |  | COLO2 |  |
| 78 | CHI05-02-SSC-F | Complete Phase 3 Security System Test for Colo 2 | Not Started | 13-Jun-25 17:00:00 | 35 | CHI05-PH2-FIT-BL-D5,2,2,5 |  | COLO2 |  |
| 79 | CHI05-02-L4CX-F | Complete L4 Cx (Blue Tag) for Colo 2 | Not Started | 04-Jun-25 17:00:00 | 35 | CHI05-PH2-FIT-BL-D5,2,2,5 |  | COLO2 |  |
| 80 | CHI05-02-L5CX-F | Complete L5/IST (White Tag) for Colo 2 | Not Started | 06-Jun-25 17:00:00 | 35 | CHI05-PH2-FIT-BL-D5,2,2,5 |  |  |  |
| 81 | CHI05-02-RNI-F | Complete Ready for Network Install (RNI) For Colo 2 | Not Started | 07-May-25 17:00:00 | 56 | CHI05-PH2-FIT-BL-D5,2,2,5 |  | COLO2 |  |
| 82 | CHI05-02-CO-F | Complete CorpNet For Colo 2 | Not Started | 30-Apr-25 17:00:00 | 66 | CHI05-PH2-FIT-BL-D5,2,2,5 |  | COLO2 |  |
| 83 | CHI05-02-01-MG-1000 | Install Dampers and actuators at Louvers - Upper level (RED) - COLO2 Cell 1 - MG | Not Started | 11-Oct-24 17:00:00 | 0 | CHI05-PH2-FIT-BL-D5,3,3,5,6,2 | 07-Oct-24 08:00:00 | UPPERLEVEL(RED) |  |
| 84 | CHI05-02-01-MG-1010 | Install Dampers and actuators at Louvers - Lower level (OA) - COLO2 Cell 1 - MG | Not Started | 15-Oct-24 17:00:00 | 0 | CHI05-PH2-FIT-BL-D5,3,3,5,6,2 | 09-Oct-24 08:00:00 | LOWERLEVEL(OA) |  |
| 85 | CHI05-02-01-MG-1020 | Overhead MEP Installation - COLO2 Cell 1 - MG | Not Started | 29-Oct-24 17:00:00 | 48 | CHI05-PH2-FIT-BL-D5,3,3,5,6,2 | 16-Oct-24 08:00:00 | COLO2 | CELL_1 |
| 86 | CHI05-02-01-MG-1030 | Deliver AHU into Mech. Gallery - COLO2 Cell 1 - MG | Not Started | 31-Oct-24 17:00:00 | 48 | CHI05-PH2-FIT-BL-D5,3,3,5,6,2 | 30-Oct-24 08:00:00 | COLO2 | CELL_1 |
| 87 | CHI05-02-01-MG-1040 | Install Walls and Primer Paint - COLO2 Cell 1 - MG | Not Started | 14-Nov-24 17:00:00 | 48 | CHI05-PH2-FIT-BL-D5,3,3,5,6,2 | 01-Nov-24 08:00:00 | COLO2 | CELL_1 |
| 88 | CHI05-02-01-MG-1060 | Placing the AHU - COLO2 Cell 1 - MG | Not Started | 26-Nov-24 12:00:00 | 94 | CHI05-PH2-FIT-BL-D5,3,3,5,6,2 | 22-Nov-24 08:00:00 | COLO2 | CELL_1 |
| 89 | CHI05-02-01-MG-1050 | Layout Ceiling and install Pencile Rod - COLO2 Cell 1 - MG | Not Started | 15-Nov-24 17:00:00 | 98 | CHI05-PH2-FIT-BL-D5,3,3,5,6,2 | 15-Nov-24 08:00:00 | COLO2 | CELL_1 |
| 90 | CHI05-02-01-MG-1070 | Piping and Electrical Termination to AHUs - COLO2 Cell 1 - MG | Not Started | 11-Dec-24 12:00:00 | 94 | CHI05-PH2-FIT-BL-D5,3,3,5,6,2 | 26-Nov-24 13:00:00 | COLO2 | CELL_1 |
| 91 | CHI05-02-01-MG-1080 | Pipe Testing - COLO2 Cell 1 - MG | Not Started | 13-Dec-24 12:00:00 | 100 | CHI05-PH2-FIT-BL-D5,3,3,5,6,2 | 11-Dec-24 13:00:00 | COLO2 | CELL_1 |
| 92 | CHI05-02-01-MG-1090 | Install ceiling and Light Fittings - COLO2 Cell 1 - MG | Not Started | 26-Dec-24 12:00:00 | 100 | CHI05-PH2-FIT-BL-D5,3,3,5,6,2 | 13-Dec-24 13:00:00 | COLO2 | CELL_1 |
| 93 | CHI05-02-01-MG-1100 | Trim out MEP - COLO2 Cell 1 - MG | Not Started | 26-Dec-24 12:00:00 | 109 | CHI05-PH2-FIT-BL-D5,3,3,5,6,2 | 18-Dec-24 13:00:00 | COLO2 | CELL_1 |
| 94 | CHI05-02-01-MG-1045 | Post Wall Overhead MEP - COLO2 Cell 1 - MG | Not Started | 06-Dec-24 17:00:00 | 94 | CHI05-PH2-FIT-BL-D5,3,3,5,6,2 | 15-Nov-24 08:00:00 | COLO2 | CELL_1 |
| 95 | CHI05-02-01-DH-1050 | Cable Pulling at PDU & Busway - COLO2 Cell 1 - DH | Not Started | 20-Jan-25 17:00:00 | 42 | CHI05-PH2-FIT-BL-D5,3,3,5,6,1 | 30-Dec-24 08:00:00 | COLO2 | CELL_1 |
| 96 | CHI05-02-01-DH-1000 | Overhead MEP and Hangers (Above Ceiling) - COLO2 Cell 1 - DH | Not Started | 22-Oct-24 17:00:00 | 68 | CHI05-PH2-FIT-BL-D5,3,3,5,6,1 | 07-Oct-24 08:00:00 | COLO2 | CELL_1 |
| 97 | CHI05-02-01-DH-1060 | HAC install and Rise - COLO2 Cell 1 - DH | Not Started | 26-Dec-24 17:00:00 | 78 | CHI05-PH2-FIT-BL-D5,3,3,5,6,1 | 19-Dec-24 08:00:00 | COLO2 | CELL_1 |
| 98 | CHI05-02-01-DH-1070 | Termination at PDU & Busway- COLO2 Cell 1 - DH | Not Started | 03-Jan-25 17:00:00 | 53 | CHI05-PH2-FIT-BL-D5,3,3,5,6,1 | 19-Dec-24 08:00:00 | COLO2 | CELL_1 |
| 99 | CHI05-02-01-DH-1010 | Security Screen Installation - COLO2 Cell 1 - DH | Not Started | 19-Nov-24 17:00:00 | 48 | CHI05-PH2-FIT-BL-D5,3,3,5,6,1 | 15-Nov-24 08:00:00 | COLO2 | CELL_1 |
| 100 | CHI05-02-01-DH-1020 | Ceiling Grid and Tile - COLO2 Cell 1 - DH | Not Started | 26-Nov-24 17:00:00 | 48 | CHI05-PH2-FIT-BL-D5,3,3,5,6,1 | 20-Nov-24 08:00:00 | COLO2 | CELL_1 |
| 101 | CHI05-02-01-DH-1040 | Install PDU's - COLO2 Cell 1 - DH | Not Started | 18-Dec-24 17:00:00 | 48 | CHI05-PH2-FIT-BL-D5,3,3,5,6,1 | 12-Dec-24 08:00:00 | COLO2 | CELL_1 |
| 102 | CHI05-02-01-DH-1030 | Overhead MEP Installation (Below Ceiling) - COLO2 Cell 1 - DH | Not Started | 11-Dec-24 17:00:00 | 48 | CHI05-PH2-FIT-BL-D5,3,3,5,6,1 | 27-Nov-24 08:00:00 | COLO2 | CELL_1 |
| 103 | CHI05-02-01-DH-1080 | Install Low Voltage Wiring and Fiber Optic - COLO2 Cell 1 - DH | Not Started | 10-Jan-25 17:00:00 | 78 | CHI05-PH2-FIT-BL-D5,3,3,5,6,1 | 27-Dec-24 08:00:00 | COLO2 | CELL_1 |
| 104 | CHI05-02-01-DH-1035 | HAC Placing - COLO2 Cell 1 - DH | Not Started | 18-Dec-24 17:00:00 | 78 | CHI05-PH2-FIT-BL-D5,3,3,5,6,1 | 12-Dec-24 08:00:00 | COLO2 | CELL_1 |
| 105 | CHI05-02-01-DH-1090 | Finishes and Signage - COLO2 Cell 1 - DH | Not Started | 20-Jan-25 17:00:00 | 123 | CHI05-PH2-FIT-BL-D5,3,3,5,6,1 | 14-Jan-25 08:00:00 | COLO2 | CELL_1 |
| 106 | CHI05-02-01-L1-1140 | Interior - L1 UPS - COLO2 Cell 1 | Not Started | 02-Jan-25 17:00:00 | 87 | CHI05-PH2-FIT-BL-D5,3,3,5,6,4,1 | 02-Jan-25 08:00:00 | COLO2 | CELL_1 |
| 107 | CHI05-02-01-L1-1150 | Interior - L1 MSB - COLO2 Cell 1 | Not Started | 03-Jan-25 17:00:00 | 93 | CHI05-PH2-FIT-BL-D5,3,3,5,6,4,1 | 03-Jan-25 08:00:00 | COLO2 | CELL_1 |
| 108 | CHI05-02-01-L1-1160 | Interior - L1 PDUs - COLO2 Cell 1 | Not Started | 06-Jan-25 17:00:00 | 97 | CHI05-PH2-FIT-BL-D5,3,3,5,6,4,1 | 06-Jan-25 08:00:00 | COLO2 | CELL_1 |
| 109 | CHI05-02-01-L1-1170 | Interior - L1 AHUs - COLO2 Cell 1 | Not Started | 08-Jan-25 17:00:00 | 105 | CHI05-PH2-FIT-BL-D5,3,3,5,6,4,1 | 08-Jan-25 08:00:00 | COLO2 | CELL_1 |
| 110 | CHI05-02-01-L1-1180 | Interior - L1 ATSs - COLO2 Cell 1 | Not Started | 07-Jan-25 17:00:00 | 101 | CHI05-PH2-FIT-BL-D5,3,3,5,6,4,1 | 07-Jan-25 08:00:00 | COLO2 | CELL_1 |
| 111 | CHI05-02-01-L1-1190 | Interior - L1 Busway - COLO2 Cell 1 | Not Started | 07-Jan-25 17:00:00 | 101 | CHI05-PH2-FIT-BL-D5,3,3,5,6,4,1 | 07-Jan-25 08:00:00 | COLO2 | CELL_1 |
| 112 | CHI05-02-01-L1-1250 | Interior - L1 ADP - COLO2 Cell 1 | Not Started | 06-Jan-25 17:00:00 | 97 | CHI05-PH2-FIT-BL-D5,3,3,5,6,4,1 | 06-Jan-25 08:00:00 | COLO2 | CELL_1 |
| 113 | CHI05-02-01-L2-1260 | Interior - L2 UPS - COLO2 Cell 1 | Not Started | 03-Mar-25 17:00:00 | 52 | CHI05-PH2-FIT-BL-D5,3,3,5,6,4,2 | 25-Feb-25 08:00:00 | COLO2 | CELL_1 |
| 114 | CHI05-02-01-L2-1270 | Interior - L2 MSB - COLO2 Cell 1 | Not Started | 10-Mar-25 17:00:00 | 52 | CHI05-PH2-FIT-BL-D5,3,3,5,6,4,2 | 04-Mar-25 08:00:00 | COLO2 | CELL_1 |
| 115 | CHI05-02-01-L2-1280 | Interior - L2 PDUs - COLO2 Cell 1 | Not Started | 17-Mar-25 17:00:00 | 52 | CHI05-PH2-FIT-BL-D5,3,3,5,6,4,2 | 11-Mar-25 08:00:00 | COLO2 | CELL_1 |
| 116 | CHI05-02-01-L2-1290 | Interior - L2 AHUs - COLO2 Cell 1 | Not Started | 31-Mar-25 17:00:00 | 52 | CHI05-PH2-FIT-BL-D5,3,3,5,6,4,2 | 25-Mar-25 08:00:00 | COLO2 | CELL_1 |
| 117 | CHI05-02-01-L2-1300 | Interior - L2 ATSs - COLO2 Cell 1 | Not Started | 24-Mar-25 17:00:00 | 52 | CHI05-PH2-FIT-BL-D5,3,3,5,6,4,2 | 18-Mar-25 08:00:00 | COLO2 | CELL_1 |
| 118 | CHI05-02-01-L2-1310 | Interior - L2 Busway - COLO2 Cell 1 | Not Started | 24-Mar-25 17:00:00 | 52 | CHI05-PH2-FIT-BL-D5,3,3,5,6,4,2 | 18-Mar-25 08:00:00 | COLO2 | CELL_1 |
| 119 | CHI05-02-01-L2-1370 | Interior - L2 ADP - COLO2 Cell 1 | Not Started | 17-Mar-25 17:00:00 | 52 | CHI05-PH2-FIT-BL-D5,3,3,5,6,4,2 | 11-Mar-25 08:00:00 | COLO2 | CELL_1 |
| 120 | CHI05-02-01-L3-1380 | Interior - L3 UPS - COLO2 Cell 1 | Not Started | 31-Mar-25 17:00:00 | 37 | CHI05-PH2-FIT-BL-D5,3,3,5,6,4,3 | 25-Mar-25 08:00:00 | COLO2 | CELL_1 |
| 121 | CHI05-02-01-L3-1390 | Interior - L3 MSB - COLO2 Cell 1 | Not Started | 07-Apr-25 17:00:00 | 37 | CHI05-PH2-FIT-BL-D5,3,3,5,6,4,3 | 01-Apr-25 08:00:00 | COLO2 | CELL_1 |
| 122 | CHI05-02-01-L3-1400 | Interior - L3 PDUs - COLO2 Cell 1 | Not Started | 14-Apr-25 17:00:00 | 42 | CHI05-PH2-FIT-BL-D5,3,3,5,6,4,3 | 08-Apr-25 08:00:00 | COLO2 | CELL_1 |
| 123 | CHI05-02-01-L3-1410 | Interior - L3 AHUs - COLO2 Cell 1 | Not Started | 28-Apr-25 17:00:00 | 37 | CHI05-PH2-FIT-BL-D5,3,3,5,6,4,3 | 22-Apr-25 08:00:00 | COLO2 | CELL_1 |
| 124 | CHI05-02-01-L3-1420 | Interior - L3 ATSs - COLO2 Cell 1 | Not Started | 21-Apr-25 17:00:00 | 37 | CHI05-PH2-FIT-BL-D5,3,3,5,6,4,3 | 15-Apr-25 08:00:00 | COLO2 | CELL_1 |
| 125 | CHI05-02-01-L3-1430 | Interior - L3 Busway - COLO2 Cell 1 | Not Started | 21-Apr-25 17:00:00 | 42 | CHI05-PH2-FIT-BL-D5,3,3,5,6,4,3 | 15-Apr-25 08:00:00 | COLO2 | CELL_1 |
| 126 | CHI05-02-01-L3-1490 | Interior - L3 ADP - COLO2 Cell 1 | Not Started | 14-Apr-25 17:00:00 | 37 | CHI05-PH2-FIT-BL-D5,3,3,5,6,4,3 | 08-Apr-25 08:00:00 | COLO2 | CELL_1 |
| 127 | CHI05-02-01-ER-1000 | Install Walls and Primer Paint - COLO2 Cell 1 - ER | Not Started | 18-Oct-24 17:00:00 | 46 | CHI05-PH2-FIT-BL-D5,3,3,5,6,5 | 07-Oct-24 08:00:00 | COLO2 | CELL_1 |
| 128 | CHI05-02-01-ER-1020 | Sprinklers and Overhead MEP (Above Ceiling) - COLO2 Cell 1 - ER | Not Started | 05-Nov-24 17:00:00 | 46 | CHI05-PH2-FIT-BL-D5,3,3,5,6,5 | 23-Oct-24 08:00:00 | COLO2 | CELL_1 |
| 129 | CHI05-02-01-ER-1010 | Install Upper Screens - COLO2 Cell 1 - ER | Not Started | 22-Oct-24 17:00:00 | 46 | CHI05-PH2-FIT-BL-D5,3,3,5,6,5 | 16-Oct-24 08:00:00 | COLO2 | CELL_1 |
| 130 | CHI05-02-01-ER-1030 | Install Ceiling - COLO2 Cell 1 - ER | Not Started | 08-Nov-24 17:00:00 | 46 | CHI05-PH2-FIT-BL-D5,3,3,5,6,5 | 06-Nov-24 08:00:00 | COLO2 | CELL_1 |
| 131 | CHI05-02-01-ER-1040 | Below Ceiling MEP Rough In - COLO2 Cell 1 - ER | Not Started | 03-Dec-24 17:00:00 | 40 | CHI05-PH2-FIT-BL-D5,3,3,5,6,5 | 19-Nov-24 08:00:00 | COLO2 | CELL_1 |
| 132 | CHI05-02-01-ER-1050 | Installation of ADP & ATS - COLO2 Cell 1 - ER | Not Started | 05-Dec-24 17:00:00 | 94 | CHI05-PH2-FIT-BL-D5,3,3,5,6,5 | 29-Nov-24 08:00:00 | COLO2 | CELL_1 |
| 133 | CHI05-02-01-ER-1070 | Installation of UPS Equipment - COLO2 Cell 1 - ER | Not Started | 10-Dec-24 17:00:00 | 55 | CHI05-PH2-FIT-BL-D5,3,3,5,6,5 | 04-Dec-24 08:00:00 | COLO2 | CELL_1 |
| 134 | CHI05-02-01-ER-1060 | Connet to Cable tray and conduit equipment - COLO2 Cell 1 - ER | Not Started | 09-Dec-24 17:00:00 | 104 | CHI05-PH2-FIT-BL-D5,3,3,5,6,5 | 03-Dec-24 08:00:00 | COLO2 | CELL_1 |
| 135 | CHI05-02-01-ER-1080 | Cable Pulling at Elec. Equipment - COLO2 Cell 1 - ER | Not Started | 09-Jan-25 17:00:00 | 98 | CHI05-PH2-FIT-BL-D5,3,3,5,6,5 | 18-Dec-24 08:00:00 | COLO2 | CELL_1 |
| 136 | CHI05-02-01-ER-1090 | Door Frame Installation - COLO2 Cell 1 - ER | Not Started | 09-Jan-25 17:00:00 | 67 | CHI05-PH2-FIT-BL-D5,3,3,5,6,5 | 03-Jan-25 08:00:00 | COLO2 | CELL_1 |
| 137 | CHI05-02-01-ER-1100 | Finishes and Signage - COLO2 Cell 1 - ER | Not Started | 16-Jan-25 17:00:00 | 125 | CHI05-PH2-FIT-BL-D5,3,3,5,6,5 | 10-Jan-25 08:00:00 | COLO2 | CELL_1 |
| 138 | CHI05-02-01-ER-1055 | Installation of MSB - COLO2 Cell 1 - ER | Not Started | 05-Dec-24 17:00:00 | 94 | CHI05-PH2-FIT-BL-D5,3,3,5,6,5 | 29-Nov-24 08:00:00 | COLO2 | CELL_1 |
| 139 | CHI05-02-04-L4-1000 | COLO2 Cx LEV4 - COLO2 | Not Started | 04-Jun-25 17:00:00 | 35 | CHI05-PH2-FIT-BL-D5,3,3,5,5,1 | 01-May-25 08:00:00 | COLO2CXLEV4 |  |
| 140 | CHI05-02-04-L5-1000 | COLO2 Cx LEV5 / IST - COLO2 | Not Started | 06-Jun-25 17:00:00 | 35 | CHI05-PH2-FIT-BL-D5,3,3,5,5,2 | 05-Jun-25 08:00:00 | COLO2CXLEV5 |  |

| entry | activity_id | activity_name | activity_status | finish | total_float | wbs_code | start | location | sub_location |
| --- | --- | --- | --- | --- | --- | --- | --- | --- | --- |
| 141 | CHI05-02-02-MG-1110 | Install Dampers and actuators at Louvers - Upper level (RED) - COLO2 Cell 2 - MG | Not Started | 18-Oct-24 17:00:00 | 0 | CHI05-PH2-FIT-BL-D5,3,3,5,1,2 | 14-Oct-24 08:00:00 | UPPERLEVEL(RED) |  |
| 142 | CHI05-02-02-MG-1120 | Install Dampers and actuators at Louvers - Lower level (OA) - COLO2 Cell 2 - MG | Not Started | 22-Oct-24 17:00:00 | 0 | CHI05-PH2-FIT-BL-D5,3,3,5,1,2 | 16-Oct-24 08:00:00 | LOWERLEVEL(OA) |  |
| 143 | CHI05-02-02-MG-1130 | Overhead MEP Installation - COLO2 Cell 2 - MG | Not Started | 12-Nov-24 17:00:00 | 53 | CHI05-PH2-FIT-BL-D5,3,3,5,1,2 | 30-Oct-24 08:00:00 | COLO2 | CELL_2 |
| 144 | CHI05-02-02-MG-1140 | Deliver AHU into Mech. Gallery - COLO2 Cell 2 - MG | Not Started | 14-Nov-24 17:00:00 | 53 | CHI05-PH2-FIT-BL-D5,3,3,5,1,2 | 13-Nov-24 08:00:00 | COLO2 | CELL_2 |
| 145 | CHI05-02-02-MG-1150 | Install Walls and Primer Paint - COLO2 Cell 2 - MG | Not Started | 29-Nov-24 17:00:00 | 53 | CHI05-PH2-FIT-BL-D5,3,3,5,1,2 | 15-Nov-24 08:00:00 | COLO2 | CELL_2 |
| 146 | CHI05-02-02-MG-1160 | Placing the AHU - COLO2 Cell 2 - MG | Not Started | 11-Dec-24 12:00:00 | 94 | CHI05-PH2-FIT-BL-D5,3,3,5,1,2 | 09-Dec-24 08:00:00 | COLO2 | CELL_2 |
| 147 | CHI05-02-02-MG-1170 | Layout Ceiling and install Pencile Rod - COLO2 Cell 2 - MG | Not Started | 02-Dec-24 17:00:00 | 98 | CHI05-PH2-FIT-BL-D5,3,3,5,1,2 | 02-Dec-24 08:00:00 | COLO2 | CELL_2 |
| 148 | CHI05-02-02-MG-1180 | Piping and Electrical Termination to AHUs - COLO2 Cell 2 - MG | Not Started | 26-Dec-24 12:00:00 | 94 | CHI05-PH2-FIT-BL-D5,3,3,5,1,2 | 11-Dec-24 13:00:00 | COLO2 | CELL_2 |
| 149 | CHI05-02-02-MG-1190 | Pipe Testing - COLO2 Cell 2 - MG | Not Started | 30-Dec-24 12:00:00 | 98 | CHI05-PH2-FIT-BL-D5,3,3,5,1,2 | 26-Dec-24 13:00:00 | COLO2 | CELL_2 |
| 150 | CHI05-02-02-MG-1200 | Install ceiling and Light Fittings - COLO2 Cell 2 - MG | Not Started | 10-Jan-25 12:00:00 | 98 | CHI05-PH2-FIT-BL-D5,3,3,5,1,2 | 30-Dec-24 13:00:00 | COLO2 | CELL_2 |
| 151 | CHI05-02-02-MG-1210 | Trim out MEP - COLO2 Cell 2 - MG | Not Started | 10-Jan-25 12:00:00 | 104 | CHI05-PH2-FIT-BL-D5,3,3,5,1,2 | 03-Jan-25 13:00:00 | COLO2 | CELL_2 |
| 152 | CHI05-02-02-MG-1155 | Post Wall Overhead MEP - COLO2 Cell 2 - MG | Not Started | 20-Dec-24 17:00:00 | 94 | CHI05-PH2-FIT-BL-D5,3,3,5,1,2 | 02-Dec-24 08:00:00 | COLO2 | CELL_2 |
| 153 | CHI05-02-02-ER-1110 | Install Walls and Primer Paint - COLO2 Cell 2 - ER | Not Started | 01-Nov-24 17:00:00 | 46 | CHI05-PH2-FIT-BL-D5,3,3,5,1,5 | 21-Oct-24 08:00:00 | COLO2 | CELL_2 |
| 154 | CHI05-02-02-ER-1120 | Sprinklers and Overhead MEP (Above Ceiling) - COLO2 Cell 2 - ER | Not Started | 19-Nov-24 17:00:00 | 46 | CHI05-PH2-FIT-BL-D5,3,3,5,1,5 | 06-Nov-24 08:00:00 | COLO2 | CELL_2 |
| 155 | CHI05-02-02-ER-1130 | Install Upper Screens - COLO2 Cell 2 - ER | Not Started | 05-Nov-24 17:00:00 | 46 | CHI05-PH2-FIT-BL-D5,3,3,5,1,5 | 30-Oct-24 08:00:00 | COLO2 | CELL_2 |
| 156 | CHI05-02-02-ER-1140 | Install Ceiling - COLO2 Cell 2 - ER | Not Started | 22-Nov-24 17:00:00 | 46 | CHI05-PH2-FIT-BL-D5,3,3,5,1,5 | 20-Nov-24 08:00:00 | COLO2 | CELL_2 |
| 157 | CHI05-02-02-ER-1150 | Below Ceiling MEP Rough In - COLO2 Cell 2 - ER | Not Started | 17-Dec-24 17:00:00 | 40 | CHI05-PH2-FIT-BL-D5,3,3,5,1,5 | 04-Dec-24 08:00:00 | COLO2 | CELL_2 |
| 158 | CHI05-02-02-ER-1160 | Installation of ADP & ATS - COLO2 Cell 2 - ER | Not Started | 12-Dec-24 17:00:00 | 99 | CHI05-PH2-FIT-BL-D5,3,3,5,1,5 | 06-Dec-24 08:00:00 | COLO2 | CELL_2 |
| 159 | CHI05-02-02-ER-1170 | Installation of UPS Equipment - COLO2 Cell 2 - ER | Not Started | 17-Dec-24 17:00:00 | 55 | CHI05-PH2-FIT-BL-D5,3,3,5,1,5 | 11-Dec-24 08:00:00 | COLO2 | CELL_2 |
| 160 | CHI05-02-02-ER-1180 | Connet to Cable tray and conduit equipment - COLO2 Cell 2 - ER | Not Started | 16-Dec-24 17:00:00 | 114 | CHI05-PH2-FIT-BL-D5,3,3,5,1,5 | 10-Dec-24 08:00:00 | COLO2 | CELL_2 |
| 161 | CHI05-02-02-ER-1190 | Cable Pulling at Elec. Equipment - COLO2 Cell 2 - ER | Not Started | 30-Jan-25 17:00:00 | 98 | CHI05-PH2-FIT-BL-D5,3,3,5,1,5 | 10-Jan-25 08:00:00 | COLO2 | CELL_2 |
| 162 | CHI05-02-02-ER-1200 | Door Frame Installation - COLO2 Cell 2 - ER | Not Started | 09-Jan-25 17:00:00 | 67 | CHI05-PH2-FIT-BL-D5,3,3,5,1,5 | 03-Jan-25 08:00:00 | COLO2 | CELL_2 |
| 163 | CHI05-02-02-ER-1210 | Finishes and Signage - COLO2 Cell 2 - ER | Not Started | 03-Feb-25 17:00:00 | 118 | CHI05-PH2-FIT-BL-D5,3,3,5,1,5 | 28-Jan-25 08:00:00 | COLO2 | CELL_2 |
| 164 | CHI05-02-02-ER-1165 | Installation of MSB - COLO2 Cell 2 - ER | Not Started | 12-Dec-24 17:00:00 | 94 | CHI05-PH2-FIT-BL-D5,3,3,5,1,5 | 06-Dec-24 08:00:00 | COLO2 | CELL_2 |
| 165 | CHI05-02-02-DH-1100 | Termination at PDU & Busway - COLO2 Cell 2 - DH | Not Started | 10-Feb-25 17:00:00 | 42 | CHI05-PH2-FIT-BL-D5,3,3,5,1,1 | 21-Jan-25 08:00:00 | COLO2 | CELL_2 |
| 166 | CHI05-02-02-DH-1110 | Overhead MEP and Hangers (Above Ceiling) - COLO2 Cell 2 - DH | Not Started | 07-Nov-24 17:00:00 | 71 | CHI05-PH2-FIT-BL-D5,3,3,5,1,1 | 23-Oct-24 08:00:00 | COLO2 | CELL_2 |
| 167 | CHI05-02-02-DH-1120 | HAC install and Rise - COLO2 Cell 2 - DH | Not Started | 10-Jan-25 17:00:00 | 78 | CHI05-PH2-FIT-BL-D5,3,3,5,1,1 | 06-Jan-25 08:00:00 | COLO2 | CELL_2 |
| 168 | CHI05-02-02-DH-1130 | Cable Pulling at PDU & Busway- COLO2 Cell 2 - DH | Not Started | 17-Jan-25 17:00:00 | 58 | CHI05-PH2-FIT-BL-D5,3,3,5,1,1 | 06-Jan-25 08:00:00 | COLO2 | CELL_2 |
| 169 | CHI05-02-02-DH-1140 | Security Screen Installation - COLO2 Cell 2 - DH | Not Started | 04-Dec-24 17:00:00 | 53 | CHI05-PH2-FIT-BL-D5,3,3,5,1,1 | 02-Dec-24 08:00:00 | COLO2 | CELL_2 |
| 170 | CHI05-02-02-DH-1150 | Ceiling Grid and Tile - COLO2 Cell 2 - DH | Not Started | 11-Dec-24 17:00:00 | 53 | CHI05-PH2-FIT-BL-D5,3,3,5,1,1 | 05-Dec-24 08:00:00 | COLO2 | CELL_2 |
| 171 | CHI05-02-02-DH-1160 | Install PDU's - COLO2 Cell 2 - DH | Not Started | 03-Jan-25 17:00:00 | 53 | CHI05-PH2-FIT-BL-D5,3,3,5,1,1 | 27-Dec-24 08:00:00 | COLO2 | CELL_2 |
| 172 | CHI05-02-02-DH-1170 | Overhead MEP Installation (Below Ceiling) - COLO2 Cell 2 - DH | Not Started | 26-Dec-24 17:00:00 | 53 | CHI05-PH2-FIT-BL-D5,3,3,5,1,1 | 12-Dec-24 08:00:00 | COLO2 | CELL_2 |
| 173 | CHI05-02-02-DH-1180 | Install Low Voltage Wiring and Fiber Optic - COLO2 Cell 2 - DH | Not Started | 24-Jan-25 17:00:00 | 78 | CHI05-PH2-FIT-BL-D5,3,3,5,1,1 | 13-Jan-25 08:00:00 | COLO2 | CELL_2 |
| 174 | CHI05-02-02-DH-1190 | HAC Placing - COLO2 Cell 2 - DH | Not Started | 03-Jan-25 17:00:00 | 78 | CHI05-PH2-FIT-BL-D5,3,3,5,1,1 | 27-Dec-24 08:00:00 | COLO2 | CELL_2 |
| 175 | CHI05-02-02-DH-1200 | Finishes and Signage - COLO2 Cell 2 - DH | Not Started | 10-Feb-25 17:00:00 | 113 | CHI05-PH2-FIT-BL-D5,3,3,5,1,1 | 04-Feb-25 08:00:00 | COLO2 | CELL_2 |
| 176 | CHI05-02-02-L1-1260 | Interior - L1 UPS - COLO2 Cell 2 | Not Started | 02-Jan-25 17:00:00 | 87 | CHI05-PH2-FIT-BL-D5,3,3,5,1,4,1 | 02-Jan-25 08:00:00 | COLO2 | CELL_2 |
| 177 | CHI05-02-02-L1-1270 | Interior - L1 MSB - COLO2 Cell 2 | Not Started | 03-Jan-25 17:00:00 | 93 | CHI05-PH2-FIT-BL-D5,3,3,5,1,4,1 | 03-Jan-25 08:00:00 | COLO2 | CELL_2 |
| 178 | CHI05-02-02-L1-1280 | Interior - L1 PDUs - COLO2 Cell 2 | Not Started | 06-Jan-25 17:00:00 | 97 | CHI05-PH2-FIT-BL-D5,3,3,5,1,4,1 | 06-Jan-25 08:00:00 | COLO2 | CELL_2 |
| 179 | CHI05-02-02-L1-1290 | Interior - L1 AHUs - COLO2 Cell 2 | Not Started | 08-Jan-25 17:00:00 | 105 | CHI05-PH2-FIT-BL-D5,3,3,5,1,4,1 | 08-Jan-25 08:00:00 | COLO2 | CELL_2 |
| 180 | CHI05-02-02-L1-1300 | Interior - L1 ATSs - COLO2 Cell 2 | Not Started | 07-Jan-25 17:00:00 | 101 | CHI05-PH2-FIT-BL-D5,3,3,5,1,4,1 | 07-Jan-25 08:00:00 | COLO2 | CELL_2 |
| 181 | CHI05-02-02-L1-1310 | Interior - L1 Busway - COLO2 Cell 2 | Not Started | 07-Jan-25 17:00:00 | 101 | CHI05-PH2-FIT-BL-D5,3,3,5,1,4,1 | 07-Jan-25 08:00:00 | COLO2 | CELL_2 |
| 182 | CHI05-02-02-L1-1370 | Interior - L1 ADP - COLO2 Cell 2 | Not Started | 06-Jan-25 17:00:00 | 97 | CHI05-PH2-FIT-BL-D5,3,3,5,1,4,1 | 06-Jan-25 08:00:00 | COLO2 | CELL_2 |
| 183 | CHI05-02-02-L2-1380 | Interior - L2 UPS - COLO2 Cell 2 | Not Started | 03-Mar-25 17:00:00 | 52 | CHI05-PH2-FIT-BL-D5,3,3,5,1,4,2 | 25-Feb-25 08:00:00 | COLO2 | CELL_2 |
| 184 | CHI05-02-02-L2-1390 | Interior - L2 MSB - COLO2 Cell 2 | Not Started | 10-Mar-25 17:00:00 | 52 | CHI05-PH2-FIT-BL-D5,3,3,5,1,4,2 | 04-Mar-25 08:00:00 | COLO2 | CELL_2 |
| 185 | CHI05-02-02-L2-1400 | Interior - L2 PDUs - COLO2 Cell 2 | Not Started | 17-Mar-25 17:00:00 | 52 | CHI05-PH2-FIT-BL-D5,3,3,5,1,4,2 | 11-Mar-25 08:00:00 | COLO2 | CELL_2 |
| 186 | CHI05-02-02-L2-1410 | Interior - L2 AHUs - COLO2 Cell 2 | Not Started | 31-Mar-25 17:00:00 | 52 | CHI05-PH2-FIT-BL-D5,3,3,5,1,4,2 | 25-Mar-25 08:00:00 | COLO2 | CELL_2 |
| 187 | CHI05-02-02-L2-1420 | Interior - L2 ATSs - COLO2 Cell 2 | Not Started | 24-Mar-25 17:00:00 | 52 | CHI05-PH2-FIT-BL-D5,3,3,5,1,4,2 | 18-Mar-25 08:00:00 | COLO2 | CELL_2 |
| 188 | CHI05-02-02-L2-1430 | Interior - L2 Busway - COLO2 Cell 2 | Not Started | 24-Mar-25 17:00:00 | 52 | CHI05-PH2-FIT-BL-D5,3,3,5,1,4,2 | 18-Mar-25 08:00:00 | COLO2 | CELL_2 |
| 189 | CHI05-02-02-L2-1490 | Interior - L2 ADP - COLO2 Cell 2 | Not Started | 17-Mar-25 17:00:00 | 52 | CHI05-PH2-FIT-BL-D5,3,3,5,1,4,2 | 11-Mar-25 08:00:00 | COLO2 | CELL_2 |
| 190 | CHI05-02-02-L3-1500 | Interior - L3 UPS - COLO2 Cell 2 | Not Started | 31-Mar-25 17:00:00 | 37 | CHI05-PH2-FIT-BL-D5,3,3,5,1,4,3 | 25-Mar-25 08:00:00 | COLO2 | CELL_2 |
| 191 | CHI05-02-02-L3-1510 | Interior - L3 MSB - COLO2 Cell 2 | Not Started | 07-Apr-25 17:00:00 | 37 | CHI05-PH2-FIT-BL-D5,3,3,5,1,4,3 | 01-Apr-25 08:00:00 | COLO2 | CELL_2 |
| 192 | CHI05-02-02-L3-1520 | Interior - L3 PDUs - COLO2 Cell 2 | Not Started | 14-Apr-25 17:00:00 | 37 | CHI05-PH2-FIT-BL-D5,3,3,5,1,4,3 | 08-Apr-25 08:00:00 | COLO2 | CELL_2 |
| 193 | CHI05-02-02-L3-1530 | Interior - L3 AHUs - COLO2 Cell 2 | Not Started | 28-Apr-25 17:00:00 | 37 | CHI05-PH2-FIT-BL-D5,3,3,5,1,4,3 | 22-Apr-25 08:00:00 | COLO2 | CELL_2 |
| 194 | CHI05-02-02-L3-1540 | Interior - L3 ATSs - COLO2 Cell 2 | Not Started | 21-Apr-25 17:00:00 | 42 | CHI05-PH2-FIT-BL-D5,3,3,5,1,4,3 | 15-Apr-25 08:00:00 | COLO2 | CELL_2 |
| 195 | CHI05-02-02-L3-1550 | Interior - L3 Busway - COLO2 Cell 2 | Not Started | 21-Apr-25 17:00:00 | 37 | CHI05-PH2-FIT-BL-D5,3,3,5,1,4,3 | 15-Apr-25 08:00:00 | COLO2 | CELL_2 |
| 196 | CHI05-02-02-L3-1610 | Interior - L3 ADP - COLO2 Cell 2 | Not Started | 14-Apr-25 17:00:00 | 42 | CHI05-PH2-FIT-BL-D5,3,3,5,1,4,3 | 08-Apr-25 08:00:00 | COLO2 | CELL_2 |
| 197 | CHI05-02-03-MG-1220 | Install Dampers and actuators at Louvers - Upper level (RED) - COLO2 Cell 3 - MG | Not Started | 25-Oct-24 17:00:00 | 0 | CHI05-PH2-FIT-BL-D5,3,3,5,3,2 | 21-Oct-24 08:00:00 | UPPERLEVEL(RED) |  |
| 198 | CHI05-02-03-MG-1230 | Install Dampers and actuators at Louvers - Lower level (OA) - COLO2 Cell 3 - MG | Not Started | 29-Oct-24 17:00:00 | 0 | CHI05-PH2-FIT-BL-D5,3,3,5,3,2 | 23-Oct-24 08:00:00 | LOWERLEVEL(OA) |  |
| 199 | CHI05-02-03-MG-1240 | Overhead MEP Installation - COLO2 Cell 3 - MG | Not Started | 26-Nov-24 17:00:00 | 58 | CHI05-PH2-FIT-BL-D5,3,3,5,3,2 | 13-Nov-24 08:00:00 | COLO2 | CELL_3 |
| 200 | CHI05-02-03-MG-1250 | Deliver AHU into Mech. Gallery - COLO2 Cell 3 - MG | Not Started | 29-Nov-24 17:00:00 | 58 | CHI05-PH2-FIT-BL-D5,3,3,5,3,2 | 27-Nov-24 08:00:00 | COLO2 | CELL_3 |
| 201 | CHI05-02-03-MG-1260 | Install Walls and Primer Paint - COLO2 Cell 3 - MG | Not Started | 13-Dec-24 17:00:00 | 58 | CHI05-PH2-FIT-BL-D5,3,3,5,3,2 | 02-Dec-24 08:00:00 | COLO2 | CELL_3 |
| 202 | CHI05-02-03-MG-1270 | Placing the AHU - COLO2 Cell 3 - MG | Not Started | 26-Dec-24 12:00:00 | 94 | CHI05-PH2-FIT-BL-D5,3,3,5,3,2 | 23-Dec-24 08:00:00 | COLO2 | CELL_3 |
| 203 | CHI05-02-03-MG-1280 | Layout Ceiling and install Pencile Rod - COLO2 Cell 3 - MG | Not Started | 16-Dec-24 17:00:00 | 98 | CHI05-PH2-FIT-BL-D5,3,3,5,3,2 | 16-Dec-24 08:00:00 | COLO2 | CELL_3 |
| 204 | CHI05-02-03-MG-1290 | Piping and Electrical Termination to AHUs - COLO2 Cell 3 - MG | Not Started | 10-Jan-25 12:00:00 | 94 | CHI05-PH2-FIT-BL-D5,3,3,5,3,2 | 26-Dec-24 13:00:00 | COLO2 | CELL_3 |
| 205 | CHI05-02-03-MG-1300 | Pipe Testing - COLO2 Cell 3 - MG | Not Started | 14-Jan-25 12:00:00 | 96 | CHI05-PH2-FIT-BL-D5,3,3,5,3,2 | 10-Jan-25 13:00:00 | COLO2 | CELL_3 |
| 206 | CHI05-02-03-MG-1310 | Install ceiling and Light Fittings - COLO2 Cell 3 - MG | Not Started | 24-Jan-25 12:00:00 | 96 | CHI05-PH2-FIT-BL-D5,3,3,5,3,2 | 14-Jan-25 13:00:00 | COLO2 | CELL_3 |
| 207 | CHI05-02-03-MG-1320 | Trim out MEP - COLO2 Cell 3 - MG | Not Started | 24-Jan-25 12:00:00 | 99 | CHI05-PH2-FIT-BL-D5,3,3,5,3,2 | 17-Jan-25 13:00:00 | COLO2 | CELL_3 |
| 208 | CHI05-02-03-MG-1265 | Post Wall Overhead MEP - COLO2 Cell 3 - MG | Not Started | 07-Jan-25 17:00:00 | 94 | CHI05-PH2-FIT-BL-D5,3,3,5,3,2 | 16-Dec-24 08:00:00 | COLO2 | CELL_3 |
| 209 | CHI05-02-03-ER-1220 | Install Walls and Primer Paint - COLO2 Cell 3 - ER | Not Started | 15-Nov-24 17:00:00 | 46 | CHI05-PH2-FIT-BL-D5,3,3,5,3,5 | 04-Nov-24 08:00:00 | COLO2 | CELL_3 |
| 210 | CHI05-02-03-ER-1230 | Sprinklers and Overhead MEP (Above Ceiling) - COLO2 Cell 3 - ER | Not Started | 04-Dec-24 17:00:00 | 46 | CHI05-PH2-FIT-BL-D5,3,3,5,3,5 | 20-Nov-24 08:00:00 | COLO2 | CELL_3 |

| entry | activity_id | activity_name | activity_status | finish | total_float | wbs_code | start | location | sub_location |
| --- | --- | --- | --- | --- | --- | --- | --- | --- | --- |
| 211 | CHI05-02-03-ER-1240 | Install Upper Screens - COLO2 Cell 3 - ER | Not Started | 19-Nov-24 17:00:00 | 46 | CHI05-PH2-FIT-BL-D5,3,3,5,3,5 | 13-Nov-24 08:00:00 | COLO2 | CELL_3 |
| 212 | CHI05-02-03-ER-1250 | Install Ceiling - COLO2 Cell 3 - ER | Not Started | 09-Dec-24 17:00:00 | 46 | CHI05-PH2-FIT-BL-D5,3,3,5,3,5 | 05-Dec-24 08:00:00 | COLO2 | CELL_3 |
| 213 | CHI05-02-03-ER-1260 | Below Ceiling MEP Rough In - COLO2 Cell 3 - ER | Not Started | 02-Jan-25 17:00:00 | 40 | CHI05-PH2-FIT-BL-D5,3,3,5,3,5 | 18-Dec-24 08:00:00 | COLO2 | CELL_3 |
| 214 | CHI05-02-03-ER-1270 | Installation of ADP & ATS - COLO2 Cell 3 - ER | Not Started | 27-Dec-24 17:00:00 | 94 | CHI05-PH2-FIT-BL-D5,3,3,5,3,5 | 20-Dec-24 08:00:00 | COLO2 | CELL_3 |
| 215 | CHI05-02-03-ER-1280 | Installation of UPS Equipment - COLO2 Cell 3 - ER | Not Started | 09-Jan-25 17:00:00 | 45 | CHI05-PH2-FIT-BL-D5,3,3,5,3,5 | 03-Jan-25 08:00:00 | COLO2 | CELL_3 |
| 216 | CHI05-02-03-ER-1290 | Connet to Cable tray and conduit equipment - COLO2 Cell 3 - ER | Not Started | 31-Dec-24 17:00:00 | 119 | CHI05-PH2-FIT-BL-D5,3,3,5,3,5 | 24-Dec-24 08:00:00 | COLO2 | CELL_3 |
| 217 | CHI05-02-03-ER-1300 | Cable Pulling at Elec. Equipment - COLO2 Cell 3 - ER | Not Started | 20-Feb-25 17:00:00 | 98 | CHI05-PH2-FIT-BL-D5,3,3,5,3,5 | 31-Jan-25 08:00:00 | COLO2 | CELL_3 |
| 218 | CHI05-02-03-ER-1310 | Door Frame Installation - COLO2 Cell 3 - ER | Not Started | 16-Jan-25 17:00:00 | 62 | CHI05-PH2-FIT-BL-D5,3,3,5,3,5 | 10-Jan-25 08:00:00 | COLO2 | CELL_3 |
| 219 | CHI05-02-03-ER-1320 | Finishes and Signage - COLO2 Cell 3 - ER | Not Started | 24-Feb-25 17:00:00 | 108 | CHI05-PH2-FIT-BL-D5,3,3,5,3,5 | 18-Feb-25 08:00:00 | COLO2 | CELL_3 |
| 220 | CHI05-02-03-ER-1275 | Installation of MSB - COLO2 Cell 3 - ER | Not Started | 27-Dec-24 17:00:00 | 89 | CHI05-PH2-FIT-BL-D5,3,3,5,3,5 | 20-Dec-24 08:00:00 | COLO2 | CELL_3 |
| 221 | CHI05-02-03-DH-1210 | Termination at PDU & Busway - COLO2 Cell 3 - DH | Not Started | 03-Mar-25 17:00:00 | 42 | CHI05-PH2-FIT-BL-D5,3,3,5,3,1 | 11-Feb-25 08:00:00 | COLO2 | CELL_3 |
| 222 | CHI05-02-03-DH-1220 | Overhead MEP and Hangers (Above Ceiling) - COLO2 Cell 3 - DH | Not Started | 25-Nov-24 17:00:00 | 74 | CHI05-PH2-FIT-BL-D5,3,3,5,3,1 | 08-Nov-24 08:00:00 | COLO2 | CELL_3 |
| 223 | CHI05-02-03-DH-1230 | HAC install and Rise - COLO2 Cell 3 - DH | Not Started | 24-Jan-25 17:00:00 | 78 | CHI05-PH2-FIT-BL-D5,3,3,5,3,1 | 20-Jan-25 08:00:00 | COLO2 | CELL_3 |
| 224 | CHI05-02-03-DH-1240 | Cable Pulling at PDU & Busway- COLO2 Cell 3 - DH | Not Started | 31-Jan-25 17:00:00 | 63 | CHI05-PH2-FIT-BL-D5,3,3,5,3,1 | 20-Jan-25 08:00:00 | COLO2 | CELL_3 |
| 225 | CHI05-02-03-DH-1250 | Security Screen Installation - COLO2 Cell 3 - DH | Not Started | 18-Dec-24 17:00:00 | 58 | CHI05-PH2-FIT-BL-D5,3,3,5,3,1 | 16-Dec-24 08:00:00 | COLO2 | CELL_3 |
| 226 | CHI05-02-03-DH-1260 | Ceiling Grid and Tile - COLO2 Cell 3 - DH | Not Started | 26-Dec-24 17:00:00 | 58 | CHI05-PH2-FIT-BL-D5,3,3,5,3,1 | 19-Dec-24 08:00:00 | COLO2 | CELL_3 |
| 227 | CHI05-02-03-DH-1270 | Install PDU's - COLO2 Cell 3 - DH | Not Started | 17-Jan-25 17:00:00 | 58 | CHI05-PH2-FIT-BL-D5,3,3,5,3,1 | 13-Jan-25 08:00:00 | COLO2 | CELL_3 |
| 228 | CHI05-02-03-DH-1280 | Overhead MEP Installation (Below Ceiling) - COLO2 Cell 3 - DH | Not Started | 10-Jan-25 17:00:00 | 58 | CHI05-PH2-FIT-BL-D5,3,3,5,3,1 | 27-Dec-24 08:00:00 | COLO2 | CELL_3 |
| 229 | CHI05-02-03-DH-1290 | Install Low Voltage Wiring and Fiber Optic - COLO2 Cell 3 - DH | Not Started | 07-Feb-25 17:00:00 | 78 | CHI05-PH2-FIT-BL-D5,3,3,5,3,1 | 27-Jan-25 08:00:00 | COLO2 | CELL_3 |
| 230 | CHI05-02-03-DH-1300 | HAC Placing - COLO2 Cell 3 - DH | Not Started | 17-Jan-25 17:00:00 | 78 | CHI05-PH2-FIT-BL-D5,3,3,5,3,1 | 13-Jan-25 08:00:00 | COLO2 | CELL_3 |
| 231 | CHI05-02-03-DH-1310 | Finishes and Signage - COLO2 Cell 3 - DH | Not Started | 03-Mar-25 17:00:00 | 103 | CHI05-PH2-FIT-BL-D5,3,3,5,3,1 | 25-Feb-25 08:00:00 | COLO2 | CELL_3 |
| 232 | CHI05-02-03-L1-1380 | Interior - L1 UPS - COLO2 Cell 3 | Not Started | 02-Jan-25 17:00:00 | 87 | CHI05-PH2-FIT-BL-D5,3,3,5,3,4,1 | 02-Jan-25 08:00:00 | COLO2 | CELL_3 |
| 233 | CHI05-02-03-L1-1390 | Interior - L1 MSB - COLO2 Cell 3 | Not Started | 03-Jan-25 17:00:00 | 93 | CHI05-PH2-FIT-BL-D5,3,3,5,3,4,1 | 03-Jan-25 08:00:00 | COLO2 | CELL_3 |
| 234 | CHI05-02-03-L1-1400 | Interior - L1 PDUs - COLO2 Cell 3 | Not Started | 20-Jan-25 17:00:00 | 87 | CHI05-PH2-FIT-BL-D5,3,3,5,3,4,1 | 20-Jan-25 08:00:00 | COLO2 | CELL_3 |
| 235 | CHI05-02-03-L1-1410 | Interior - L1 AHUs - COLO2 Cell 3 | Not Started | 22-Jan-25 17:00:00 | 95 | CHI05-PH2-FIT-BL-D5,3,3,5,3,4,1 | 22-Jan-25 08:00:00 | COLO2 | CELL_3 |
| 236 | CHI05-02-03-L1-1420 | Interior - L1 ATSs - COLO2 Cell 3 | Not Started | 07-Jan-25 17:00:00 | 101 | CHI05-PH2-FIT-BL-D5,3,3,5,3,4,1 | 07-Jan-25 08:00:00 | COLO2 | CELL_3 |
| 237 | CHI05-02-03-L1-1430 | Interior - L1 Busway - COLO2 Cell 3 | Not Started | 21-Jan-25 17:00:00 | 91 | CHI05-PH2-FIT-BL-D5,3,3,5,3,4,1 | 21-Jan-25 08:00:00 | COLO2 | CELL_3 |
| 238 | CHI05-02-03-L1-1490 | Interior - L1 ADP - COLO2 Cell 3 | Not Started | 06-Jan-25 17:00:00 | 97 | CHI05-PH2-FIT-BL-D5,3,3,5,3,4,1 | 06-Jan-25 08:00:00 | COLO2 | CELL_3 |
| 239 | CHI05-02-03-L2-1500 | Interior - L2 UPS - COLO2 Cell 3 | Not Started | 03-Mar-25 17:00:00 | 52 | CHI05-PH2-FIT-BL-D5,3,3,5,3,4,2 | 25-Feb-25 08:00:00 | COLO2 | CELL_3 |
| 240 | CHI05-02-03-L2-1510 | Interior - L2 MSB - COLO2 Cell 3 | Not Started | 10-Mar-25 17:00:00 | 52 | CHI05-PH2-FIT-BL-D5,3,3,5,3,4,2 | 04-Mar-25 08:00:00 | COLO2 | CELL_3 |
| 241 | CHI05-02-03-L2-1520 | Interior - L2 PDUs - COLO2 Cell 3 | Not Started | 17-Mar-25 17:00:00 | 52 | CHI05-PH2-FIT-BL-D5,3,3,5,3,4,2 | 11-Mar-25 08:00:00 | COLO2 | CELL_3 |
| 242 | CHI05-02-03-L2-1530 | Interior - L2 AHUs - COLO2 Cell 3 | Not Started | 31-Mar-25 17:00:00 | 52 | CHI05-PH2-FIT-BL-D5,3,3,5,3,4,2 | 25-Mar-25 08:00:00 | COLO2 | CELL_3 |
| 243 | CHI05-02-03-L2-1540 | Interior - L2 ATSs - COLO2 Cell 3 | Not Started | 24-Mar-25 17:00:00 | 52 | CHI05-PH2-FIT-BL-D5,3,3,5,3,4,2 | 18-Mar-25 08:00:00 | COLO2 | CELL_3 |
| 244 | CHI05-02-03-L2-1550 | Interior - L2 Busway - COLO2 Cell 3 | Not Started | 24-Mar-25 17:00:00 | 52 | CHI05-PH2-FIT-BL-D5,3,3,5,3,4,2 | 18-Mar-25 08:00:00 | COLO2 | CELL_3 |
| 245 | CHI05-02-03-L2-1610 | Interior - L2 ADP - COLO2 Cell 3 | Not Started | 17-Mar-25 17:00:00 | 52 | CHI05-PH2-FIT-BL-D5,3,3,5,3,4,2 | 11-Mar-25 08:00:00 | COLO2 | CELL_3 |
| 246 | CHI05-02-03-L3-1620 | Interior - L3 UPS - COLO2 Cell 3 | Not Started | 31-Mar-25 17:00:00 | 37 | CHI05-PH2-FIT-BL-D5,3,3,5,3,4,3 | 25-Mar-25 08:00:00 | COLO2 | CELL_3 |
| 247 | CHI05-02-03-L3-1630 | Interior - L3 MSB - COLO2 Cell 3 | Not Started | 07-Apr-25 17:00:00 | 37 | CHI05-PH2-FIT-BL-D5,3,3,5,3,4,3 | 01-Apr-25 08:00:00 | COLO2 | CELL_3 |
| 248 | CHI05-02-03-L3-1640 | Interior - L3 PDUs - COLO2 Cell 3 | Not Started | 14-Apr-25 17:00:00 | 37 | CHI05-PH2-FIT-BL-D5,3,3,5,3,4,3 | 08-Apr-25 08:00:00 | COLO2 | CELL_3 |
| 249 | CHI05-02-03-L3-1650 | Interior - L3 AHUs - COLO2 Cell 3 | Not Started | 28-Apr-25 17:00:00 | 37 | CHI05-PH2-FIT-BL-D5,3,3,5,3,4,3 | 22-Apr-25 08:00:00 | COLO2 | CELL_3 |
| 250 | CHI05-02-03-L3-1660 | Interior - L3 ATSs - COLO2 Cell 3 | Not Started | 21-Apr-25 17:00:00 | 37 | CHI05-PH2-FIT-BL-D5,3,3,5,3,4,3 | 15-Apr-25 08:00:00 | COLO2 | CELL_3 |
| 251 | CHI05-02-03-L3-1670 | Interior - L3 Busway - COLO2 Cell 3 | Not Started | 21-Apr-25 17:00:00 | 37 | CHI05-PH2-FIT-BL-D5,3,3,5,3,4,3 | 15-Apr-25 08:00:00 | COLO2 | CELL_3 |
| 252 | CHI05-02-03-L3-1730 | Interior - L3 ADP - COLO2 Cell 3 | Not Started | 14-Apr-25 17:00:00 | 37 | CHI05-PH2-FIT-BL-D5,3,3,5,3,4,3 | 08-Apr-25 08:00:00 | COLO2 | CELL_3 |
| 253 | CHI05-02-04-MG-1330 | Install Dampers and actuators at Louvers - Upper level (RED) - COLO2 Cell 4 - MG | Not Started | 01-Nov-24 17:00:00 | 0 | CHI05-PH2-FIT-BL-D5,3,3,5,2,2 | 28-Oct-24 08:00:00 | UPPERLEVEL(RED) |  |
| 254 | CHI05-02-04-MG-1340 | Install Dampers and actuators at Louvers - Lower level (OA) - COLO2 Cell 4 - MG | Not Started | 05-Nov-24 17:00:00 | 0 | CHI05-PH2-FIT-BL-D5,3,3,5,2,2 | 30-Oct-24 08:00:00 | LOWERLEVEL(OA) |  |
| 255 | CHI05-02-04-MG-1350 | Overhead MEP Installation - COLO2 Cell 4 - MG | Not Started | 11-Dec-24 17:00:00 | 63 | CHI05-PH2-FIT-BL-D5,3,3,5,2,2 | 27-Nov-24 08:00:00 | COLO2 | CELL_4 |
| 256 | CHI05-02-04-MG-1360 | Deliver AHU into Mech. Gallery - COLO2 Cell 4 - MG | Not Started | 13-Dec-24 17:00:00 | 63 | CHI05-PH2-FIT-BL-D5,3,3,5,2,2 | 12-Dec-24 08:00:00 | COLO2 | CELL_4 |
| 257 | CHI05-02-04-MG-1370 | Install Walls and Primer Paint - COLO2 Cell 4 - MG | Not Started | 30-Dec-24 17:00:00 | 63 | CHI05-PH2-FIT-BL-D5,3,3,5,2,2 | 16-Dec-24 08:00:00 | COLO2 | CELL_4 |
| 258 | CHI05-02-04-MG-1380 | Placing the AHU - COLO2 Cell 4 - MG | Not Started | 10-Jan-25 12:00:00 | 94 | CHI05-PH2-FIT-BL-D5,3,3,5,2,2 | 08-Jan-25 08:00:00 | COLO2 | CELL_4 |
| 259 | CHI05-02-04-MG-1390 | Layout Ceiling and install Pencile Rod - COLO2 Cell 4 - MG | Not Started | 31-Dec-24 17:00:00 | 98 | CHI05-PH2-FIT-BL-D5,3,3,5,2,2 | 31-Dec-24 08:00:00 | COLO2 | CELL_4 |
| 260 | CHI05-02-04-MG-1400 | Piping and Electrical Termination to AHUs - COLO2 Cell 4 - MG | Not Started | 24-Jan-25 12:00:00 | 94 | CHI05-PH2-FIT-BL-D5,3,3,5,2,2 | 10-Jan-25 13:00:00 | COLO2 | CELL_4 |
| 261 | CHI05-02-04-MG-1410 | Pipe Testing - COLO2 Cell 4 - MG | Not Started | 28-Jan-25 12:00:00 | 94 | CHI05-PH2-FIT-BL-D5,3,3,5,2,2 | 24-Jan-25 13:00:00 | COLO2 | CELL_4 |
| 262 | CHI05-02-04-MG-1420 | Install ceiling and Light Fittings - COLO2 Cell 4 - MG | Not Started | 07-Feb-25 12:00:00 | 94 | CHI05-PH2-FIT-BL-D5,3,3,5,2,2 | 28-Jan-25 13:00:00 | COLO2 | CELL_4 |
| 263 | CHI05-02-04-MG-1430 | Trim out MEP - COLO2 Cell 4 - MG | Not Started | 07-Feb-25 12:00:00 | 94 | CHI05-PH2-FIT-BL-D5,3,3,5,2,2 | 31-Jan-25 13:00:00 | COLO2 | CELL_4 |
| 264 | CHI05-02-04-MG-1375 | Post Wall Overhead MEP - COLO2 Cell 4 - MG | Not Started | 21-Jan-25 17:00:00 | 94 | CHI05-PH2-FIT-BL-D5,3,3,5,2,2 | 31-Dec-24 08:00:00 | COLO2 | CELL_4 |
| 265 | CHI05-02-04-ER-1330 | Install Walls and Primer Paint - COLO2 Cell 4 - ER | Not Started | 02-Dec-24 17:00:00 | 46 | CHI05-PH2-FIT-BL-D5,3,3,5,2,5 | 18-Nov-24 08:00:00 | COLO2 | CELL_4 |
| 266 | CHI05-02-04-ER-1340 | Sprinklers and Overhead MEP (Above Ceiling) - COLO2 Cell 4 - ER | Not Started | 18-Dec-24 17:00:00 | 46 | CHI05-PH2-FIT-BL-D5,3,3,5,2,5 | 05-Dec-24 08:00:00 | COLO2 | CELL_4 |
| 267 | CHI05-02-04-ER-1350 | Install Upper Screens - COLO2 Cell 4 - ER | Not Started | 04-Dec-24 17:00:00 | 46 | CHI05-PH2-FIT-BL-D5,3,3,5,2,5 | 27-Nov-24 08:00:00 | COLO2 | CELL_4 |
| 268 | CHI05-02-04-ER-1360 | Install Ceiling - COLO2 Cell 4 - ER | Not Started | 23-Dec-24 17:00:00 | 46 | CHI05-PH2-FIT-BL-D5,3,3,5,2,5 | 19-Dec-24 08:00:00 | COLO2 | CELL_4 |
| 269 | CHI05-02-04-ER-1370 | Below Ceiling MEP Rough In - COLO2 Cell 4 - ER | Not Started | 16-Jan-25 17:00:00 | 40 | CHI05-PH2-FIT-BL-D5,3,3,5,2,5 | 03-Jan-25 08:00:00 | COLO2 | CELL_4 |
| 270 | CHI05-02-04-ER-1380 | Installation of ADP & ATS - COLO2 Cell 4 - ER | Not Started | 13-Jan-25 17:00:00 | 89 | CHI05-PH2-FIT-BL-D5,3,3,5,2,5 | 07-Jan-25 08:00:00 | COLO2 | CELL_4 |
| 271 | CHI05-02-04-ER-1390 | Installation of UPS Equipment - COLO2 Cell 4 - ER | Not Started | 23-Jan-25 17:00:00 | 40 | CHI05-PH2-FIT-BL-D5,3,3,5,2,5 | 17-Jan-25 08:00:00 | COLO2 | CELL_4 |
| 272 | CHI05-02-04-ER-1400 | Connet to Cable tray and conduit equipment - COLO2 Cell 4 - ER | Not Started | 15-Jan-25 17:00:00 | 124 | CHI05-PH2-FIT-BL-D5,3,3,5,2,5 | 09-Jan-25 08:00:00 | COLO2 | CELL_4 |
| 273 | CHI05-02-04-ER-1410 | Cable Pulling at Elec. Equipment - COLO2 Cell 4 - ER | Not Started | 13-Mar-25 17:00:00 | 98 | CHI05-PH2-FIT-BL-D5,3,3,5,2,5 | 21-Feb-25 08:00:00 | COLO2 | CELL_4 |
| 274 | CHI05-02-04-ER-1420 | Door Frame Installation - COLO2 Cell 4 - ER | Not Started | 30-Jan-25 17:00:00 | 52 | CHI05-PH2-FIT-BL-D5,3,3,5,2,5 | 24-Jan-25 08:00:00 | COLO2 | CELL_4 |
| 275 | CHI05-02-04-ER-1430 | Finishes and Signage - COLO2 Cell 4 - ER | Not Started | 17-Mar-25 17:00:00 | 98 | CHI05-PH2-FIT-BL-D5,3,3,5,2,5 | 11-Mar-25 08:00:00 | COLO2 | CELL_4 |
| 276 | CHI05-02-04-ER-1385 | Installation of MSB - COLO2 Cell 4 - ER | Not Started | 13-Jan-25 17:00:00 | 84 | CHI05-PH2-FIT-BL-D5,3,3,5,2,5 | 07-Jan-25 08:00:00 | COLO2 | CELL_4 |
| 277 | CHI05-02-04-DH-1320 | Termination at PDU & Busway - COLO2 Cell 4 - DH | Not Started | 24-Mar-25 17:00:00 | 42 | CHI05-PH2-FIT-BL-D5,3,3,5,2,1 | 04-Mar-25 08:00:00 | COLO2 | CELL_4 |
| 278 | CHI05-02-04-DH-1330 | Overhead MEP and Hangers (Above Ceiling) - COLO2 Cell 4 - DH | Not Started | 12-Dec-24 17:00:00 | 77 | CHI05-PH2-FIT-BL-D5,3,3,5,2,1 | 26-Nov-24 08:00:00 | COLO2 | CELL_4 |
| 279 | CHI05-02-04-DH-1340 | HAC install and Rise - COLO2 Cell 4 - DH | Not Started | 07-Feb-25 17:00:00 | 78 | CHI05-PH2-FIT-BL-D5,3,3,5,2,1 | 03-Feb-25 08:00:00 | COLO2 | CELL_4 |
| 280 | CHI05-02-04-DH-1350 | Cable Pulling at PDU & Busway- COLO2 Cell 4 - DH | Not Started | 14-Feb-25 17:00:00 | 68 | CHI05-PH2-FIT-BL-D5,3,3,5,2,1 | 03-Feb-25 08:00:00 | COLO2 | CELL_4 |

| entry | activity_id | activity_name | activity_status | finish | total_float | wbs_code | start | location | sub_location |
| --- | --- | --- | --- | --- | --- | --- | --- | --- | --- |
| 281 | CHI05-02-04-DH-1360 | Security Screen Installation - COLO2 Cell 4 - DH | Not Started | 03-Jan-25 17:00:00 | 63 | CHI05-PH2-FIT-BL-D5,3,3,5,2,1 | 31-Dec-24 08:00:00 | COLO2 | CELL_4 |
| 282 | CHI05-02-04-DH-1370 | Ceiling Grid and Tile - COLO2 Cell 4 - DH | Not Started | 10-Jan-25 17:00:00 | 63 | CHI05-PH2-FIT-BL-D5,3,3,5,2,1 | 06-Jan-25 08:00:00 | COLO2 | CELL_4 |
| 283 | CHI05-02-04-DH-1380 | Install PDU's - COLO2 Cell 4 - DH | Not Started | 31-Jan-25 17:00:00 | 63 | CHI05-PH2-FIT-BL-D5,3,3,5,2,1 | 27-Jan-25 08:00:00 | COLO2 | CELL_4 |
| 284 | CHI05-02-04-DH-1390 | Overhead MEP Installation (Below Ceiling) - COLO2 Cell 4 - DH | Not Started | 24-Jan-25 17:00:00 | 63 | CHI05-PH2-FIT-BL-D5,3,3,5,2,1 | 13-Jan-25 08:00:00 | COLO2 | CELL_4 |
| 285 | CHI05-02-04-DH-1400 | Install Low Voltage Wiring and Fiber Optic - COLO2 Cell 4 - DH | Not Started | 21-Feb-25 17:00:00 | 78 | CHI05-PH2-FIT-BL-D5,3,3,5,2,1 | 10-Feb-25 08:00:00 | COLO2 | CELL_4 |
| 286 | CHI05-02-04-DH-1410 | HAC Placing - COLO2 Cell 4 - DH | Not Started | 31-Jan-25 17:00:00 | 78 | CHI05-PH2-FIT-BL-D5,3,3,5,2,1 | 27-Jan-25 08:00:00 | COLO2 | CELL_4 |
| 287 | CHI05-02-04-DH-1420 | Finishes and Signage - COLO2 Cell 4 - DH | Not Started | 31-Mar-25 17:00:00 | 88 | CHI05-PH2-FIT-BL-D5,3,3,5,2,1 | 25-Mar-25 08:00:00 | COLO2 | CELL_4 |
| 288 | CHI05-02-04-L1-1500 | Interior - L1 UPS - COLO2 Cell 4 | Not Started | 24-Jan-25 17:00:00 | 71 | CHI05-PH2-FIT-BL-D5,3,3,5,2,4,1 | 24-Jan-25 08:00:00 | COLO2 | CELL_4 |
| 289 | CHI05-02-04-L1-1510 | Interior - L1 MSB - COLO2 Cell 4 | Not Started | 27-Jan-25 17:00:00 | 75 | CHI05-PH2-FIT-BL-D5,3,3,5,2,4,1 | 27-Jan-25 08:00:00 | COLO2 | CELL_4 |
| 290 | CHI05-02-04-L1-1520 | Interior - L1 PDUs - COLO2 Cell 4 | Not Started | 03-Feb-25 17:00:00 | 77 | CHI05-PH2-FIT-BL-D5,3,3,5,2,4,1 | 03-Feb-25 08:00:00 | COLO2 | CELL_4 |
| 291 | CHI05-02-04-L1-1530 | Interior - L1 AHUs - COLO2 Cell 4 | Not Started | 05-Feb-25 17:00:00 | 85 | CHI05-PH2-FIT-BL-D5,3,3,5,2,4,1 | 05-Feb-25 08:00:00 | COLO2 | CELL_4 |
| 292 | CHI05-02-04-L1-1540 | Interior - L1 ATSs - COLO2 Cell 4 | Not Started | 29-Jan-25 17:00:00 | 83 | CHI05-PH2-FIT-BL-D5,3,3,5,2,4,1 | 29-Jan-25 08:00:00 | COLO2 | CELL_4 |
| 293 | CHI05-02-04-L1-1550 | Interior - L1 Busway - COLO2 Cell 4 | Not Started | 04-Feb-25 17:00:00 | 81 | CHI05-PH2-FIT-BL-D5,3,3,5,2,4,1 | 04-Feb-25 08:00:00 | COLO2 | CELL_4 |
| 294 | CHI05-02-04-L1-1610 | Interior - L1 ADP - COLO2 Cell 4 | Not Started | 28-Jan-25 17:00:00 | 79 | CHI05-PH2-FIT-BL-D5,3,3,5,2,4,1 | 28-Jan-25 08:00:00 | COLO2 | CELL_4 |
| 295 | CHI05-02-04-L2-1620 | Interior - L2 UPS - COLO2 Cell 4 | Not Started | 03-Mar-25 17:00:00 | 50 | CHI05-PH2-FIT-BL-D5,3,3,5,2,4,2 | 25-Feb-25 08:00:00 | COLO2 | CELL_4 |
| 296 | CHI05-02-04-L2-1630 | Interior - L2 MSB - COLO2 Cell 4 | Not Started | 10-Mar-25 17:00:00 | 50 | CHI05-PH2-FIT-BL-D5,3,3,5,2,4,2 | 04-Mar-25 08:00:00 | COLO2 | CELL_4 |
| 297 | CHI05-02-04-L2-1640 | Interior - L2 PDUs - COLO2 Cell 4 | Not Started | 31-Mar-25 17:00:00 | 42 | CHI05-PH2-FIT-BL-D5,3,3,5,2,4,2 | 25-Mar-25 08:00:00 | COLO2 | CELL_4 |
| 298 | CHI05-02-04-L2-1650 | Interior - L2 AHUs - COLO2 Cell 4 | Not Started | 14-Apr-25 17:00:00 | 42 | CHI05-PH2-FIT-BL-D5,3,3,5,2,4,2 | 08-Apr-25 08:00:00 | COLO2 | CELL_4 |
| 299 | CHI05-02-04-L2-1660 | Interior - L2 ATSs - COLO2 Cell 4 | Not Started | 24-Mar-25 17:00:00 | 50 | CHI05-PH2-FIT-BL-D5,3,3,5,2,4,2 | 18-Mar-25 08:00:00 | COLO2 | CELL_4 |
| 300 | CHI05-02-04-L2-1670 | Interior - L2 Busway - COLO2 Cell 4 | Not Started | 07-Apr-25 17:00:00 | 42 | CHI05-PH2-FIT-BL-D5,3,3,5,2,4,2 | 01-Apr-25 08:00:00 | COLO2 | CELL_4 |
| 301 | CHI05-02-04-L2-1730 | Interior - L2 ADP - COLO2 Cell 4 | Not Started | 17-Mar-25 17:00:00 | 50 | CHI05-PH2-FIT-BL-D5,3,3,5,2,4,2 | 11-Mar-25 08:00:00 | COLO2 | CELL_4 |
| 302 | CHI05-02-04-L3-1740 | Interior - L3 UPS - COLO2 Cell 4 | Not Started | 31-Mar-25 17:00:00 | 35 | CHI05-PH2-FIT-BL-D5,3,3,5,2,4,3 | 25-Mar-25 08:00:00 | COLO2 | CELL_4 |
| 303 | CHI05-02-04-L3-1750 | Interior - L3 MSB - COLO2 Cell 4 | Not Started | 07-Apr-25 17:00:00 | 35 | CHI05-PH2-FIT-BL-D5,3,3,5,2,4,3 | 01-Apr-25 08:00:00 | COLO2 | CELL_4 |
| 304 | CHI05-02-04-L3-1760 | Interior - L3 PDUs - COLO2 Cell 4 | Not Started | 14-Apr-25 17:00:00 | 40 | CHI05-PH2-FIT-BL-D5,3,3,5,2,4,3 | 08-Apr-25 08:00:00 | COLO2 | CELL_4 |
| 305 | CHI05-02-04-L3-1770 | Interior - L3 AHUs - COLO2 Cell 4 | Not Started | 30-Apr-25 17:00:00 | 35 | CHI05-PH2-FIT-BL-D5,3,3,5,2,4,3 | 24-Apr-25 08:00:00 | COLO2 | CELL_4 |
| 306 | CHI05-02-04-L3-1780 | Interior - L3 ATSs - COLO2 Cell 4 | Not Started | 21-Apr-25 17:00:00 | 35 | CHI05-PH2-FIT-BL-D5,3,3,5,2,4,3 | 15-Apr-25 08:00:00 | COLO2 | CELL_4 |
| 307 | CHI05-02-04-L3-1790 | Interior - L3 Busway - COLO2 Cell 4 | Not Started | 28-Apr-25 17:00:00 | 35 | CHI05-PH2-FIT-BL-D5,3,3,5,2,4,3 | 22-Apr-25 08:00:00 | COLO2 | CELL_4 |
| 308 | CHI05-02-04-L3-1850 | Interior - L3 ADP - COLO2 Cell 4 | Not Started | 14-Apr-25 17:00:00 | 35 | CHI05-PH2-FIT-BL-D5,3,3,5,2,4,3 | 08-Apr-25 08:00:00 | COLO2 | CELL_4 |
| 309 | CHI05-YARD-2000 | Set the Generator - Colo 2 - North | Not Started | 28-Oct-24 17:00:00 | 65 | CHI05-PH2-FIT-BL-D5,3,3,4,1 | 22-Oct-24 08:00:00 | COLO2 |  |
| 310 | CHI05-YARD-2040 | Install MEP raceway conduit and piping - Colo 2 - North | Not Started | 30-Oct-24 17:00:00 | 116 | CHI05-PH2-FIT-BL-D5,3,3,4,1 | 10-Oct-24 08:00:00 | COLO2 |  |
| 311 | CHI05-YARD-2140 | Wire pulling and termination for MSB - Colo 2 - North | Not Started | 17-Dec-24 17:00:00 | 98 | CHI05-PH2-FIT-BL-D5,3,3,4,1 | 26-Nov-24 08:00:00 | COLO2 |  |
| 312 | CHI05-YARD-2360 | Install screen wall - Colo 2 - North | Not Started | 16-Jan-25 17:00:00 | 140 | CHI05-PH2-FIT-BL-D5,3,3,4,1 | 18-Dec-24 08:00:00 | COLO2 |  |
| 313 | CHI05-YARD-2030 | Install Generator - Colo 2 - North | Not Started | 25-Nov-24 17:00:00 | 82 | CHI05-PH2-FIT-BL-D5,3,3,4,1 | 19-Nov-24 08:00:00 | COLO2 |  |
| 314 | CHI05-YARD-2210 | Installation of Mech. Piping and testing - Colo 2 - North | Not Started | 17-Dec-24 17:00:00 | 140 | CHI05-PH2-FIT-BL-D5,3,3,4,1 | 26-Nov-24 08:00:00 | COLO2 |  |
| 315 | CHI05-YARD-2560 | Set the MV Gear - Colo 2 - North | Not Started | 30-Oct-24 17:00:00 | 63 | CHI05-PH2-FIT-BL-D5,3,3,4,1 | 24-Oct-24 08:00:00 | COLO2 |  |
| 316 | CHI05-YARD-2570 | Install MV Gear - Colo 2 - North | Not Started | 06-Nov-24 17:00:00 | 90 | CHI05-PH2-FIT-BL-D5,3,3,4,1 | 31-Oct-24 08:00:00 | COLO2 |  |
| 317 | CHI05-YARD-2120 | Set the Generator - Colo 2 - South | Not Started | 07-Oct-24 17:00:00 | 65 | CHI05-PH2-FIT-BL-D5,3,3,4,2 | 01-Oct-24 08:00:00 | COLO2 |  |
| 318 | CHI05-YARD-2300 | Install MEP raceway conduit and piping - Colo 2 - South | Not Started | 09-Oct-24 17:00:00 | 131 | CHI05-PH2-FIT-BL-D5,3,3,4,2 | 19-Sep-24 08:00:00 | COLO2 |  |
| 319 | CHI05-YARD-2350 | Wire pulling and termination for MSB - Colo 2 - South | Not Started | 17-Dec-24 17:00:00 | 98 | CHI05-PH2-FIT-BL-D5,3,3,4,2 | 26-Nov-24 08:00:00 | COLO2 |  |
| 320 | CHI05-YARD-2450 | Install screen wall - Colo 2 - South | Not Started | 06-Feb-25 17:00:00 | 125 | CHI05-PH2-FIT-BL-D5,3,3,4,2 | 10-Jan-25 08:00:00 | COLO2 |  |
| 321 | CHI05-YARD-2130 | Install Generator - Colo 2 - South | Not Started | 25-Nov-24 17:00:00 | 82 | CHI05-PH2-FIT-BL-D5,3,3,4,2 | 19-Nov-24 08:00:00 | COLO2 |  |
| 322 | CHI05-YARD-2390 | Installation of Mech. Piping and testing - Colo 2 - South | Not Started | 09-Jan-25 17:00:00 | 125 | CHI05-PH2-FIT-BL-D5,3,3,4,2 | 18-Dec-24 08:00:00 | COLO2 |  |
| 323 | CHI05-YARD-2500 | Set the MV Gear - Colo 2 - South | Not Started | 09-Oct-24 17:00:00 | 63 | CHI05-PH2-FIT-BL-D5,3,3,4,2 | 03-Oct-24 08:00:00 | COLO2 |  |
| 324 | CHI05-YARD-2510 | Install MV Gear - Colo 2 - South | Not Started | 16-Oct-24 17:00:00 | 105 | CHI05-PH2-FIT-BL-D5,3,3,4,2 | 10-Oct-24 08:00:00 | COLO2 |  |
| 325 | CHI05-YARD-2010 | Set the MV Gear - Colo 5 - West | Not Started | 20-Nov-24 17:00:00 | 63 | CHI05-PH2-FIT-BL-D5,3,3,4,4 | 14-Nov-24 08:00:00 | COLO5 |  |
| 326 | CHI05-YARD-2050 | Install MEP raceway conduit and piping - Colo 5 - West | Not Started | 20-Nov-24 17:00:00 | 68 | CHI05-PH2-FIT-BL-D5,3,3,4,4 | 31-Oct-24 08:00:00 | COLO5 |  |
| 327 | CHI05-YARD-2150 | Wire pulling and termination for MSB - Colo 5 - West | Not Started | 08-Jan-25 17:00:00 | 51 | CHI05-PH2-FIT-BL-D5,3,3,4,4 | 17-Dec-24 08:00:00 | COLO5 |  |
| 328 | CHI05-YARD-2250 | Install screen wall - Colo 5 - West | Not Started | 05-Feb-25 17:00:00 | 126 | CHI05-PH2-FIT-BL-D5,3,3,4,4 | 09-Jan-25 08:00:00 | COLO5 |  |
| 329 | CHI05-YARD-2020 | Install MV Gear - Colo 5 - West | Not Started | 27-Nov-24 17:00:00 | 63 | CHI05-PH2-FIT-BL-D5,3,3,4,4 | 21-Nov-24 08:00:00 | COLO5 |  |
| 330 | CHI05-YARD-2200 | Installation of Mech. Piping and testing - Colo 5 - West | Not Started | 08-Jan-25 17:00:00 | 126 | CHI05-PH2-FIT-BL-D5,3,3,4,4 | 17-Dec-24 08:00:00 | COLO5 |  |
| 331 | CHI05-YARD-2620 | Set the Generator - Colo 5 - West | Not Started | 18-Nov-24 17:00:00 | 65 | CHI05-PH2-FIT-BL-D5,3,3,4,4 | 12-Nov-24 08:00:00 | COLO5 |  |
| 332 | CHI05-YARD-2630 | Install Generator - Colo 5 - West | Not Started | 16-Dec-24 17:00:00 | 51 | CHI05-PH2-FIT-BL-D5,3,3,4,4 | 10-Dec-24 08:00:00 | COLO5 |  |
| 333 | CHI05-YARD-2060 | Set the Generator - Colo 3 - North | Not Started | 04-Nov-24 17:00:00 | 65 | CHI05-PH2-FIT-BL-D5,3,3,4,5 | 29-Oct-24 08:00:00 | COLO3 |  |
| 334 | CHI05-YARD-2160 | Install MEP raceway conduit and piping - Colo 3 - North | Not Started | 06-Nov-24 17:00:00 | 111 | CHI05-PH2-FIT-BL-D5,3,3,4,5 | 17-Oct-24 08:00:00 | COLO3 |  |
| 335 | CHI05-YARD-2260 | Wire pulling and termination for MSB - Colo 3 - North | Not Started | 23-Dec-24 17:00:00 | 94 | CHI05-PH2-FIT-BL-D5,3,3,4,5 | 03-Dec-24 08:00:00 | COLO3 |  |
| 336 | CHI05-YARD-2400 | Install screen wall - Colo 3 - North | Not Started | 22-Jan-25 17:00:00 | 136 | CHI05-PH2-FIT-BL-D5,3,3,4,5 | 24-Dec-24 08:00:00 | COLO3 |  |
| 337 | CHI05-YARD-2090 | Install Generator - Colo 3 - North | Not Started | 02-Dec-24 17:00:00 | 71 | CHI05-PH2-FIT-BL-D5,3,3,4,5 | 25-Nov-24 08:00:00 | COLO3 |  |
| 338 | CHI05-YARD-2290 | Installation of Mech. Piping and testing - Colo 3 - North | Not Started | 23-Dec-24 17:00:00 | 136 | CHI05-PH2-FIT-BL-D5,3,3,4,5 | 03-Dec-24 08:00:00 | COLO3 |  |
| 339 | CHI05-YARD-2580 | Set the MV Gear - Colo 3 - North | Not Started | 06-Nov-24 17:00:00 | 63 | CHI05-PH2-FIT-BL-D5,3,3,4,5 | 31-Oct-24 08:00:00 | COLO3 |  |
| 340 | CHI05-YARD-2590 | Install MV Gear - Colo 3 - North | Not Started | 13-Nov-24 17:00:00 | 78 | CHI05-PH2-FIT-BL-D5,3,3,4,5 | 07-Nov-24 08:00:00 | COLO3 |  |
| 341 | CHI05-YARD-2100 | Set the MV Gear - Colo 4 - North | Not Started | 13-Nov-24 17:00:00 | 63 | CHI05-PH2-FIT-BL-D5,3,3,4,6 | 07-Nov-24 08:00:00 | COLO4 |  |
| 342 | CHI05-YARD-2240 | Install MEP raceway conduit and piping - Colo 4 - North | Not Started | 13-Nov-24 17:00:00 | 69 | CHI05-PH2-FIT-BL-D5,3,3,4,6 | 24-Oct-24 08:00:00 | COLO4 |  |
| 343 | CHI05-YARD-2310 | Wire pulling and termination for MSB - Colo 4 - North | Not Started | 08-Jan-25 17:00:00 | 47 | CHI05-PH2-FIT-BL-D5,3,3,4,6 | 17-Dec-24 08:00:00 | COLO4 |  |
| 344 | CHI05-YARD-2430 | Install screen wall - Colo 4 - North | Not Started | 05-Feb-25 17:00:00 | 126 | CHI05-PH2-FIT-BL-D5,3,3,4,6 | 09-Jan-25 08:00:00 | COLO4 |  |
| 345 | CHI05-YARD-2110 | Install MV Gear - Colo 4 - North | Not Started | 20-Nov-24 17:00:00 | 64 | CHI05-PH2-FIT-BL-D5,3,3,4,6 | 14-Nov-24 08:00:00 | COLO4 |  |
| 346 | CHI05-YARD-2330 | Installation of Mech. Piping and testing - Colo 4 - North | Not Started | 08-Jan-25 17:00:00 | 126 | CHI05-PH2-FIT-BL-D5,3,3,4,6 | 17-Dec-24 08:00:00 | COLO4 |  |
| 347 | CHI05-YARD-2600 | Set the Generator - Colo 4 - North | Not Started | 11-Nov-24 17:00:00 | 65 | CHI05-PH2-FIT-BL-D5,3,3,4,6 | 05-Nov-24 08:00:00 | COLO4 |  |
| 348 | CHI05-YARD-2610 | Install Generator - Colo 4 - North | Not Started | 16-Dec-24 17:00:00 | 47 | CHI05-PH2-FIT-BL-D5,3,3,4,6 | 10-Dec-24 08:00:00 | COLO4 |  |
| 349 | CHI05-YARD-2170 | Set the MV Gear - Colo 3 - South | Not Started | 16-Oct-24 17:00:00 | 63 | CHI05-PH2-FIT-BL-D5,3,3,4,7 | 10-Oct-24 08:00:00 | COLO3 |  |
| 350 | CHI05-YARD-2340 | Install MEP raceway conduit and piping - Colo 3 - South | Not Started | 16-Oct-24 17:00:00 | 126 | CHI05-PH2-FIT-BL-D5,3,3,4,7 | 26-Sep-24 08:00:00 | COLO3 |  |

| entry | activity_id | activity_name | activity_status | finish | total_float | wbs_code | start | location | sub_location |
| --- | --- | --- | --- | --- | --- | --- | --- | --- | --- |
| 351 | CHI05-YARD-2380 | Wire pulling and termination for MSB - Colo 3 - South | Not Started | 23-Dec-24 17:00:00 | 94 | CHI05-PH2-FIT-BL-D5,3,3,4,7 | 03-Dec-24 08:00:00 | COLO3 |  |
| 352 | CHI05-YARD-2460 | Install screen wall - Colo 3 - South | Not Started | 22-Jan-25 17:00:00 | 136 | CHI05-PH2-FIT-BL-D5,3,3,4,7 | 24-Dec-24 08:00:00 | COLO3 |  |
| 353 | CHI05-YARD-2190 | Install MV Gear - Colo 3 - South | Not Started | 23-Oct-24 17:00:00 | 93 | CHI05-PH2-FIT-BL-D5,3,3,4,7 | 17-Oct-24 08:00:00 | COLO3 |  |
| 354 | CHI05-YARD-2410 | Installation of Mech. Piping and testing - Colo 3 - South | Not Started | 23-Dec-24 17:00:00 | 136 | CHI05-PH2-FIT-BL-D5,3,3,4,7 | 03-Dec-24 08:00:00 | COLO3 |  |
| 355 | CHI05-YARD-2520 | Set the Generator - Colo 3 - South | Not Started | 14-Oct-24 17:00:00 | 65 | CHI05-PH2-FIT-BL-D5,3,3,4,7 | 08-Oct-24 08:00:00 | COLO3 |  |
| 356 | CHI05-YARD-2530 | Install Generator - Colo 3 - South | Not Started | 02-Dec-24 17:00:00 | 71 | CHI05-PH2-FIT-BL-D5,3,3,4,7 | 25-Nov-24 08:00:00 | COLO3 |  |
| 357 | CHI05-YARD-2220 | Set the MV Gear - Colo 4 - South | Not Started | 23-Oct-24 17:00:00 | 63 | CHI05-PH2-FIT-BL-D5,3,3,4,8 | 17-Oct-24 08:00:00 | COLO4 |  |
| 358 | CHI05-YARD-2370 | Install MEP raceway conduit and piping - Colo 4 - South | Not Started | 23-Oct-24 17:00:00 | 84 | CHI05-PH2-FIT-BL-D5,3,3,4,8 | 03-Oct-24 08:00:00 | COLO4 |  |
| 359 | CHI05-YARD-2420 | Wire pulling and termination for MSB - Colo 4 - South | Not Started | 08-Jan-25 17:00:00 | 47 | CHI05-PH2-FIT-BL-D5,3,3,4,8 | 17-Dec-24 08:00:00 | COLO4 |  |
| 360 | CHI05-YARD-2470 | Install screen wall - Colo 4 - South | Not Started | 05-Feb-25 17:00:00 | 126 | CHI05-PH2-FIT-BL-D5,3,3,4,8 | 09-Jan-25 08:00:00 | COLO4 |  |
| 361 | CHI05-YARD-2230 | Install MV Gear - Colo 4 - South | Not Started | 30-Oct-24 17:00:00 | 79 | CHI05-PH2-FIT-BL-D5,3,3,4,8 | 24-Oct-24 08:00:00 | COLO4 |  |
| 362 | CHI05-YARD-2440 | Installation of Mech. Piping and testing - Colo 4 - South | Not Started | 08-Jan-25 17:00:00 | 126 | CHI05-PH2-FIT-BL-D5,3,3,4,8 | 17-Dec-24 08:00:00 | COLO4 |  |
| 363 | CHI05-YARD-2540 | Set the Generator - Colo 4 - South | Not Started | 21-Oct-24 17:00:00 | 65 | CHI05-PH2-FIT-BL-D5,3,3,4,8 | 15-Oct-24 08:00:00 | COLO4 |  |
| 364 | CHI05-YARD-2550 | Install Generator - Colo 4 - South | Not Started | 16-Dec-24 17:00:00 | 47 | CHI05-PH2-FIT-BL-D5,3,3,4,8 | 10-Dec-24 08:00:00 | COLO4 |  |
| 365 | CHI05-YARD-2070 | Set the MV Gear - Colo 5 - East | Not Started | 30-Sep-24 17:00:00 | 65 | CHI05-PH2-FIT-BL-D5,3,3,4,9 | 24-Sep-24 08:00:00 | COLO5 |  |
| 366 | CHI05-YARD-2180 | Install MEP raceway conduit and piping - Colo 5 - East | Not Started | 30-Sep-24 17:00:00 | 105 | CHI05-PH2-FIT-BL-D5,3,3,4,9 | 10-Sep-24 08:00:00 | COLO5 |  |
| 367 | CHI05-YARD-2270 | Wire pulling and termination for MSB - Colo 5 - East | Not Started | 08-Jan-25 17:00:00 | 51 | CHI05-PH2-FIT-BL-D5,3,3,4,9 | 17-Dec-24 08:00:00 | COLO5 |  |
| 368 | CHI05-YARD-2320 | Install screen wall - Colo 5 - East | Not Started | 05-Feb-25 17:00:00 | 126 | CHI05-PH2-FIT-BL-D5,3,3,4,9 | 09-Jan-25 08:00:00 | COLO5 |  |
| 369 | CHI05-YARD-2080 | Install MV Gear - Colo 5 - East | Not Started | 15-Oct-24 17:00:00 | 94 | CHI05-PH2-FIT-BL-D5,3,3,4,9 | 09-Oct-24 08:00:00 | COLO5 |  |
| 370 | CHI05-YARD-2280 | Installation of Mech. Piping and testing - Colo 5 - Eest | Not Started | 08-Jan-25 17:00:00 | 126 | CHI05-PH2-FIT-BL-D5,3,3,4,9 | 17-Dec-24 08:00:00 | COLO5 |  |
| 371 | CHI05-YARD-2480 | Set the Generator - Colo 5 - East | Not Started | 26-Sep-24 17:00:00 | 67 | CHI05-PH2-FIT-BL-D5,3,3,4,9 | 20-Sep-24 08:00:00 | COLO5 |  |
| 372 | CHI05-YARD-2490 | Install Generator - Colo 5 - East | Not Started | 16-Dec-24 17:00:00 | 51 | CHI05-PH2-FIT-BL-D5,3,3,4,9 | 10-Dec-24 08:00:00 | COLO5 |  |
| 373 | CHI05-03-01-MG-1110 | Install Dampers and actuators at Louvers - Upper level (RED) - COLO3 Cell 1 - MG | Not Started | 12-Nov-24 17:00:00 | 0 | CHI05-PH2-FIT-BL-D5,3,3,1,6,2 | 06-Nov-24 08:00:00 | UPPERLEVEL(RED) |  |
| 374 | CHI05-03-01-MG-1120 | Install Dampers and actuators at Louvers - Lower level (OA) - COLO3 Cell 1 - MG | Not Started | 14-Nov-24 17:00:00 | 17 | CHI05-PH2-FIT-BL-D5,3,3,1,6,2 | 08-Nov-24 08:00:00 | LOWERLEVEL(OA) |  |
| 375 | CHI05-03-01-MG-1130 | Overhead MEP Installation - COLO3 Cell 1 - MG | Not Started | 29-Nov-24 17:00:00 | 17 | CHI05-PH2-FIT-BL-D5,3,3,1,6,2 | 15-Nov-24 08:00:00 | COLO3 | CELL_1 |
| 376 | CHI05-03-01-MG-1140 | Deliver AHU into Mech. Gallery - COLO3 Cell 1 - MG | Not Started | 03-Dec-24 17:00:00 | 17 | CHI05-PH2-FIT-BL-D5,3,3,1,6,2 | 02-Dec-24 08:00:00 | COLO3 | CELL_1 |
| 377 | CHI05-03-01-MG-1150 | Install Walls and Primer Paint - COLO3 Cell 1 - MG | Not Started | 17-Dec-24 17:00:00 | 17 | CHI05-PH2-FIT-BL-D5,3,3,1,6,2 | 04-Dec-24 08:00:00 | COLO3 | CELL_1 |
| 378 | CHI05-03-01-MG-1160 | Placing the AHU - COLO3 Cell 1 - MG | Not Started | 30-Dec-24 12:00:00 | 72 | CHI05-PH2-FIT-BL-D5,3,3,1,6,2 | 26-Dec-24 08:00:00 | COLO3 | CELL_1 |
| 379 | CHI05-03-01-MG-1170 | Layout Ceiling and install Pencile Rod - COLO3 Cell 1 - MG | Not Started | 18-Dec-24 17:00:00 | 76 | CHI05-PH2-FIT-BL-D5,3,3,1,6,2 | 18-Dec-24 08:00:00 | COLO3 | CELL_1 |
| 380 | CHI05-03-01-MG-1180 | Piping and Electrical Termination to AHUs - COLO3 Cell 1 - MG | Not Started | 14-Jan-25 12:00:00 | 72 | CHI05-PH2-FIT-BL-D5,3,3,1,6,2 | 30-Dec-24 13:00:00 | COLO3 | CELL_1 |
| 381 | CHI05-03-01-MG-1190 | Pipe Testing - COLO3 Cell 1 - MG | Not Started | 16-Jan-25 12:00:00 | 78 | CHI05-PH2-FIT-BL-D5,3,3,1,6,2 | 14-Jan-25 13:00:00 | COLO3 | CELL_1 |
| 382 | CHI05-03-01-MG-1200 | Install ceiling and Light Fittings - COLO3 Cell 1 - MG | Not Started | 28-Jan-25 12:00:00 | 78 | CHI05-PH2-FIT-BL-D5,3,3,1,6,2 | 16-Jan-25 13:00:00 | COLO3 | CELL_1 |
| 383 | CHI05-03-01-MG-1210 | Trim out MEP - COLO3 Cell 1 - MG | Not Started | 28-Jan-25 12:00:00 | 87 | CHI05-PH2-FIT-BL-D5,3,3,1,6,2 | 21-Jan-25 13:00:00 | COLO3 | CELL_1 |
| 384 | CHI05-03-01-MG-1155 | Post Wall Overhead MEP - COLO3 Cell 1 - MG | Not Started | 09-Jan-25 17:00:00 | 72 | CHI05-PH2-FIT-BL-D5,3,3,1,6,2 | 18-Dec-24 08:00:00 | COLO3 | CELL_1 |
| 385 | CHI05-03-01-ER-1110 | Install Walls and Primer Paint - COLO3 Cell 1 - ER | Not Started | 19-Nov-24 17:00:00 | 0 | CHI05-PH2-FIT-BL-D5,3,3,1,6,5 | 06-Nov-24 08:00:00 | COLO3 | CELL_1 |
| 386 | CHI05-03-01-ER-1120 | Sprinklers and Overhead MEP (Above Ceiling) - COLO3 Cell 1 - ER | Not Started | 06-Dec-24 17:00:00 | 29 | CHI05-PH2-FIT-BL-D5,3,3,1,6,5 | 22-Nov-24 08:00:00 | COLO3 | CELL_1 |
| 387 | CHI05-03-01-ER-1130 | Install Upper Screens - COLO3 Cell 1 - ER | Not Started | 21-Nov-24 17:00:00 | 29 | CHI05-PH2-FIT-BL-D5,3,3,1,6,5 | 15-Nov-24 08:00:00 | COLO3 | CELL_1 |
| 388 | CHI05-03-01-ER-1140 | Install Ceiling - COLO3 Cell 1 - ER | Not Started | 11-Dec-24 17:00:00 | 29 | CHI05-PH2-FIT-BL-D5,3,3,1,6,5 | 09-Dec-24 08:00:00 | COLO3 | CELL_1 |
| 389 | CHI05-03-01-ER-1150 | Below Ceiling MEP Rough In - COLO3 Cell 1 - ER | Not Started | 30-Dec-24 17:00:00 | 27 | CHI05-PH2-FIT-BL-D5,3,3,1,6,5 | 16-Dec-24 08:00:00 | COLO3 | CELL_1 |
| 390 | CHI05-03-01-ER-1160 | Installation of ADP & ATS - COLO3 Cell 1 - ER | Not Started | 08-Jan-25 17:00:00 | 78 | CHI05-PH2-FIT-BL-D5,3,3,1,6,5 | 02-Jan-25 08:00:00 | COLO3 | CELL_1 |
| 391 | CHI05-03-01-ER-1170 | Installation of UPS Equipment - COLO3 Cell 1 - ER | Not Started | 30-Jan-25 17:00:00 | 40 | CHI05-PH2-FIT-BL-D5,3,3,1,6,5 | 24-Jan-25 08:00:00 | COLO3 | CELL_1 |
| 392 | CHI05-03-01-ER-1180 | Connet to Cable tray and conduit equipment - COLO3 Cell 1 - ER | Not Started | 10-Jan-25 17:00:00 | 82 | CHI05-PH2-FIT-BL-D5,3,3,1,6,5 | 06-Jan-25 08:00:00 | COLO3 | CELL_1 |
| 393 | CHI05-03-01-ER-1190 | Cable Pulling at Elec. Equipment - COLO3 Cell 1 - ER | Not Started | 31-Jan-25 17:00:00 | 82 | CHI05-PH2-FIT-BL-D5,3,3,1,6,5 | 13-Jan-25 08:00:00 | COLO3 | CELL_1 |
| 394 | CHI05-03-01-ER-1200 | Door Frame Installation - COLO3 Cell 1 - ER | Not Started | 06-Feb-25 17:00:00 | 40 | CHI05-PH2-FIT-BL-D5,3,3,1,6,5 | 31-Jan-25 08:00:00 | COLO3 | CELL_1 |
| 395 | CHI05-03-01-ER-1210 | Finishes and Signage - COLO3 Cell 1 - ER | Not Started | 13-Feb-25 17:00:00 | 105 | CHI05-PH2-FIT-BL-D5,3,3,1,6,5 | 07-Feb-25 08:00:00 | COLO3 | CELL_1 |
| 396 | CHI05-03-01-ER-1155 | Installation of MSB - COLO3 Cell 1 - ER | Not Started | 24-Dec-24 17:00:00 | 77 | CHI05-PH2-FIT-BL-D5,3,3,1,6,5 | 18-Dec-24 08:00:00 | COLO3 | CELL_1 |
| 397 | CHI05-03-01-DH-1100 | Cable Pulling at PDU & Busway - COLO3 Cell 1 - DH | Not Started | 11-Feb-25 17:00:00 | 17 | CHI05-PH2-FIT-BL-D5,3,3,1,6,1 | 22-Jan-25 08:00:00 | COLO3 | CELL_1 |
| 398 | CHI05-03-01-DH-1110 | Overhead MEP and Hangers (Above Ceiling) - COLO3 Cell 1 - DH | Not Started | 21-Nov-24 17:00:00 | 37 | CHI05-PH2-FIT-BL-D5,3,3,1,6,1 | 06-Nov-24 08:00:00 | COLO3 | CELL_1 |
| 399 | CHI05-03-01-DH-1120 | HAC install and Rise - COLO3 Cell 1 - DH | Not Started | 28-Jan-25 17:00:00 | 56 | CHI05-PH2-FIT-BL-D5,3,3,1,6,1 | 22-Jan-25 08:00:00 | COLO3 | CELL_1 |
| 400 | CHI05-03-01-DH-1130 | Termination at PDU & Busway- COLO3 Cell 1 - DH | Not Started | 04-Feb-25 17:00:00 | 22 | CHI05-PH2-FIT-BL-D5,3,3,1,6,1 | 22-Jan-25 08:00:00 | COLO3 | CELL_1 |
| 401 | CHI05-03-01-DH-1140 | Security Screen Installation - COLO3 Cell 1 - DH | Not Started | 20-Dec-24 17:00:00 | 17 | CHI05-PH2-FIT-BL-D5,3,3,1,6,1 | 18-Dec-24 08:00:00 | COLO3 | CELL_1 |
| 402 | CHI05-03-01-DH-1150 | Ceiling Grid and Tile - COLO3 Cell 1 - DH | Not Started | 30-Dec-24 17:00:00 | 17 | CHI05-PH2-FIT-BL-D5,3,3,1,6,1 | 23-Dec-24 08:00:00 | COLO3 | CELL_1 |
| 403 | CHI05-03-01-DH-1160 | Install PDU's - COLO3 Cell 1 - DH | Not Started | 21-Jan-25 17:00:00 | 17 | CHI05-PH2-FIT-BL-D5,3,3,1,6,1 | 15-Jan-25 08:00:00 | COLO3 | CELL_1 |
| 404 | CHI05-03-01-DH-1170 | Overhead MEP Installation (Below Ceiling) - COLO3 Cell 1 - DH | Not Started | 14-Jan-25 17:00:00 | 17 | CHI05-PH2-FIT-BL-D5,3,3,1,6,1 | 31-Dec-24 08:00:00 | COLO3 | CELL_1 |
| 405 | CHI05-03-01-DH-1180 | Install Low Voltage Wiring and Fiber Optic - COLO3 Cell 1 - DH | Not Started | 11-Feb-25 17:00:00 | 56 | CHI05-PH2-FIT-BL-D5,3,3,1,6,1 | 29-Jan-25 08:00:00 | COLO3 | CELL_1 |
| 406 | CHI05-03-01-DH-1190 | HAC Placing - COLO3 Cell 1 - DH | Not Started | 21-Jan-25 17:00:00 | 56 | CHI05-PH2-FIT-BL-D5,3,3,1,6,1 | 15-Jan-25 08:00:00 | COLO3 | CELL_1 |
| 407 | CHI05-03-01-DH-1200 | Finishes and Signage - COLO3 Cell 1 - DH | Not Started | 18-Feb-25 17:00:00 | 102 | CHI05-PH2-FIT-BL-D5,3,3,1,6,1 | 12-Feb-25 08:00:00 | COLO3 | CELL_1 |
| 408 | CHI05-03-01-L1-1260 | Interior - L1 UPS - COLO3 Cell 1 | Not Started | 31-Jan-25 17:00:00 | 58 | CHI05-PH2-FIT-BL-D5,3,3,1,6,4,1 | 31-Jan-25 08:00:00 | COLO3 | CELL_1 |
| 409 | CHI05-03-01-L1-1270 | Interior - L1 MSB - COLO3 Cell 1 | Not Started | 03-Feb-25 17:00:00 | 70 | CHI05-PH2-FIT-BL-D5,3,3,1,6,4,1 | 03-Feb-25 08:00:00 | COLO3 | CELL_1 |
| 410 | CHI05-03-01-L1-1280 | Interior - L1 PDUs - COLO3 Cell 1 | Not Started | 04-Feb-25 17:00:00 | 74 | CHI05-PH2-FIT-BL-D5,3,3,1,6,4,1 | 04-Feb-25 08:00:00 | COLO3 | CELL_1 |
| 411 | CHI05-03-01-L1-1290 | Interior - L1 AHUs - COLO3 Cell 1 | Not Started | 06-Feb-25 17:00:00 | 87 | CHI05-PH2-FIT-BL-D5,3,3,1,6,4,1 | 06-Feb-25 08:00:00 | COLO3 | CELL_1 |
| 412 | CHI05-03-01-L1-1300 | Interior - L1 ATSs - COLO3 Cell 1 | Not Started | 05-Feb-25 17:00:00 | 83 | CHI05-PH2-FIT-BL-D5,3,3,1,6,4,1 | 05-Feb-25 08:00:00 | COLO3 | CELL_1 |
| 413 | CHI05-03-01-L1-1310 | Interior - L1 Busway - COLO3 Cell 1 | Not Started | 05-Feb-25 17:00:00 | 83 | CHI05-PH2-FIT-BL-D5,3,3,1,6,4,1 | 05-Feb-25 08:00:00 | COLO3 | CELL_1 |
| 414 | CHI05-03-01-L1-1370 | Interior - L1 ADP - COLO3 Cell 1 | Not Started | 04-Feb-25 17:00:00 | 79 | CHI05-PH2-FIT-BL-D5,3,3,1,6,4,1 | 04-Feb-25 08:00:00 | COLO3 | CELL_1 |
| 415 | CHI05-03-01-L2-1380 | Interior - L2 UPS - COLO3 Cell 1 | Not Started | 03-Mar-25 17:00:00 | 50 | CHI05-PH2-FIT-BL-D5,3,3,1,6,4,2 | 25-Feb-25 08:00:00 | COLO3 | CELL_1 |
| 416 | CHI05-03-01-L2-1390 | Interior - L2 MSB - COLO3 Cell 1 | Not Started | 10-Mar-25 17:00:00 | 50 | CHI05-PH2-FIT-BL-D5,3,3,1,6,4,2 | 04-Mar-25 08:00:00 | COLO3 | CELL_1 |
| 417 | CHI05-03-01-L2-1400 | Interior - L2 PDUs - COLO3 Cell 1 | Not Started | 17-Mar-25 17:00:00 | 50 | CHI05-PH2-FIT-BL-D5,3,3,1,6,4,2 | 11-Mar-25 08:00:00 | COLO3 | CELL_1 |
| 418 | CHI05-03-01-L2-1410 | Interior - L2 AHUs - COLO3 Cell 1 | Not Started | 31-Mar-25 17:00:00 | 55 | CHI05-PH2-FIT-BL-D5,3,3,1,6,4,2 | 25-Mar-25 08:00:00 | COLO3 | CELL_1 |
| 419 | CHI05-03-01-L2-1420 | Interior - L2 ATSs - COLO3 Cell 1 | Not Started | 24-Mar-25 17:00:00 | 55 | CHI05-PH2-FIT-BL-D5,3,3,1,6,4,2 | 18-Mar-25 08:00:00 | COLO3 | CELL_1 |
| 420 | CHI05-03-01-L2-1430 | Interior - L2 Busway - COLO3 Cell 1 | Not Started | 24-Mar-25 17:00:00 | 55 | CHI05-PH2-FIT-BL-D5,3,3,1,6,4,2 | 18-Mar-25 08:00:00 | COLO3 | CELL_1 |

| entry | activity_id | activity_name | activity_status | finish | total_float | wbs_code | start | location | sub_location |
| --- | --- | --- | --- | --- | --- | --- | --- | --- | --- |
| 421 | CHI05-03-01-L2-1490 | Interior - L2 ADP - COLO3 Cell 1 | Not Started | 17-Mar-25 17:00:00 | 55 | CHI05-PH2-FIT-BL-D5,3,3,1,6,4,2 | 11-Mar-25 08:00:00 | COLO3 | CELL_1 |
| 422 | CHI05-03-01-L3-1500 | Interior - L3 UPS - COLO3 Cell 1 | Not Started | 01-Apr-25 17:00:00 | 34 | CHI05-PH2-FIT-BL-D5,3,3,1,6,4,3 | 26-Mar-25 08:00:00 | COLO3 | CELL_1 |
| 423 | CHI05-03-01-L3-1510 | Interior - L3 MSB - COLO3 Cell 1 | Not Started | 08-Apr-25 17:00:00 | 34 | CHI05-PH2-FIT-BL-D5,3,3,1,6,4,3 | 02-Apr-25 08:00:00 | COLO3 | CELL_1 |
| 424 | CHI05-03-01-L3-1520 | Interior - L3 PDUs - COLO3 Cell 1 | Not Started | 15-Apr-25 17:00:00 | 34 | CHI05-PH2-FIT-BL-D5,3,3,1,6,4,3 | 09-Apr-25 08:00:00 | COLO3 | CELL_1 |
| 425 | CHI05-03-01-L3-1530 | Interior - L3 AHUs - COLO3 Cell 1 | Not Started | 06-May-25 17:00:00 | 34 | CHI05-PH2-FIT-BL-D5,3,3,1,6,4,3 | 30-Apr-25 08:00:00 | COLO3 | CELL_1 |
| 426 | CHI05-03-01-L3-1540 | Interior - L3 ATSs - COLO3 Cell 1 | Not Started | 29-Apr-25 17:00:00 | 34 | CHI05-PH2-FIT-BL-D5,3,3,1,6,4,3 | 23-Apr-25 08:00:00 | COLO3 | CELL_1 |
| 427 | CHI05-03-01-L3-1550 | Interior - L3 Busway - COLO3 Cell 1 | Not Started | 06-May-25 17:00:00 | 34 | CHI05-PH2-FIT-BL-D5,3,3,1,6,4,3 | 30-Apr-25 08:00:00 | COLO3 | CELL_1 |
| 428 | CHI05-03-01-L3-1610 | Interior - L3 ADP - COLO3 Cell 1 | Not Started | 22-Apr-25 17:00:00 | 34 | CHI05-PH2-FIT-BL-D5,3,3,1,6,4,3 | 16-Apr-25 08:00:00 | COLO3 | CELL_1 |
| 429 | CHI05-03-02-MG-1220 | Install Dampers and actuators at Louvers - Upper level (RED) - COLO3 Cell 2 - MG | Not Started | 19-Nov-24 17:00:00 | 4 | CHI05-PH2-FIT-BL-D5,3,3,1,1,2 | 13-Nov-24 08:00:00 | UPPERLEVEL(RED) |  |
| 430 | CHI05-03-02-MG-1230 | Install Dampers and actuators at Louvers - Lower level (OA) - COLO3 Cell 2 - MG | Not Started | 21-Nov-24 17:00:00 | 27 | CHI05-PH2-FIT-BL-D5,3,3,1,1,2 | 15-Nov-24 08:00:00 | LOWERLEVEL(OA) |  |
| 431 | CHI05-03-02-MG-1240 | Overhead MEP Installation - COLO3 Cell 2 - MG | Not Started | 13-Dec-24 17:00:00 | 22 | CHI05-PH2-FIT-BL-D5,3,3,1,1,2 | 02-Dec-24 08:00:00 | COLO3 | CELL_2 |
| 432 | CHI05-03-02-MG-1250 | Deliver AHU into Mech. Gallery - COLO3 Cell 2 - MG | Not Started | 17-Dec-24 17:00:00 | 22 | CHI05-PH2-FIT-BL-D5,3,3,1,1,2 | 16-Dec-24 08:00:00 | COLO3 | CELL_2 |
| 433 | CHI05-03-02-MG-1260 | Install Walls and Primer Paint - COLO3 Cell 2 - MG | Not Started | 02-Jan-25 17:00:00 | 22 | CHI05-PH2-FIT-BL-D5,3,3,1,1,2 | 18-Dec-24 08:00:00 | COLO3 | CELL_2 |
| 434 | CHI05-03-02-MG-1270 | Placing the AHU - COLO3 Cell 2 - MG | Not Started | 14-Jan-25 12:00:00 | 72 | CHI05-PH2-FIT-BL-D5,3,3,1,1,2 | 10-Jan-25 08:00:00 | COLO3 | CELL_2 |
| 435 | CHI05-03-02-MG-1280 | Layout Ceiling and install Pencile Rod - COLO3 Cell 2 - MG | Not Started | 03-Jan-25 17:00:00 | 76 | CHI05-PH2-FIT-BL-D5,3,3,1,1,2 | 03-Jan-25 08:00:00 | COLO3 | CELL_2 |
| 436 | CHI05-03-02-MG-1290 | Piping and Electrical Termination to AHUs - COLO3 Cell 2 - MG | Not Started | 28-Jan-25 12:00:00 | 72 | CHI05-PH2-FIT-BL-D5,3,3,1,1,2 | 14-Jan-25 13:00:00 | COLO3 | CELL_2 |
| 437 | CHI05-03-02-MG-1300 | Pipe Testing - COLO3 Cell 2 - MG | Not Started | 30-Jan-25 12:00:00 | 76 | CHI05-PH2-FIT-BL-D5,3,3,1,1,2 | 28-Jan-25 13:00:00 | COLO3 | CELL_2 |
| 438 | CHI05-03-02-MG-1310 | Install ceiling and Light Fittings - COLO3 Cell 2 - MG | Not Started | 11-Feb-25 12:00:00 | 76 | CHI05-PH2-FIT-BL-D5,3,3,1,1,2 | 30-Jan-25 13:00:00 | COLO3 | CELL_2 |
| 439 | CHI05-03-02-MG-1320 | Trim out MEP - COLO3 Cell 2 - MG | Not Started | 11-Feb-25 12:00:00 | 82 | CHI05-PH2-FIT-BL-D5,3,3,1,1,2 | 04-Feb-25 13:00:00 | COLO3 | CELL_2 |
| 440 | CHI05-03-02-MG-1265 | Post Wall Overhead MEP - COLO3 Cell 2 - MG | Not Started | 23-Jan-25 17:00:00 | 72 | CHI05-PH2-FIT-BL-D5,3,3,1,1,2 | 03-Jan-25 08:00:00 | COLO3 | CELL_2 |
| 441 | CHI05-03-02-ER-1220 | Install Walls and Primer Paint - COLO3 Cell 2 - ER | Not Started | 04-Dec-24 17:00:00 | 0 | CHI05-PH2-FIT-BL-D5,3,3,1,1,5 | 20-Nov-24 08:00:00 | COLO3 | CELL_2 |
| 442 | CHI05-03-02-ER-1230 | Sprinklers and Overhead MEP (Above Ceiling) - COLO3 Cell 2 - ER | Not Started | 20-Dec-24 17:00:00 | 29 | CHI05-PH2-FIT-BL-D5,3,3,1,1,5 | 09-Dec-24 08:00:00 | COLO3 | CELL_2 |
| 443 | CHI05-03-02-ER-1240 | Install Upper Screens - COLO3 Cell 2 - ER | Not Started | 06-Dec-24 17:00:00 | 29 | CHI05-PH2-FIT-BL-D5,3,3,1,1,5 | 02-Dec-24 08:00:00 | COLO3 | CELL_2 |
| 444 | CHI05-03-02-ER-1250 | Install Ceiling - COLO3 Cell 2 - ER | Not Started | 26-Dec-24 17:00:00 | 29 | CHI05-PH2-FIT-BL-D5,3,3,1,1,5 | 23-Dec-24 08:00:00 | COLO3 | CELL_2 |
| 445 | CHI05-03-02-ER-1260 | Below Ceiling MEP Rough In - COLO3 Cell 2 - ER | Not Started | 14-Jan-25 17:00:00 | 27 | CHI05-PH2-FIT-BL-D5,3,3,1,1,5 | 31-Dec-24 08:00:00 | COLO3 | CELL_2 |
| 446 | CHI05-03-02-ER-1270 | Installation of ADP & ATS - COLO3 Cell 2 - ER | Not Started | 15-Jan-25 17:00:00 | 78 | CHI05-PH2-FIT-BL-D5,3,3,1,1,5 | 09-Jan-25 08:00:00 | COLO3 | CELL_2 |
| 447 | CHI05-03-02-ER-1280 | Installation of UPS Equipment - COLO3 Cell 2 - ER | Not Started | 21-Jan-25 17:00:00 | 37 | CHI05-PH2-FIT-BL-D5,3,3,1,1,5 | 15-Jan-25 08:00:00 | COLO3 | CELL_2 |
| 448 | CHI05-03-02-ER-1290 | Connet to Cable tray and conduit equipment - COLO3 Cell 2 - ER | Not Started | 17-Jan-25 17:00:00 | 92 | CHI05-PH2-FIT-BL-D5,3,3,1,1,5 | 13-Jan-25 08:00:00 | COLO3 | CELL_2 |
| 449 | CHI05-03-02-ER-1300 | Cable Pulling at Elec. Equipment - COLO3 Cell 2 - ER | Not Started | 21-Feb-25 17:00:00 | 82 | CHI05-PH2-FIT-BL-D5,3,3,1,1,5 | 03-Feb-25 08:00:00 | COLO3 | CELL_2 |
| 450 | CHI05-03-02-ER-1310 | Door Frame Installation - COLO3 Cell 2 - ER | Not Started | 28-Jan-25 17:00:00 | 47 | CHI05-PH2-FIT-BL-D5,3,3,1,1,5 | 22-Jan-25 08:00:00 | COLO3 | CELL_2 |
| 451 | CHI05-03-02-ER-1320 | Finishes and Signage - COLO3 Cell 2 - ER | Not Started | 25-Feb-25 17:00:00 | 102 | CHI05-PH2-FIT-BL-D5,3,3,1,1,5 | 19-Feb-25 08:00:00 | COLO3 | CELL_2 |
| 452 | CHI05-03-02-ER-1265 | Installation of MSB - COLO3 Cell 2 - ER | Not Started | 09-Jan-25 17:00:00 | 72 | CHI05-PH2-FIT-BL-D5,3,3,1,1,5 | 03-Jan-25 08:00:00 | COLO3 | CELL_2 |
| 453 | CHI05-03-02-DH-1210 | Termination at PDU & Busway - COLO3 Cell 2 - DH | Not Started | 04-Mar-25 17:00:00 | 17 | CHI05-PH2-FIT-BL-D5,3,3,1,1,1 | 12-Feb-25 08:00:00 | COLO3 | CELL_2 |
| 454 | CHI05-03-02-DH-1220 | Overhead MEP and Hangers (Above Ceiling) - COLO3 Cell 2 - DH | Not Started | 10-Dec-24 17:00:00 | 40 | CHI05-PH2-FIT-BL-D5,3,3,1,1,1 | 22-Nov-24 08:00:00 | COLO3 | CELL_2 |
| 455 | CHI05-03-02-DH-1230 | HAC install and Rise - COLO3 Cell 2 - DH | Not Started | 11-Feb-25 17:00:00 | 56 | CHI05-PH2-FIT-BL-D5,3,3,1,1,1 | 05-Feb-25 08:00:00 | COLO3 | CELL_2 |
| 456 | CHI05-03-02-DH-1240 | Cable Pulling at PDU & Busway- COLO3 Cell 2 - DH | Not Started | 18-Feb-25 17:00:00 | 27 | CHI05-PH2-FIT-BL-D5,3,3,1,1,1 | 05-Feb-25 08:00:00 | COLO3 | CELL_2 |
| 457 | CHI05-03-02-DH-1250 | Security Screen Installation - COLO3 Cell 2 - DH | Not Started | 07-Jan-25 17:00:00 | 22 | CHI05-PH2-FIT-BL-D5,3,3,1,1,1 | 03-Jan-25 08:00:00 | COLO3 | CELL_2 |
| 458 | CHI05-03-02-DH-1260 | Ceiling Grid and Tile - COLO3 Cell 2 - DH | Not Started | 14-Jan-25 17:00:00 | 22 | CHI05-PH2-FIT-BL-D5,3,3,1,1,1 | 08-Jan-25 08:00:00 | COLO3 | CELL_2 |
| 459 | CHI05-03-02-DH-1270 | Install PDU's - COLO3 Cell 2 - DH | Not Started | 04-Feb-25 17:00:00 | 22 | CHI05-PH2-FIT-BL-D5,3,3,1,1,1 | 29-Jan-25 08:00:00 | COLO3 | CELL_2 |
| 460 | CHI05-03-02-DH-1280 | Overhead MEP Installation (Below Ceiling) - COLO3 Cell 2 - DH | Not Started | 28-Jan-25 17:00:00 | 22 | CHI05-PH2-FIT-BL-D5,3,3,1,1,1 | 15-Jan-25 08:00:00 | COLO3 | CELL_2 |
| 461 | CHI05-03-02-DH-1290 | Install Low Voltage Wiring and Fiber Optic - COLO3 Cell 2 - DH | Not Started | 25-Feb-25 17:00:00 | 56 | CHI05-PH2-FIT-BL-D5,3,3,1,1,1 | 12-Feb-25 08:00:00 | COLO3 | CELL_2 |
| 462 | CHI05-03-02-DH-1300 | HAC Placing - COLO3 Cell 2 - DH | Not Started | 04-Feb-25 17:00:00 | 56 | CHI05-PH2-FIT-BL-D5,3,3,1,1,1 | 29-Jan-25 08:00:00 | COLO3 | CELL_2 |
| 463 | CHI05-03-02-DH-1310 | Finishes and Signage - COLO3 Cell 2 - DH | Not Started | 04-Mar-25 17:00:00 | 97 | CHI05-PH2-FIT-BL-D5,3,3,1,1,1 | 26-Feb-25 08:00:00 | COLO3 | CELL_2 |
| 464 | CHI05-03-02-L1-1380 | Interior - L1 UPS - COLO3 Cell 2 | Not Started | 03-Feb-25 17:00:00 | 58 | CHI05-PH2-FIT-BL-D5,3,3,1,1,4,1 | 03-Feb-25 08:00:00 | COLO3 | CELL_2 |
| 465 | CHI05-03-02-L1-1390 | Interior - L1 MSB - COLO3 Cell 2 | Not Started | 04-Feb-25 17:00:00 | 69 | CHI05-PH2-FIT-BL-D5,3,3,1,1,4,1 | 04-Feb-25 08:00:00 | COLO3 | CELL_2 |
| 466 | CHI05-03-02-L1-1400 | Interior - L1 PDUs - COLO3 Cell 2 | Not Started | 05-Feb-25 17:00:00 | 73 | CHI05-PH2-FIT-BL-D5,3,3,1,1,4,1 | 05-Feb-25 08:00:00 | COLO3 | CELL_2 |
| 467 | CHI05-03-02-L1-1410 | Interior - L1 AHUs - COLO3 Cell 2 | Not Started | 07-Feb-25 17:00:00 | 86 | CHI05-PH2-FIT-BL-D5,3,3,1,1,4,1 | 07-Feb-25 08:00:00 | COLO3 | CELL_2 |
| 468 | CHI05-03-02-L1-1420 | Interior - L1 ATSs - COLO3 Cell 2 | Not Started | 06-Feb-25 17:00:00 | 82 | CHI05-PH2-FIT-BL-D5,3,3,1,1,4,1 | 06-Feb-25 08:00:00 | COLO3 | CELL_2 |
| 469 | CHI05-03-02-L1-1430 | Interior - L1 Busway - COLO3 Cell 2 | Not Started | 06-Feb-25 17:00:00 | 82 | CHI05-PH2-FIT-BL-D5,3,3,1,1,4,1 | 06-Feb-25 08:00:00 | COLO3 | CELL_2 |
| 470 | CHI05-03-02-L1-1490 | Interior - L1 ADP - COLO3 Cell 2 | Not Started | 05-Feb-25 17:00:00 | 78 | CHI05-PH2-FIT-BL-D5,3,3,1,1,4,1 | 05-Feb-25 08:00:00 | COLO3 | CELL_2 |
| 471 | CHI05-03-02-L2-1500 | Interior - L2 UPS - COLO3 Cell 2 | Not Started | 03-Mar-25 17:00:00 | 50 | CHI05-PH2-FIT-BL-D5,3,3,1,1,4,2 | 25-Feb-25 08:00:00 | COLO3 | CELL_2 |
| 472 | CHI05-03-02-L2-1510 | Interior - L2 MSB - COLO3 Cell 2 | Not Started | 10-Mar-25 17:00:00 | 50 | CHI05-PH2-FIT-BL-D5,3,3,1,1,4,2 | 04-Mar-25 08:00:00 | COLO3 | CELL_2 |
| 473 | CHI05-03-02-L2-1520 | Interior - L2 PDUs - COLO3 Cell 2 | Not Started | 17-Mar-25 17:00:00 | 50 | CHI05-PH2-FIT-BL-D5,3,3,1,1,4,2 | 11-Mar-25 08:00:00 | COLO3 | CELL_2 |
| 474 | CHI05-03-02-L2-1530 | Interior - L2 AHUs - COLO3 Cell 2 | Not Started | 31-Mar-25 17:00:00 | 55 | CHI05-PH2-FIT-BL-D5,3,3,1,1,4,2 | 25-Mar-25 08:00:00 | COLO3 | CELL_2 |
| 475 | CHI05-03-02-L2-1540 | Interior - L2 ATSs - COLO3 Cell 2 | Not Started | 24-Mar-25 17:00:00 | 55 | CHI05-PH2-FIT-BL-D5,3,3,1,1,4,2 | 18-Mar-25 08:00:00 | COLO3 | CELL_2 |
| 476 | CHI05-03-02-L2-1550 | Interior - L2 Busway - COLO3 Cell 2 | Not Started | 24-Mar-25 17:00:00 | 55 | CHI05-PH2-FIT-BL-D5,3,3,1,1,4,2 | 18-Mar-25 08:00:00 | COLO3 | CELL_2 |
| 477 | CHI05-03-02-L2-1610 | Interior - L2 ADP - COLO3 Cell 2 | Not Started | 17-Mar-25 17:00:00 | 55 | CHI05-PH2-FIT-BL-D5,3,3,1,1,4,2 | 11-Mar-25 08:00:00 | COLO3 | CELL_2 |
| 478 | CHI05-03-02-L3-1620 | Interior - L3 UPS - COLO3 Cell 2 | Not Started | 01-Apr-25 17:00:00 | 34 | CHI05-PH2-FIT-BL-D5,3,3,1,1,4,3 | 26-Mar-25 08:00:00 | COLO3 | CELL_2 |
| 479 | CHI05-03-02-L3-1630 | Interior - L3 MSB - COLO3 Cell 2 | Not Started | 08-Apr-25 17:00:00 | 34 | CHI05-PH2-FIT-BL-D5,3,3,1,1,4,3 | 02-Apr-25 08:00:00 | COLO3 | CELL_2 |
| 480 | CHI05-03-02-L3-1640 | Interior - L3 PDUs - COLO3 Cell 2 | Not Started | 15-Apr-25 17:00:00 | 34 | CHI05-PH2-FIT-BL-D5,3,3,1,1,4,3 | 09-Apr-25 08:00:00 | COLO3 | CELL_2 |
| 481 | CHI05-03-02-L3-1650 | Interior - L3 AHUs - COLO3 Cell 2 | Not Started | 06-May-25 17:00:00 | 34 | CHI05-PH2-FIT-BL-D5,3,3,1,1,4,3 | 30-Apr-25 08:00:00 | COLO3 | CELL_2 |
| 482 | CHI05-03-02-L3-1660 | Interior - L3 ATSs - COLO3 Cell 2 | Not Started | 29-Apr-25 17:00:00 | 34 | CHI05-PH2-FIT-BL-D5,3,3,1,1,4,3 | 23-Apr-25 08:00:00 | COLO3 | CELL_2 |
| 483 | CHI05-03-02-L3-1670 | Interior - L3 Busway - COLO3 Cell 2 | Not Started | 06-May-25 17:00:00 | 34 | CHI05-PH2-FIT-BL-D5,3,3,1,1,4,3 | 30-Apr-25 08:00:00 | COLO3 | CELL_2 |
| 484 | CHI05-03-02-L3-1730 | Interior - L3 ADP - COLO3 Cell 2 | Not Started | 22-Apr-25 17:00:00 | 34 | CHI05-PH2-FIT-BL-D5,3,3,1,1,4,3 | 16-Apr-25 08:00:00 | COLO3 | CELL_2 |
| 485 | CHI05-03-03-MG-1330 | Install Dampers and actuators at Louvers - Upper level (RED) - COLO3 Cell 3 - MG | Not Started | 26-Nov-24 17:00:00 | 4 | CHI05-PH2-FIT-BL-D5,3,3,1,3,2 | 20-Nov-24 08:00:00 | UPPERLEVEL(RED) |  |
| 486 | CHI05-03-03-MG-1340 | Install Dampers and actuators at Louvers - Lower level (OA) - COLO3 Cell 3 - MG | Not Started | 29-Nov-24 17:00:00 | 37 | CHI05-PH2-FIT-BL-D5,3,3,1,3,2 | 22-Nov-24 08:00:00 | LOWERLEVEL(OA) |  |
| 487 | CHI05-03-03-MG-1350 | Overhead MEP Installation - COLO3 Cell 3 - MG | Not Started | 30-Dec-24 17:00:00 | 27 | CHI05-PH2-FIT-BL-D5,3,3,1,3,2 | 16-Dec-24 08:00:00 | COLO3 | CELL_3 |
| 488 | CHI05-03-03-MG-1360 | Deliver AHU into Mech. Gallery - COLO3 Cell 3 - MG | Not Started | 02-Jan-25 17:00:00 | 27 | CHI05-PH2-FIT-BL-D5,3,3,1,3,2 | 31-Dec-24 08:00:00 | COLO3 | CELL_3 |
| 489 | CHI05-03-03-MG-1370 | Install Walls and Primer Paint - COLO3 Cell 3 - MG | Not Started | 16-Jan-25 17:00:00 | 27 | CHI05-PH2-FIT-BL-D5,3,3,1,3,2 | 03-Jan-25 08:00:00 | COLO3 | CELL_3 |
| 490 | CHI05-03-03-MG-1380 | Placing the AHU - COLO3 Cell 3 - MG | Not Started | 28-Jan-25 12:00:00 | 72 | CHI05-PH2-FIT-BL-D5,3,3,1,3,2 | 24-Jan-25 08:00:00 | COLO3 | CELL_3 |

| entry | activity_id | activity_name | activity_status | finish | total_float | wbs_code | start | location | sub_location |
| --- | --- | --- | --- | --- | --- | --- | --- | --- | --- |
| 491 | CHI05-03-03-MG-1390 | Layout Ceiling and install Pencile Rod - COLO3 Cell 3 - MG | Not Started | 17-Jan-25 17:00:00 | 76 | CHI05-PH2-FIT-BL-D5,3,3,1,3,2 | 17-Jan-25 08:00:00 | COLO3 | CELL_3 |
| 492 | CHI05-03-03-MG-1400 | Piping and Electrical Termination to AHUs - COLO3 Cell 3 - MG | Not Started | 11-Feb-25 12:00:00 | 72 | CHI05-PH2-FIT-BL-D5,3,3,1,3,2 | 28-Jan-25 13:00:00 | COLO3 | CELL_3 |
| 493 | CHI05-03-03-MG-1410 | Pipe Testing - COLO3 Cell 3 - MG | Not Started | 13-Feb-25 12:00:00 | 74 | CHI05-PH2-FIT-BL-D5,3,3,1,3,2 | 11-Feb-25 13:00:00 | COLO3 | CELL_3 |
| 494 | CHI05-03-03-MG-1420 | Install ceiling and Light Fittings - COLO3 Cell 3 - MG | Not Started | 25-Feb-25 12:00:00 | 74 | CHI05-PH2-FIT-BL-D5,3,3,1,3,2 | 13-Feb-25 13:00:00 | COLO3 | CELL_3 |
| 495 | CHI05-03-03-MG-1430 | Trim out MEP - COLO3 Cell 3 - MG | Not Started | 25-Feb-25 12:00:00 | 77 | CHI05-PH2-FIT-BL-D5,3,3,1,3,2 | 18-Feb-25 13:00:00 | COLO3 | CELL_3 |
| 496 | CHI05-03-03-MG-1375 | Post Wall Overhead MEP - COLO3 Cell 3 - MG | Not Started | 06-Feb-25 17:00:00 | 72 | CHI05-PH2-FIT-BL-D5,3,3,1,3,2 | 17-Jan-25 08:00:00 | COLO3 | CELL_3 |
| 497 | CHI05-03-03-ER-1330 | Install Walls and Primer Paint - COLO3 Cell 3 - ER | Not Started | 18-Dec-24 17:00:00 | 0 | CHI05-PH2-FIT-BL-D5,3,3,1,3,5 | 05-Dec-24 08:00:00 | COLO3 | CELL_3 |
| 498 | CHI05-03-03-ER-1340 | Sprinklers and Overhead MEP (Above Ceiling) - COLO3 Cell 3 - ER | Not Started | 07-Jan-25 17:00:00 | 29 | CHI05-PH2-FIT-BL-D5,3,3,1,3,5 | 23-Dec-24 08:00:00 | COLO3 | CELL_3 |
| 499 | CHI05-03-03-ER-1350 | Install Upper Screens - COLO3 Cell 3 - ER | Not Started | 20-Dec-24 17:00:00 | 29 | CHI05-PH2-FIT-BL-D5,3,3,1,3,5 | 16-Dec-24 08:00:00 | COLO3 | CELL_3 |
| 500 | CHI05-03-03-ER-1360 | Install Ceiling - COLO3 Cell 3 - ER | Not Started | 10-Jan-25 17:00:00 | 29 | CHI05-PH2-FIT-BL-D5,3,3,1,3,5 | 08-Jan-25 08:00:00 | COLO3 | CELL_3 |
| 501 | CHI05-03-03-ER-1370 | Below Ceiling MEP Rough In - COLO3 Cell 3 - ER | Not Started | 28-Jan-25 17:00:00 | 27 | CHI05-PH2-FIT-BL-D5,3,3,1,3,5 | 15-Jan-25 08:00:00 | COLO3 | CELL_3 |
| 502 | CHI05-03-03-ER-1380 | Installation of ADP & ATS - COLO3 Cell 3 - ER | Not Started | 23-Jan-25 17:00:00 | 77 | CHI05-PH2-FIT-BL-D5,3,3,1,3,5 | 17-Jan-25 08:00:00 | COLO3 | CELL_3 |
| 503 | CHI05-03-03-ER-1390 | Installation of UPS Equipment - COLO3 Cell 3 - ER | Not Started | 04-Feb-25 17:00:00 | 32 | CHI05-PH2-FIT-BL-D5,3,3,1,3,5 | 29-Jan-25 08:00:00 | COLO3 | CELL_3 |
| 504 | CHI05-03-03-ER-1400 | Connet to Cable tray and conduit equipment - COLO3 Cell 3 - ER | Not Started | 27-Jan-25 17:00:00 | 101 | CHI05-PH2-FIT-BL-D5,3,3,1,3,5 | 21-Jan-25 08:00:00 | COLO3 | CELL_3 |
| 505 | CHI05-03-03-ER-1410 | Cable Pulling at Elec. Equipment - COLO3 Cell 3 - ER | Not Started | 14-Mar-25 17:00:00 | 82 | CHI05-PH2-FIT-BL-D5,3,3,1,3,5 | 24-Feb-25 08:00:00 | COLO3 | CELL_3 |
| 506 | CHI05-03-03-ER-1420 | Door Frame Installation - COLO3 Cell 3 - ER | Not Started | 11-Feb-25 17:00:00 | 37 | CHI05-PH2-FIT-BL-D5,3,3,1,3,5 | 05-Feb-25 08:00:00 | COLO3 | CELL_3 |
| 507 | CHI05-03-03-ER-1430 | Finishes and Signage - COLO3 Cell 3 - ER | Not Started | 18-Mar-25 17:00:00 | 92 | CHI05-PH2-FIT-BL-D5,3,3,1,3,5 | 12-Mar-25 08:00:00 | COLO3 | CELL_3 |
| 508 | CHI05-03-03-ER-1385 | Installation of MSB - COLO3 Cell 3 - ER | Not Started | 23-Jan-25 17:00:00 | 67 | CHI05-PH2-FIT-BL-D5,3,3,1,3,5 | 17-Jan-25 08:00:00 | COLO3 | CELL_3 |
| 509 | CHI05-03-03-DH-1320 | Termination at PDU & Busway - COLO3 Cell 3 - DH | Not Started | 25-Mar-25 17:00:00 | 17 | CHI05-PH2-FIT-BL-D5,3,3,1,3,1 | 05-Mar-25 08:00:00 | COLO3 | CELL_3 |
| 510 | CHI05-03-03-DH-1330 | Overhead MEP and Hangers (Above Ceiling) - COLO3 Cell 3 - DH | Not Started | 27-Dec-24 17:00:00 | 43 | CHI05-PH2-FIT-BL-D5,3,3,1,3,1 | 11-Dec-24 08:00:00 | COLO3 | CELL_3 |
| 511 | CHI05-03-03-DH-1340 | HAC install and Rise - COLO3 Cell 3 - DH | Not Started | 25-Feb-25 17:00:00 | 56 | CHI05-PH2-FIT-BL-D5,3,3,1,3,1 | 19-Feb-25 08:00:00 | COLO3 | CELL_3 |
| 512 | CHI05-03-03-DH-1350 | Cable Pulling at PDU & Busway- COLO3 Cell 3 - DH | Not Started | 04-Mar-25 17:00:00 | 32 | CHI05-PH2-FIT-BL-D5,3,3,1,3,1 | 19-Feb-25 08:00:00 | COLO3 | CELL_3 |
| 513 | CHI05-03-03-DH-1360 | Security Screen Installation - COLO3 Cell 3 - DH | Not Started | 21-Jan-25 17:00:00 | 27 | CHI05-PH2-FIT-BL-D5,3,3,1,3,1 | 17-Jan-25 08:00:00 | COLO3 | CELL_3 |
| 514 | CHI05-03-03-DH-1370 | Ceiling Grid and Tile - COLO3 Cell 3 - DH | Not Started | 28-Jan-25 17:00:00 | 27 | CHI05-PH2-FIT-BL-D5,3,3,1,3,1 | 22-Jan-25 08:00:00 | COLO3 | CELL_3 |
| 515 | CHI05-03-03-DH-1380 | Install PDU's - COLO3 Cell 3 - DH | Not Started | 18-Feb-25 17:00:00 | 27 | CHI05-PH2-FIT-BL-D5,3,3,1,3,1 | 12-Feb-25 08:00:00 | COLO3 | CELL_3 |
| 516 | CHI05-03-03-DH-1390 | Overhead MEP Installation (Below Ceiling) - COLO3 Cell 3 - DH | Not Started | 11-Feb-25 17:00:00 | 27 | CHI05-PH2-FIT-BL-D5,3,3,1,3,1 | 29-Jan-25 08:00:00 | COLO3 | CELL_3 |
| 517 | CHI05-03-03-DH-1400 | Install Low Voltage Wiring and Fiber Optic - COLO3 Cell 3 - DH | Not Started | 11-Mar-25 17:00:00 | 56 | CHI05-PH2-FIT-BL-D5,3,3,1,3,1 | 26-Feb-25 08:00:00 | COLO3 | CELL_3 |
| 518 | CHI05-03-03-DH-1410 | HAC Placing - COLO3 Cell 3 - DH | Not Started | 18-Feb-25 17:00:00 | 56 | CHI05-PH2-FIT-BL-D5,3,3,1,3,1 | 12-Feb-25 08:00:00 | COLO3 | CELL_3 |
| 519 | CHI05-03-03-DH-1420 | Finishes and Signage - COLO3 Cell 3 - DH | Not Started | 25-Mar-25 17:00:00 | 87 | CHI05-PH2-FIT-BL-D5,3,3,1,3,1 | 19-Mar-25 08:00:00 | COLO3 | CELL_3 |
| 520 | CHI05-03-03-L1-1500 | Interior - L1 UPS - COLO3 Cell 3 | Not Started | 04-Feb-25 17:00:00 | 58 | CHI05-PH2-FIT-BL-D5,3,3,1,3,4,1 | 04-Feb-25 08:00:00 | COLO3 | CELL_3 |
| 521 | CHI05-03-03-L1-1510 | Interior - L1 MSB - COLO3 Cell 3 | Not Started | 05-Feb-25 17:00:00 | 87 | CHI05-PH2-FIT-BL-D5,3,3,1,3,4,1 | 05-Feb-25 08:00:00 | COLO3 | CELL_3 |
| 522 | CHI05-03-03-L1-1520 | Interior - L1 PDUs - COLO3 Cell 3 | Not Started | 19-Feb-25 17:00:00 | 78 | CHI05-PH2-FIT-BL-D5,3,3,1,3,4,1 | 19-Feb-25 08:00:00 | COLO3 | CELL_3 |
| 523 | CHI05-03-03-L1-1530 | Interior - L1 AHUs - COLO3 Cell 3 | Not Started | 21-Feb-25 17:00:00 | 78 | CHI05-PH2-FIT-BL-D5,3,3,1,3,4,1 | 21-Feb-25 08:00:00 | COLO3 | CELL_3 |
| 524 | CHI05-03-03-L1-1540 | Interior - L1 ATSs - COLO3 Cell 3 | Not Started | 07-Feb-25 17:00:00 | 87 | CHI05-PH2-FIT-BL-D5,3,3,1,3,4,1 | 07-Feb-25 08:00:00 | COLO3 | CELL_3 |
| 525 | CHI05-03-03-L1-1550 | Interior - L1 Busway - COLO3 Cell 3 | Not Started | 20-Feb-25 17:00:00 | 78 | CHI05-PH2-FIT-BL-D5,3,3,1,3,4,1 | 20-Feb-25 08:00:00 | COLO3 | CELL_3 |
| 526 | CHI05-03-03-L1-1610 | Interior - L1 ADP - COLO3 Cell 3 | Not Started | 06-Feb-25 17:00:00 | 87 | CHI05-PH2-FIT-BL-D5,3,3,1,3,4,1 | 06-Feb-25 08:00:00 | COLO3 | CELL_3 |
| 527 | CHI05-03-03-L2-1620 | Interior - L2 UPS - COLO3 Cell 3 | Not Started | 03-Mar-25 17:00:00 | 52 | CHI05-PH2-FIT-BL-D5,3,3,1,3,4,2 | 25-Feb-25 08:00:00 | COLO3 | CELL_3 |
| 528 | CHI05-03-03-L2-1630 | Interior - L2 MSB - COLO3 Cell 3 | Not Started | 10-Mar-25 17:00:00 | 52 | CHI05-PH2-FIT-BL-D5,3,3,1,3,4,2 | 04-Mar-25 08:00:00 | COLO3 | CELL_3 |
| 529 | CHI05-03-03-L2-1640 | Interior - L2 PDUs - COLO3 Cell 3 | Not Started | 01-Apr-25 17:00:00 | 41 | CHI05-PH2-FIT-BL-D5,3,3,1,3,4,2 | 26-Mar-25 08:00:00 | COLO3 | CELL_3 |
| 530 | CHI05-03-03-L2-1650 | Interior - L2 AHUs - COLO3 Cell 3 | Not Started | 15-Apr-25 17:00:00 | 41 | CHI05-PH2-FIT-BL-D5,3,3,1,3,4,2 | 09-Apr-25 08:00:00 | COLO3 | CELL_3 |
| 531 | CHI05-03-03-L2-1660 | Interior - L2 ATSs - COLO3 Cell 3 | Not Started | 24-Mar-25 17:00:00 | 52 | CHI05-PH2-FIT-BL-D5,3,3,1,3,4,2 | 18-Mar-25 08:00:00 | COLO3 | CELL_3 |
| 532 | CHI05-03-03-L2-1670 | Interior - L2 Busway - COLO3 Cell 3 | Not Started | 08-Apr-25 17:00:00 | 41 | CHI05-PH2-FIT-BL-D5,3,3,1,3,4,2 | 02-Apr-25 08:00:00 | COLO3 | CELL_3 |
| 533 | CHI05-03-03-L2-1730 | Interior - L2 ADP - COLO3 Cell 3 | Not Started | 17-Mar-25 17:00:00 | 52 | CHI05-PH2-FIT-BL-D5,3,3,1,3,4,2 | 11-Mar-25 08:00:00 | COLO3 | CELL_3 |
| 534 | CHI05-03-03-L3-1740 | Interior - L3 UPS - COLO3 Cell 3 | Not Started | 01-Apr-25 17:00:00 | 36 | CHI05-PH2-FIT-BL-D5,3,3,1,3,4,3 | 26-Mar-25 08:00:00 | COLO3 | CELL_3 |
| 535 | CHI05-03-03-L3-1750 | Interior - L3 MSB - COLO3 Cell 3 | Not Started | 08-Apr-25 17:00:00 | 36 | CHI05-PH2-FIT-BL-D5,3,3,1,3,4,3 | 02-Apr-25 08:00:00 | COLO3 | CELL_3 |
| 536 | CHI05-03-03-L3-1760 | Interior - L3 PDUs - COLO3 Cell 3 | Not Started | 15-Apr-25 17:00:00 | 36 | CHI05-PH2-FIT-BL-D5,3,3,1,3,4,3 | 09-Apr-25 08:00:00 | COLO3 | CELL_3 |
| 537 | CHI05-03-03-L3-1770 | Interior - L3 AHUs - COLO3 Cell 3 | Not Started | 29-Apr-25 17:00:00 | 36 | CHI05-PH2-FIT-BL-D5,3,3,1,3,4,3 | 23-Apr-25 08:00:00 | COLO3 | CELL_3 |
| 538 | CHI05-03-03-L3-1780 | Interior - L3 ATSs - COLO3 Cell 3 | Not Started | 29-Apr-25 17:00:00 | 36 | CHI05-PH2-FIT-BL-D5,3,3,1,3,4,3 | 23-Apr-25 08:00:00 | COLO3 | CELL_3 |
| 539 | CHI05-03-03-L3-1790 | Interior - L3 Busway - COLO3 Cell 3 | Not Started | 29-Apr-25 17:00:00 | 36 | CHI05-PH2-FIT-BL-D5,3,3,1,3,4,3 | 23-Apr-25 08:00:00 | COLO3 | CELL_3 |
| 540 | CHI05-03-03-L3-1850 | Interior - L3 ADP - COLO3 Cell 3 | Not Started | 22-Apr-25 17:00:00 | 36 | CHI05-PH2-FIT-BL-D5,3,3,1,3,4,3 | 16-Apr-25 08:00:00 | COLO3 | CELL_3 |
| 541 | CHI05-03-04-MG-1440 | Install Dampers and actuators at Louvers - Upper level (RED) - COLO3 Cell 4 - MG | Not Started | 04-Dec-24 17:00:00 | 4 | CHI05-PH2-FIT-BL-D5,3,3,1,2,2 | 27-Nov-24 08:00:00 | UPPERLEVEL(RED) |  |
| 542 | CHI05-03-04-MG-1450 | Install Dampers and actuators at Louvers - Lower level (OA) - COLO3 Cell 4 - MG | Not Started | 06-Dec-24 17:00:00 | 47 | CHI05-PH2-FIT-BL-D5,3,3,1,2,2 | 02-Dec-24 08:00:00 | LOWERLEVEL(OA) |  |
| 543 | CHI05-03-04-MG-1460 | Overhead MEP Installation - COLO3 Cell 4 - MG | Not Started | 14-Jan-25 17:00:00 | 32 | CHI05-PH2-FIT-BL-D5,3,3,1,2,2 | 31-Dec-24 08:00:00 | COLO3 | CELL_4 |
| 544 | CHI05-03-04-MG-1470 | Deliver AHU into Mech. Gallery - COLO3 Cell 4 - MG | Not Started | 16-Jan-25 17:00:00 | 32 | CHI05-PH2-FIT-BL-D5,3,3,1,2,2 | 15-Jan-25 08:00:00 | COLO3 | CELL_4 |
| 545 | CHI05-03-04-MG-1480 | Install Walls and Primer Paint - COLO3 Cell 4 - MG | Not Started | 30-Jan-25 17:00:00 | 32 | CHI05-PH2-FIT-BL-D5,3,3,1,2,2 | 17-Jan-25 08:00:00 | COLO3 | CELL_4 |
| 546 | CHI05-03-04-MG-1490 | Placing the AHU - COLO3 Cell 4 - MG | Not Started | 11-Feb-25 12:00:00 | 72 | CHI05-PH2-FIT-BL-D5,3,3,1,2,2 | 07-Feb-25 08:00:00 | COLO3 | CELL_4 |
| 547 | CHI05-03-04-MG-1500 | Layout Ceiling and install Pencile Rod - COLO3 Cell 4 - MG | Not Started | 31-Jan-25 17:00:00 | 76 | CHI05-PH2-FIT-BL-D5,3,3,1,2,2 | 31-Jan-25 08:00:00 | COLO3 | CELL_4 |
| 548 | CHI05-03-04-MG-1510 | Piping and Electrical Termination to AHUs - COLO3 Cell 4 - MG | Not Started | 25-Feb-25 12:00:00 | 72 | CHI05-PH2-FIT-BL-D5,3,3,1,2,2 | 11-Feb-25 13:00:00 | COLO3 | CELL_4 |
| 549 | CHI05-03-04-MG-1520 | Pipe Testing - COLO3 Cell 4 - MG | Not Started | 27-Feb-25 12:00:00 | 72 | CHI05-PH2-FIT-BL-D5,3,3,1,2,2 | 25-Feb-25 13:00:00 | COLO3 | CELL_4 |
| 550 | CHI05-03-04-MG-1530 | Install ceiling and Light Fittings - COLO3 Cell 4 - MG | Not Started | 11-Mar-25 12:00:00 | 72 | CHI05-PH2-FIT-BL-D5,3,3,1,2,2 | 27-Feb-25 13:00:00 | COLO3 | CELL_4 |
| 551 | CHI05-03-04-MG-1540 | Trim out MEP - COLO3 Cell 4 - MG | Not Started | 11-Mar-25 12:00:00 | 72 | CHI05-PH2-FIT-BL-D5,3,3,1,2,2 | 04-Mar-25 13:00:00 | COLO3 | CELL_4 |
| 552 | CHI05-03-04-MG-1485 | Post Wall Overhead MEP - COLO3 Cell 4 - MG | Not Started | 20-Feb-25 17:00:00 | 72 | CHI05-PH2-FIT-BL-D5,3,3,1,2,2 | 31-Jan-25 08:00:00 | COLO3 | CELL_4 |
| 553 | CHI05-03-04-ER-1440 | Install Walls and Primer Paint - COLO3 Cell 4 - ER | Not Started | 03-Jan-25 17:00:00 | 0 | CHI05-PH2-FIT-BL-D5,3,3,1,2,5 | 19-Dec-24 08:00:00 | COLO3 | CELL_4 |
| 554 | CHI05-03-04-ER-1450 | Sprinklers and Overhead MEP (Above Ceiling) - COLO3 Cell 4 - ER | Not Started | 21-Jan-25 17:00:00 | 29 | CHI05-PH2-FIT-BL-D5,3,3,1,2,5 | 08-Jan-25 08:00:00 | COLO3 | CELL_4 |
| 555 | CHI05-03-04-ER-1460 | Install Upper Screens - COLO3 Cell 4 - ER | Not Started | 07-Jan-25 17:00:00 | 29 | CHI05-PH2-FIT-BL-D5,3,3,1,2,5 | 31-Dec-24 08:00:00 | COLO3 | CELL_4 |
| 556 | CHI05-03-04-ER-1470 | Install Ceiling - COLO3 Cell 4 - ER | Not Started | 24-Jan-25 17:00:00 | 29 | CHI05-PH2-FIT-BL-D5,3,3,1,2,5 | 22-Jan-25 08:00:00 | COLO3 | CELL_4 |
| 557 | CHI05-03-04-ER-1480 | Below Ceiling MEP Rough In - COLO3 Cell 4 - ER | Not Started | 11-Feb-25 17:00:00 | 27 | CHI05-PH2-FIT-BL-D5,3,3,1,2,5 | 29-Jan-25 08:00:00 | COLO3 | CELL_4 |
| 558 | CHI05-03-04-ER-1490 | Installation of ADP & ATS - COLO3 Cell 4 - ER | Not Started | 06-Feb-25 17:00:00 | 69 | CHI05-PH2-FIT-BL-D5,3,3,1,2,5 | 31-Jan-25 08:00:00 | COLO3 | CELL_4 |
| 559 | CHI05-03-04-ER-1500 | Installation of UPS Equipment - COLO3 Cell 4 - ER | Not Started | 18-Feb-25 17:00:00 | 27 | CHI05-PH2-FIT-BL-D5,3,3,1,2,5 | 12-Feb-25 08:00:00 | COLO3 | CELL_4 |
| 560 | CHI05-03-04-ER-1510 | Connet to Cable tray and conduit equipment - COLO3 Cell 4 - ER | Not Started | 10-Feb-25 17:00:00 | 106 | CHI05-PH2-FIT-BL-D5,3,3,1,2,5 | 04-Feb-25 08:00:00 | COLO3 | CELL_4 |

| entry | activity_id | activity_name | activity_status | finish | total_float | wbs_code | start | location | sub_location |
| --- | --- | --- | --- | --- | --- | --- | --- | --- | --- |
| 561 | CHI05-03-04-ER-1520 | Cable Pulling at Elec. Equipment - COLO3 Cell 4 - ER | Not Started | 04-Apr-25 17:00:00 | 82 | CHI05-PH2-FIT-BL-D5,3,3,1,2,5 | 17-Mar-25 08:00:00 | COLO3 | CELL_4 |
| 562 | CHI05-03-04-ER-1530 | Door Frame Installation - COLO3 Cell 4 - ER | Not Started | 25-Feb-25 17:00:00 | 27 | CHI05-PH2-FIT-BL-D5,3,3,1,2,5 | 19-Feb-25 08:00:00 | COLO3 | CELL_4 |
| 563 | CHI05-03-04-ER-1540 | Finishes and Signage - COLO3 Cell 4 - ER | Not Started | 08-Apr-25 17:00:00 | 82 | CHI05-PH2-FIT-BL-D5,3,3,1,2,5 | 02-Apr-25 08:00:00 | COLO3 | CELL_4 |
| 564 | CHI05-03-04-ER-1495 | Installation of MSB - COLO3 Cell 4 - ER | Not Started | 06-Feb-25 17:00:00 | 59 | CHI05-PH2-FIT-BL-D5,3,3,1,2,5 | 31-Jan-25 08:00:00 | COLO3 | CELL_4 |
| 565 | CHI05-03-04-DH-1430 | Termination at PDU & Busway - COLO3 Cell 4 - DH | Not Started | 15-Apr-25 17:00:00 | 17 | CHI05-PH2-FIT-BL-D5,3,3,1,2,1 | 26-Mar-25 08:00:00 | COLO3 | CELL_4 |
| 566 | CHI05-03-04-DH-1440 | Overhead MEP and Hangers (Above Ceiling) - COLO3 Cell 4 - DH | Not Started | 15-Jan-25 17:00:00 | 46 | CHI05-PH2-FIT-BL-D5,3,3,1,2,1 | 30-Dec-24 08:00:00 | COLO3 | CELL_4 |
| 567 | CHI05-03-04-DH-1450 | HAC install and Rise - COLO3 Cell 4 - DH | Not Started | 11-Mar-25 17:00:00 | 56 | CHI05-PH2-FIT-BL-D5,3,3,1,2,1 | 05-Mar-25 08:00:00 | COLO3 | CELL_4 |
| 568 | CHI05-03-04-DH-1460 | Cable Pulling at PDU & Busway- COLO3 Cell 4 - DH | Not Started | 18-Mar-25 17:00:00 | 37 | CHI05-PH2-FIT-BL-D5,3,3,1,2,1 | 05-Mar-25 08:00:00 | COLO3 | CELL_4 |
| 569 | CHI05-03-04-DH-1470 | Security Screen Installation - COLO3 Cell 4 - DH | Not Started | 04-Feb-25 17:00:00 | 32 | CHI05-PH2-FIT-BL-D5,3,3,1,2,1 | 31-Jan-25 08:00:00 | COLO3 | CELL_4 |
| 570 | CHI05-03-04-DH-1480 | Ceiling Grid and Tile - COLO3 Cell 4 - DH | Not Started | 11-Feb-25 17:00:00 | 32 | CHI05-PH2-FIT-BL-D5,3,3,1,2,1 | 05-Feb-25 08:00:00 | COLO3 | CELL_4 |
| 571 | CHI05-03-04-DH-1490 | Install PDU's - COLO3 Cell 4 - DH | Not Started | 04-Mar-25 17:00:00 | 32 | CHI05-PH2-FIT-BL-D5,3,3,1,2,1 | 26-Feb-25 08:00:00 | COLO3 | CELL_4 |
| 572 | CHI05-03-04-DH-1500 | Overhead MEP Installation (Below Ceiling) - COLO3 Cell 4 - DH | Not Started | 25-Feb-25 17:00:00 | 32 | CHI05-PH2-FIT-BL-D5,3,3,1,2,1 | 12-Feb-25 08:00:00 | COLO3 | CELL_4 |
| 573 | CHI05-03-04-DH-1510 | Install Low Voltage Wiring and Fiber Optic - COLO3 Cell 4 - DH | Not Started | 25-Mar-25 17:00:00 | 56 | CHI05-PH2-FIT-BL-D5,3,3,1,2,1 | 12-Mar-25 08:00:00 | COLO3 | CELL_4 |
| 574 | CHI05-03-04-DH-1520 | HAC Placing - COLO3 Cell 4 - DH | Not Started | 04-Mar-25 17:00:00 | 56 | CHI05-PH2-FIT-BL-D5,3,3,1,2,1 | 26-Feb-25 08:00:00 | COLO3 | CELL_4 |
| 575 | CHI05-03-04-DH-1530 | Finishes and Signage - COLO3 Cell 4 - DH | Not Started | 15-Apr-25 17:00:00 | 77 | CHI05-PH2-FIT-BL-D5,3,3,1,2,1 | 09-Apr-25 08:00:00 | COLO3 | CELL_4 |
| 576 | CHI05-03-04-L1-1620 | Interior - L1 UPS - COLO3 Cell 4 | Not Started | 12-Feb-25 17:00:00 | 52 | CHI05-PH2-FIT-BL-D5,3,3,1,2,4,1 | 12-Feb-25 08:00:00 | COLO3 | CELL_4 |
| 577 | CHI05-03-04-L1-1630 | Interior - L1 MSB - COLO3 Cell 4 | Not Started | 13-Feb-25 17:00:00 | 55 | CHI05-PH2-FIT-BL-D5,3,3,1,2,4,1 | 13-Feb-25 08:00:00 | COLO3 | CELL_4 |
| 578 | CHI05-03-04-L1-1640 | Interior - L1 PDUs - COLO3 Cell 4 | Not Started | 05-Mar-25 17:00:00 | 46 | CHI05-PH2-FIT-BL-D5,3,3,1,2,4,1 | 05-Mar-25 08:00:00 | COLO3 | CELL_4 |
| 579 | CHI05-03-04-L1-1650 | Interior - L1 AHUs - COLO3 Cell 4 | Not Started | 07-Mar-25 17:00:00 | 63 | CHI05-PH2-FIT-BL-D5,3,3,1,2,4,1 | 07-Mar-25 08:00:00 | COLO3 | CELL_4 |
| 580 | CHI05-03-04-L1-1660 | Interior - L1 ATSs - COLO3 Cell 4 | Not Started | 17-Feb-25 17:00:00 | 68 | CHI05-PH2-FIT-BL-D5,3,3,1,2,4,1 | 17-Feb-25 08:00:00 | COLO3 | CELL_4 |
| 581 | CHI05-03-04-L1-1670 | Interior - L1 Busway - COLO3 Cell 4 | Not Started | 06-Mar-25 17:00:00 | 59 | CHI05-PH2-FIT-BL-D5,3,3,1,2,4,1 | 06-Mar-25 08:00:00 | COLO3 | CELL_4 |
| 582 | CHI05-03-04-L1-1730 | Interior - L1 ADP - COLO3 Cell 4 | Not Started | 14-Feb-25 17:00:00 | 64 | CHI05-PH2-FIT-BL-D5,3,3,1,2,4,1 | 14-Feb-25 08:00:00 | COLO3 | CELL_4 |
| 583 | CHI05-03-04-L2-1740 | Interior - L2 UPS - COLO3 Cell 4 | Not Started | 03-Mar-25 17:00:00 | 43 | CHI05-PH2-FIT-BL-D5,3,3,1,2,4,2 | 25-Feb-25 08:00:00 | COLO3 | CELL_4 |
| 584 | CHI05-03-04-L2-1750 | Interior - L2 MSB - COLO3 Cell 4 | Not Started | 10-Mar-25 17:00:00 | 43 | CHI05-PH2-FIT-BL-D5,3,3,1,2,4,2 | 04-Mar-25 08:00:00 | COLO3 | CELL_4 |
| 585 | CHI05-03-04-L2-1760 | Interior - L2 PDUs - COLO3 Cell 4 | Not Started | 22-Apr-25 17:00:00 | 17 | CHI05-PH2-FIT-BL-D5,3,3,1,2,4,2 | 16-Apr-25 08:00:00 | COLO3 | CELL_4 |
| 586 | CHI05-03-04-L2-1770 | Interior - L2 AHUs - COLO3 Cell 4 | Not Started | 06-May-25 17:00:00 | 26 | CHI05-PH2-FIT-BL-D5,3,3,1,2,4,2 | 30-Apr-25 08:00:00 | COLO3 | CELL_4 |
| 587 | CHI05-03-04-L2-1780 | Interior - L2 ATSs - COLO3 Cell 4 | Not Started | 24-Mar-25 17:00:00 | 48 | CHI05-PH2-FIT-BL-D5,3,3,1,2,4,2 | 18-Mar-25 08:00:00 | COLO3 | CELL_4 |
| 588 | CHI05-03-04-L2-1790 | Interior - L2 Busway - COLO3 Cell 4 | Not Started | 29-Apr-25 17:00:00 | 26 | CHI05-PH2-FIT-BL-D5,3,3,1,2,4,2 | 23-Apr-25 08:00:00 | COLO3 | CELL_4 |
| 589 | CHI05-03-04-L2-1850 | Interior - L2 ADP - COLO3 Cell 4 | Not Started | 17-Mar-25 17:00:00 | 48 | CHI05-PH2-FIT-BL-D5,3,3,1,2,4,2 | 11-Mar-25 08:00:00 | COLO3 | CELL_4 |
| 590 | CHI05-03-04-L3-1860 | Interior - L3 UPS - COLO3 Cell 4 | Not Started | 01-Apr-25 17:00:00 | 27 | CHI05-PH2-FIT-BL-D5,3,3,1,2,4,3 | 26-Mar-25 08:00:00 | COLO3 | CELL_4 |
| 591 | CHI05-03-04-L3-1870 | Interior - L3 MSB - COLO3 Cell 4 | Not Started | 08-Apr-25 17:00:00 | 27 | CHI05-PH2-FIT-BL-D5,3,3,1,2,4,3 | 02-Apr-25 08:00:00 | COLO3 | CELL_4 |
| 592 | CHI05-03-04-L3-1880 | Interior - L3 PDUs - COLO3 Cell 4 | Not Started | 29-Apr-25 17:00:00 | 17 | CHI05-PH2-FIT-BL-D5,3,3,1,2,4,3 | 23-Apr-25 08:00:00 | COLO3 | CELL_4 |
| 593 | CHI05-03-04-L3-1890 | Interior - L3 AHUs - COLO3 Cell 4 | Not Started | 27-May-25 17:00:00 | 17 | CHI05-PH2-FIT-BL-D5,3,3,1,2,4,3 | 20-May-25 08:00:00 | COLO3 | CELL_4 |
| 594 | CHI05-03-04-L3-1900 | Interior - L3 ATSs - COLO3 Cell 4 | Not Started | 13-May-25 17:00:00 | 17 | CHI05-PH2-FIT-BL-D5,3,3,1,2,4,3 | 07-May-25 08:00:00 | COLO3 | CELL_4 |
| 595 | CHI05-03-04-L3-1910 | Interior - L3 Busway - COLO3 Cell 4 | Not Started | 20-May-25 17:00:00 | 17 | CHI05-PH2-FIT-BL-D5,3,3,1,2,4,3 | 14-May-25 08:00:00 | COLO3 | CELL_4 |
| 596 | CHI05-03-04-L3-1970 | Interior - L3 ADP - COLO3 Cell 4 | Not Started | 06-May-25 17:00:00 | 17 | CHI05-PH2-FIT-BL-D5,3,3,1,2,4,3 | 30-Apr-25 08:00:00 | COLO3 | CELL_4 |
| 597 | CHI05-03-04-L4-1000 | Cx LEV4 - COLO3 | Not Started | 30-Jun-25 17:00:00 | 17 | CHI05-PH2-FIT-BL-D5,3,3,1,5,1 | 28-May-25 08:00:00 | COLO3 |  |
| 598 | CHI05-03-04-L5-1000 | Cx LEV5 / IST - COLO3 | Not Started | 02-Jul-25 17:00:00 | 17 | CHI05-PH2-FIT-BL-D5,3,3,1,5,2 | 01-Jul-25 08:00:00 | ISTCOLO3 |  |
| 599 | CHI05-04-01-MG-1220 | Install Dampers and actuators at Louvers - Upper level (RED) - COLO4 Cell 1 - MG | Not Started | 11-Dec-24 17:00:00 | 4 | CHI05-PH2-FIT-BL-D5,3,3,2,6,2 | 05-Dec-24 08:00:00 | UPPERLEVEL(RED) |  |
| 600 | CHI05-04-01-MG-1230 | Install Dampers and actuators at Louvers - Lower level (OA) - COLO4 Cell 1 - MG | Not Started | 12-Dec-24 17:00:00 | 4 | CHI05-PH2-FIT-BL-D5,3,3,2,6,2 | 06-Dec-24 08:00:00 | LOWERLEVEL(OA) |  |
| 601 | CHI05-04-01-MG-1240 | Overhead MEP Installation - COLO4 Cell 1 - MG | Not Started | 27-Dec-24 17:00:00 | 4 | CHI05-PH2-FIT-BL-D5,3,3,2,6,2 | 13-Dec-24 08:00:00 | COLO4 | CELL_1 |
| 602 | CHI05-04-01-MG-1250 | Deliver AHU into Mech. Gallery - COLO4 Cell 1 - MG | Not Started | 31-Dec-24 17:00:00 | 4 | CHI05-PH2-FIT-BL-D5,3,3,2,6,2 | 30-Dec-24 08:00:00 | COLO4 | CELL_1 |
| 603 | CHI05-04-01-MG-1260 | Install Walls and Primer Paint - COLO4 Cell 1 - MG | Not Started | 15-Jan-25 17:00:00 | 4 | CHI05-PH2-FIT-BL-D5,3,3,2,6,2 | 02-Jan-25 08:00:00 | COLO4 | CELL_1 |
| 604 | CHI05-04-01-MG-1270 | Placing the AHU - COLO4 Cell 1 - MG | Not Started | 27-Jan-25 12:00:00 | 58 | CHI05-PH2-FIT-BL-D5,3,3,2,6,2 | 23-Jan-25 08:00:00 | COLO4 | CELL_1 |
| 605 | CHI05-04-01-MG-1280 | Layout Ceiling and install Pencile Rod - COLO4 Cell 1 - MG | Not Started | 16-Jan-25 17:00:00 | 62 | CHI05-PH2-FIT-BL-D5,3,3,2,6,2 | 16-Jan-25 08:00:00 | COLO4 | CELL_1 |
| 606 | CHI05-04-01-MG-1290 | Piping and Electrical Termination to AHUs - COLO4 Cell 1 - MG | Not Started | 10-Feb-25 12:00:00 | 58 | CHI05-PH2-FIT-BL-D5,3,3,2,6,2 | 27-Jan-25 13:00:00 | COLO4 | CELL_1 |
| 607 | CHI05-04-01-MG-1300 | Pipe Testing - COLO4 Cell 1 - MG | Not Started | 12-Feb-25 12:00:00 | 64 | CHI05-PH2-FIT-BL-D5,3,3,2,6,2 | 10-Feb-25 13:00:00 | COLO4 | CELL_1 |
| 608 | CHI05-04-01-MG-1310 | Install ceiling and Light Fittings - COLO4 Cell 1 - MG | Not Started | 24-Feb-25 12:00:00 | 64 | CHI05-PH2-FIT-BL-D5,3,3,2,6,2 | 12-Feb-25 13:00:00 | COLO4 | CELL_1 |
| 609 | CHI05-04-01-MG-1320 | Trim out MEP - COLO4 Cell 1 - MG | Not Started | 24-Feb-25 12:00:00 | 73 | CHI05-PH2-FIT-BL-D5,3,3,2,6,2 | 17-Feb-25 13:00:00 | COLO4 | CELL_1 |
| 610 | CHI05-04-01-MG-1265 | Post Wall Overhead MEP - COLO4 Cell 1 - MG | Not Started | 05-Feb-25 17:00:00 | 58 | CHI05-PH2-FIT-BL-D5,3,3,2,6,2 | 16-Jan-25 08:00:00 | COLO4 | CELL_1 |
| 611 | CHI05-04-01-ER-1220 | Install Walls and Primer Paint - COLO4 Cell 1 - ER | Not Started | 17-Jan-25 17:00:00 | 0 | CHI05-PH2-FIT-BL-D5,3,3,2,6,5 | 06-Jan-25 08:00:00 | COLO4 | CELL_1 |
| 612 | CHI05-04-01-ER-1230 | Sprinklers and Overhead MEP (Above Ceiling) - COLO4 Cell 1 - ER | Not Started | 31-Jan-25 17:00:00 | 2 | CHI05-PH2-FIT-BL-D5,3,3,2,6,5 | 20-Jan-25 08:00:00 | COLO4 | CELL_1 |
| 613 | CHI05-04-01-ER-1240 | Install Upper Screens - COLO4 Cell 1 - ER | Not Started | 17-Jan-25 17:00:00 | 2 | CHI05-PH2-FIT-BL-D5,3,3,2,6,5 | 13-Jan-25 08:00:00 | COLO4 | CELL_1 |
| 614 | CHI05-04-01-ER-1250 | Install Ceiling - COLO4 Cell 1 - ER | Not Started | 05-Feb-25 17:00:00 | 2 | CHI05-PH2-FIT-BL-D5,3,3,2,6,5 | 03-Feb-25 08:00:00 | COLO4 | CELL_1 |
| 615 | CHI05-04-01-ER-1260 | Below Ceiling MEP Rough In - COLO4 Cell 1 - ER | Not Started | 19-Feb-25 17:00:00 | 2 | CHI05-PH2-FIT-BL-D5,3,3,2,6,5 | 06-Feb-25 08:00:00 | COLO4 | CELL_1 |
| 616 | CHI05-04-01-ER-1270 | Installation of ADP & ATS - COLO4 Cell 1 - ER | Not Started | 14-Feb-25 17:00:00 | 36 | CHI05-PH2-FIT-BL-D5,3,3,2,6,5 | 10-Feb-25 08:00:00 | COLO4 | CELL_1 |
| 617 | CHI05-04-01-ER-1280 | Installation of UPS Equipment - COLO4 Cell 1 - ER | Not Started | 19-Feb-25 17:00:00 | 17 | CHI05-PH2-FIT-BL-D5,3,3,2,6,5 | 13-Feb-25 08:00:00 | COLO4 | CELL_1 |
| 618 | CHI05-04-01-ER-1290 | Connet to Cable tray and conduit equipment - COLO4 Cell 1 - ER | Not Started | 18-Feb-25 17:00:00 | 57 | CHI05-PH2-FIT-BL-D5,3,3,2,6,5 | 12-Feb-25 08:00:00 | COLO4 | CELL_1 |
| 619 | CHI05-04-01-ER-1300 | Cable Pulling at Elec. Equipment - COLO4 Cell 1 - ER | Not Started | 11-Mar-25 17:00:00 | 57 | CHI05-PH2-FIT-BL-D5,3,3,2,6,5 | 19-Feb-25 08:00:00 | COLO4 | CELL_1 |
| 620 | CHI05-04-01-ER-1310 | Door Frame Installation - COLO4 Cell 1 - ER | Not Started | 26-Feb-25 17:00:00 | 32 | CHI05-PH2-FIT-BL-D5,3,3,2,6,5 | 20-Feb-25 08:00:00 | COLO4 | CELL_1 |
| 621 | CHI05-04-01-ER-1320 | Finishes and Signage - COLO4 Cell 1 - ER | Not Started | 13-Mar-25 17:00:00 | 85 | CHI05-PH2-FIT-BL-D5,3,3,2,6,5 | 07-Mar-25 08:00:00 | COLO4 | CELL_1 |
| 622 | CHI05-04-01-ER-1285 | Installation of MSB - COLO4 Cell 1 - ER | Not Started | 14-Feb-25 17:00:00 | 36 | CHI05-PH2-FIT-BL-D5,3,3,2,6,5 | 10-Feb-25 08:00:00 | COLO4 | CELL_1 |
| 623 | CHI05-04-01-DH-1210 | Cable Pulling at PDU & Busway - COLO4 Cell 1 - DH | Not Started | 12-Mar-25 17:00:00 | 2 | CHI05-PH2-FIT-BL-D5,3,3,2,6,1 | 20-Feb-25 08:00:00 | COLO4 | CELL_1 |
| 624 | CHI05-04-01-DH-1220 | Overhead MEP and Hangers (Above Ceiling) - COLO4 Cell 1 - DH | Not Started | 21-Jan-25 17:00:00 | 3 | CHI05-PH2-FIT-BL-D5,3,3,2,6,1 | 06-Jan-25 08:00:00 | COLO4 | CELL_1 |
| 625 | CHI05-04-01-DH-1230 | HAC install and Rise - COLO4 Cell 1 - DH | Not Started | 26-Feb-25 17:00:00 | 40 | CHI05-PH2-FIT-BL-D5,3,3,2,6,1 | 20-Feb-25 08:00:00 | COLO4 | CELL_1 |
| 626 | CHI05-04-01-DH-1240 | Termination at PDU & Busway- COLO4 Cell 1 - DH | Not Started | 05-Mar-25 17:00:00 | 7 | CHI05-PH2-FIT-BL-D5,3,3,2,6,1 | 20-Feb-25 08:00:00 | COLO4 | CELL_1 |
| 627 | CHI05-04-01-DH-1250 | Security Screen Installation - COLO4 Cell 1 - DH | Not Started | 22-Jan-25 17:00:00 | 2 | CHI05-PH2-FIT-BL-D5,3,3,2,6,1 | 20-Jan-25 08:00:00 | COLO4 | CELL_1 |
| 628 | CHI05-04-01-DH-1260 | Ceiling Grid and Tile - COLO4 Cell 1 - DH | Not Started | 29-Jan-25 17:00:00 | 2 | CHI05-PH2-FIT-BL-D5,3,3,2,6,1 | 23-Jan-25 08:00:00 | COLO4 | CELL_1 |
| 629 | CHI05-04-01-DH-1270 | Install PDU's - COLO4 Cell 1 - DH | Not Started | 19-Feb-25 17:00:00 | 2 | CHI05-PH2-FIT-BL-D5,3,3,2,6,1 | 13-Feb-25 08:00:00 | COLO4 | CELL_1 |
| 630 | CHI05-04-01-DH-1280 | Overhead MEP Installation (Below Ceiling) - COLO4 Cell 1 - DH | Not Started | 12-Feb-25 17:00:00 | 2 | CHI05-PH2-FIT-BL-D5,3,3,2,6,1 | 30-Jan-25 08:00:00 | COLO4 | CELL_1 |

| entry | activity_id | activity_name | activity_status | finish | total_float | wbs_code | start | location | sub_location |
| --- | --- | --- | --- | --- | --- | --- | --- | --- | --- |
| 631 | CHI05-04-01-DH-1290 | Install Low Voltage Wiring and Fiber Optic - COLO4 Cell 1 - DH | Not Started | 12-Mar-25 17:00:00 | 40 | CHI05-PH2-FIT-BL-D5,3,3,2,6,1 | 27-Feb-25 08:00:00 | COLO4 | CELL_1 |
| 632 | CHI05-04-01-DH-1300 | HAC Placing - COLO4 Cell 1 - DH | Not Started | 19-Feb-25 17:00:00 | 40 | CHI05-PH2-FIT-BL-D5,3,3,2,6,1 | 13-Feb-25 08:00:00 | COLO4 | CELL_1 |
| 633 | CHI05-04-01-DH-1310 | Finishes and Signage - COLO4 Cell 1 - DH | Not Started | 19-Mar-25 17:00:00 | 81 | CHI05-PH2-FIT-BL-D5,3,3,2,6,1 | 13-Mar-25 08:00:00 | COLO4 | CELL_1 |
| 634 | CHI05-04-01-L1-1380 | Interior - L1 UPS - COLO4 Cell 1 | Not Started | 20-Feb-25 17:00:00 | 46 | CHI05-PH2-FIT-BL-D5,3,3,2,6,4,1 | 20-Feb-25 08:00:00 | COLO4 | CELL_1 |
| 635 | CHI05-04-01-L1-1390 | Interior - L1 MSB - COLO4 Cell 1 | Not Started | 21-Feb-25 17:00:00 | 63 | CHI05-PH2-FIT-BL-D5,3,3,2,6,4,1 | 21-Feb-25 08:00:00 | COLO4 | CELL_1 |
| 636 | CHI05-04-01-L1-1400 | Interior - L1 PDUs - COLO4 Cell 1 | Not Started | 24-Feb-25 17:00:00 | 67 | CHI05-PH2-FIT-BL-D5,3,3,2,6,4,1 | 24-Feb-25 08:00:00 | COLO4 | CELL_1 |
| 637 | CHI05-04-01-L1-1410 | Interior - L1 AHUs - COLO4 Cell 1 | Not Started | 26-Feb-25 17:00:00 | 75 | CHI05-PH2-FIT-BL-D5,3,3,2,6,4,1 | 26-Feb-25 08:00:00 | COLO4 | CELL_1 |
| 638 | CHI05-04-01-L1-1420 | Interior - L1 ATSs - COLO4 Cell 1 | Not Started | 25-Feb-25 17:00:00 | 71 | CHI05-PH2-FIT-BL-D5,3,3,2,6,4,1 | 25-Feb-25 08:00:00 | COLO4 | CELL_1 |
| 639 | CHI05-04-01-L1-1430 | Interior - L1 Busway - COLO4 Cell 1 | Not Started | 25-Feb-25 17:00:00 | 71 | CHI05-PH2-FIT-BL-D5,3,3,2,6,4,1 | 25-Feb-25 08:00:00 | COLO4 | CELL_1 |
| 640 | CHI05-04-01-L1-1490 | Interior - L1 ADP - COLO4 Cell 1 | Not Started | 24-Feb-25 17:00:00 | 67 | CHI05-PH2-FIT-BL-D5,3,3,2,6,4,1 | 24-Feb-25 08:00:00 | COLO4 | CELL_1 |
| 641 | CHI05-04-01-L2-1500 | Interior - L2 UPS - COLO4 Cell 1 | Not Started | 03-Mar-25 17:00:00 | 57 | CHI05-PH2-FIT-BL-D5,3,3,2,6,4,2 | 25-Feb-25 08:00:00 | COLO4 | CELL_1 |
| 642 | CHI05-04-01-L2-1510 | Interior - L2 MSB - COLO4 Cell 1 | Not Started | 10-Mar-25 17:00:00 | 57 | CHI05-PH2-FIT-BL-D5,3,3,2,6,4,2 | 04-Mar-25 08:00:00 | COLO4 | CELL_1 |
| 643 | CHI05-04-01-L2-1520 | Interior - L2 PDUs - COLO4 Cell 1 | Not Started | 19-Mar-25 17:00:00 | 55 | CHI05-PH2-FIT-BL-D5,3,3,2,6,4,2 | 13-Mar-25 08:00:00 | COLO4 | CELL_1 |
| 644 | CHI05-04-01-L2-1530 | Interior - L2 AHUs - COLO4 Cell 1 | Not Started | 02-Apr-25 17:00:00 | 55 | CHI05-PH2-FIT-BL-D5,3,3,2,6,4,2 | 27-Mar-25 08:00:00 | COLO4 | CELL_1 |
| 645 | CHI05-04-01-L2-1540 | Interior - L2 ATSs - COLO4 Cell 1 | Not Started | 24-Mar-25 17:00:00 | 57 | CHI05-PH2-FIT-BL-D5,3,3,2,6,4,2 | 18-Mar-25 08:00:00 | COLO4 | CELL_1 |
| 646 | CHI05-04-01-L2-1550 | Interior - L2 Busway - COLO4 Cell 1 | Not Started | 26-Mar-25 17:00:00 | 55 | CHI05-PH2-FIT-BL-D5,3,3,2,6,4,2 | 20-Mar-25 08:00:00 | COLO4 | CELL_1 |
| 647 | CHI05-04-01-L2-1610 | Interior - L2 ADP - COLO4 Cell 1 | Not Started | 17-Mar-25 17:00:00 | 57 | CHI05-PH2-FIT-BL-D5,3,3,2,6,4,2 | 11-Mar-25 08:00:00 | COLO4 | CELL_1 |
| 648 | CHI05-04-01-L3-1620 | Interior - L3 UPS - COLO4 Cell 1 | Not Started | 16-May-25 17:00:00 | 8 | CHI05-PH2-FIT-BL-D5,3,3,2,6,4,3 | 12-May-25 08:00:00 | COLO4 | CELL_1 |
| 649 | CHI05-04-01-L3-1630 | Interior - L3 MSB - COLO4 Cell 1 | Not Started | 23-May-25 17:00:00 | 8 | CHI05-PH2-FIT-BL-D5,3,3,2,6,4,3 | 19-May-25 08:00:00 | COLO4 | CELL_1 |
| 650 | CHI05-04-01-L3-1640 | Interior - L3 PDUs - COLO4 Cell 1 | Not Started | 02-Jun-25 17:00:00 | 8 | CHI05-PH2-FIT-BL-D5,3,3,2,6,4,3 | 27-May-25 08:00:00 | COLO4 | CELL_1 |
| 651 | CHI05-04-01-L3-1650 | Interior - L3 AHUs - COLO4 Cell 1 | Not Started | 16-Jun-25 17:00:00 | 8 | CHI05-PH2-FIT-BL-D5,3,3,2,6,4,3 | 10-Jun-25 08:00:00 | COLO4 | CELL_1 |
| 652 | CHI05-04-01-L3-1660 | Interior - L3 ATSs - COLO4 Cell 1 | Not Started | 09-Jun-25 17:00:00 | 8 | CHI05-PH2-FIT-BL-D5,3,3,2,6,4,3 | 03-Jun-25 08:00:00 | COLO4 | CELL_1 |
| 653 | CHI05-04-01-L3-1670 | Interior - L3 Busway - COLO4 Cell 1 | Not Started | 16-Jun-25 17:00:00 | 8 | CHI05-PH2-FIT-BL-D5,3,3,2,6,4,3 | 10-Jun-25 08:00:00 | COLO4 | CELL_1 |
| 654 | CHI05-04-01-L3-1730 | Interior - L3 ADP - COLO4 Cell 1 | Not Started | 02-Jun-25 17:00:00 | 8 | CHI05-PH2-FIT-BL-D5,3,3,2,6,4,3 | 27-May-25 08:00:00 | COLO4 | CELL_1 |
| 655 | CHI05-04-02-MG-1330 | Install Dampers and actuators at Louvers - Upper level (RED) - COLO4 Cell 2 - MG | Not Started | 18-Dec-24 17:00:00 | 13 | CHI05-PH2-FIT-BL-D5,3,3,2,1,2 | 12-Dec-24 08:00:00 | UPPERLEVEL(RED) |  |
| 656 | CHI05-04-02-MG-1340 | Install Dampers and actuators at Louvers - Lower level (OA) - COLO4 Cell 2 - MG | Not Started | 20-Dec-24 17:00:00 | 13 | CHI05-PH2-FIT-BL-D5,3,3,2,1,2 | 16-Dec-24 08:00:00 | LOWERLEVEL(OA) |  |
| 657 | CHI05-04-02-MG-1350 | Overhead MEP Installation - COLO4 Cell 2 - MG | Not Started | 13-Jan-25 17:00:00 | 9 | CHI05-PH2-FIT-BL-D5,3,3,2,1,2 | 30-Dec-24 08:00:00 | COLO4 | CELL_2 |
| 658 | CHI05-04-02-MG-1360 | Deliver AHU into Mech. Gallery - COLO4 Cell 2 - MG | Not Started | 15-Jan-25 17:00:00 | 9 | CHI05-PH2-FIT-BL-D5,3,3,2,1,2 | 14-Jan-25 08:00:00 | COLO4 | CELL_2 |
| 659 | CHI05-04-02-MG-1370 | Install Walls and Primer Paint - COLO4 Cell 2 - MG | Not Started | 29-Jan-25 17:00:00 | 9 | CHI05-PH2-FIT-BL-D5,3,3,2,1,2 | 16-Jan-25 08:00:00 | COLO4 | CELL_2 |
| 660 | CHI05-04-02-MG-1380 | Placing the AHU - COLO4 Cell 2 - MG | Not Started | 10-Feb-25 12:00:00 | 56 | CHI05-PH2-FIT-BL-D5,3,3,2,1,2 | 06-Feb-25 08:00:00 | COLO4 | CELL_2 |
| 661 | CHI05-04-02-MG-1390 | Layout Ceiling and install Pencile Rod - COLO4 Cell 2 - MG | Not Started | 30-Jan-25 17:00:00 | 60 | CHI05-PH2-FIT-BL-D5,3,3,2,1,2 | 30-Jan-25 08:00:00 | COLO4 | CELL_2 |
| 662 | CHI05-04-02-MG-1400 | Piping and Electrical Termination to AHUs - COLO4 Cell 2 - MG | Not Started | 24-Feb-25 12:00:00 | 58 | CHI05-PH2-FIT-BL-D5,3,3,2,1,2 | 10-Feb-25 13:00:00 | COLO4 | CELL_2 |
| 663 | CHI05-04-02-MG-1410 | Pipe Testing - COLO4 Cell 2 - MG | Not Started | 26-Feb-25 12:00:00 | 62 | CHI05-PH2-FIT-BL-D5,3,3,2,1,2 | 24-Feb-25 13:00:00 | COLO4 | CELL_2 |
| 664 | CHI05-04-02-MG-1420 | Install ceiling and Light Fittings - COLO4 Cell 2 - MG | Not Started | 10-Mar-25 12:00:00 | 62 | CHI05-PH2-FIT-BL-D5,3,3,2,1,2 | 26-Feb-25 13:00:00 | COLO4 | CELL_2 |
| 665 | CHI05-04-02-MG-1430 | Trim out MEP - COLO4 Cell 2 - MG | Not Started | 10-Mar-25 12:00:00 | 68 | CHI05-PH2-FIT-BL-D5,3,3,2,1,2 | 03-Mar-25 13:00:00 | COLO4 | CELL_2 |
| 666 | CHI05-04-02-MG-1375 | Post Wall Overhead MEP - COLO4 Cell 2 - MG | Not Started | 19-Feb-25 17:00:00 | 56 | CHI05-PH2-FIT-BL-D5,3,3,2,1,2 | 30-Jan-25 08:00:00 | COLO4 | CELL_2 |
| 667 | CHI05-04-02-ER-1330 | Install Walls and Primer Paint - COLO4 Cell 2 - ER | Not Started | 31-Jan-25 17:00:00 | 0 | CHI05-PH2-FIT-BL-D5,3,3,2,1,5 | 20-Jan-25 08:00:00 | COLO4 | CELL_2 |
| 668 | CHI05-04-02-ER-1340 | Sprinklers and Overhead MEP (Above Ceiling) - COLO4 Cell 2 - ER | Not Started | 18-Feb-25 17:00:00 | 0 | CHI05-PH2-FIT-BL-D5,3,3,2,1,5 | 05-Feb-25 08:00:00 | COLO4 | CELL_2 |
| 669 | CHI05-04-02-ER-1350 | Install Upper Screens - COLO4 Cell 2 - ER | Not Started | 04-Feb-25 17:00:00 | 0 | CHI05-PH2-FIT-BL-D5,3,3,2,1,5 | 29-Jan-25 08:00:00 | COLO4 | CELL_2 |
| 670 | CHI05-04-02-ER-1360 | Install Ceiling - COLO4 Cell 2 - ER | Not Started | 21-Feb-25 17:00:00 | 0 | CHI05-PH2-FIT-BL-D5,3,3,2,1,5 | 19-Feb-25 08:00:00 | COLO4 | CELL_2 |
| 671 | CHI05-04-02-ER-1370 | Below Ceiling MEP Rough In - COLO4 Cell 2 - ER | Not Started | 07-Mar-25 17:00:00 | 0 | CHI05-PH2-FIT-BL-D5,3,3,2,1,5 | 24-Feb-25 08:00:00 | COLO4 | CELL_2 |
| 672 | CHI05-04-02-ER-1380 | Installation of ADP & ATS - COLO4 Cell 2 - ER | Not Started | 04-Mar-25 17:00:00 | 29 | CHI05-PH2-FIT-BL-D5,3,3,2,1,5 | 26-Feb-25 08:00:00 | COLO4 | CELL_2 |
| 673 | CHI05-04-02-ER-1390 | Installation of UPS Equipment - COLO4 Cell 2 - ER | Not Started | 07-Mar-25 17:00:00 | 10 | CHI05-PH2-FIT-BL-D5,3,3,2,1,5 | 03-Mar-25 08:00:00 | COLO4 | CELL_2 |
| 674 | CHI05-04-02-ER-1400 | Connet to Cable tray and conduit equipment - COLO4 Cell 2 - ER | Not Started | 06-Mar-25 17:00:00 | 60 | CHI05-PH2-FIT-BL-D5,3,3,2,1,5 | 28-Feb-25 08:00:00 | COLO4 | CELL_2 |
| 675 | CHI05-04-02-ER-1410 | Cable Pulling at Elec. Equipment - COLO4 Cell 2 - ER | Not Started | 01-Apr-25 17:00:00 | 57 | CHI05-PH2-FIT-BL-D5,3,3,2,1,5 | 12-Mar-25 08:00:00 | COLO4 | CELL_2 |
| 676 | CHI05-04-02-ER-1420 | Door Frame Installation - COLO4 Cell 2 - ER | Not Started | 14-Mar-25 17:00:00 | 48 | CHI05-PH2-FIT-BL-D5,3,3,2,1,5 | 10-Mar-25 08:00:00 | COLO4 | CELL_2 |
| 677 | CHI05-04-02-ER-1430 | Finishes and Signage - COLO4 Cell 2 - ER | Not Started | 03-Apr-25 17:00:00 | 75 | CHI05-PH2-FIT-BL-D5,3,3,2,1,5 | 28-Mar-25 08:00:00 | COLO4 | CELL_2 |
| 678 | CHI05-04-02-ER-1385 | Installation of MSB - COLO4 Cell 2 - ER | Not Started | 04-Mar-25 17:00:00 | 29 | CHI05-PH2-FIT-BL-D5,3,3,2,1,5 | 26-Feb-25 08:00:00 | COLO4 | CELL_2 |
| 679 | CHI05-04-02-DH-1320 | Termination at PDU & Busway - COLO4 Cell 2 - DH | Not Started | 02-Apr-25 17:00:00 | 2 | CHI05-PH2-FIT-BL-D5,3,3,2,1,1 | 13-Mar-25 08:00:00 | COLO4 | CELL_2 |
| 680 | CHI05-04-02-DH-1330 | Overhead MEP and Hangers (Above Ceiling) - COLO4 Cell 2 - DH | Not Started | 06-Feb-25 17:00:00 | 6 | CHI05-PH2-FIT-BL-D5,3,3,2,1,1 | 22-Jan-25 08:00:00 | COLO4 | CELL_2 |
| 681 | CHI05-04-02-DH-1340 | HAC install and Rise - COLO4 Cell 2 - DH | Not Started | 14-Mar-25 17:00:00 | 38 | CHI05-PH2-FIT-BL-D5,3,3,2,1,1 | 10-Mar-25 08:00:00 | COLO4 | CELL_2 |
| 682 | CHI05-04-02-DH-1350 | Cable Pulling at PDU & Busway- COLO4 Cell 2 - DH | Not Started | 21-Mar-25 17:00:00 | 10 | CHI05-PH2-FIT-BL-D5,3,3,2,1,1 | 10-Mar-25 08:00:00 | COLO4 | CELL_2 |
| 683 | CHI05-04-02-DH-1360 | Security Screen Installation - COLO4 Cell 2 - DH | Not Started | 07-Feb-25 17:00:00 | 5 | CHI05-PH2-FIT-BL-D5,3,3,2,1,1 | 05-Feb-25 08:00:00 | COLO4 | CELL_2 |
| 684 | CHI05-04-02-DH-1370 | Ceiling Grid and Tile - COLO4 Cell 2 - DH | Not Started | 14-Feb-25 17:00:00 | 5 | CHI05-PH2-FIT-BL-D5,3,3,2,1,1 | 10-Feb-25 08:00:00 | COLO4 | CELL_2 |
| 685 | CHI05-04-02-DH-1380 | Install PDU's - COLO4 Cell 2 - DH | Not Started | 07-Mar-25 17:00:00 | 5 | CHI05-PH2-FIT-BL-D5,3,3,2,1,1 | 03-Mar-25 08:00:00 | COLO4 | CELL_2 |
| 686 | CHI05-04-02-DH-1390 | Overhead MEP Installation (Below Ceiling) - COLO4 Cell 2 - DH | Not Started | 28-Feb-25 17:00:00 | 5 | CHI05-PH2-FIT-BL-D5,3,3,2,1,1 | 17-Feb-25 08:00:00 | COLO4 | CELL_2 |
| 687 | CHI05-04-02-DH-1400 | Install Low Voltage Wiring and Fiber Optic - COLO4 Cell 2 - DH | Not Started | 28-Mar-25 17:00:00 | 38 | CHI05-PH2-FIT-BL-D5,3,3,2,1,1 | 17-Mar-25 08:00:00 | COLO4 | CELL_2 |
| 688 | CHI05-04-02-DH-1410 | HAC Placing - COLO4 Cell 2 - DH | Not Started | 07-Mar-25 17:00:00 | 35 | CHI05-PH2-FIT-BL-D5,3,3,2,1,1 | 03-Mar-25 08:00:00 | COLO4 | CELL_2 |
| 689 | CHI05-04-02-DH-1420 | Finishes and Signage - COLO4 Cell 2 - DH | Not Started | 04-Apr-25 17:00:00 | 74 | CHI05-PH2-FIT-BL-D5,3,3,2,1,1 | 31-Mar-25 08:00:00 | COLO4 | CELL_2 |
| 690 | CHI05-04-02-L1-1500 | Interior - L1 UPS - COLO4 Cell 2 | Not Started | 10-Mar-25 17:00:00 | 35 | CHI05-PH2-FIT-BL-D5,3,3,2,1,4,1 | 10-Mar-25 08:00:00 | COLO4 | CELL_2 |
| 691 | CHI05-04-02-L1-1510 | Interior - L1 MSB - COLO4 Cell 2 | Not Started | 11-Mar-25 17:00:00 | 45 | CHI05-PH2-FIT-BL-D5,3,3,2,1,4,1 | 11-Mar-25 08:00:00 | COLO4 | CELL_2 |
| 692 | CHI05-04-02-L1-1520 | Interior - L1 PDUs - COLO4 Cell 2 | Not Started | 12-Mar-25 17:00:00 | 55 | CHI05-PH2-FIT-BL-D5,3,3,2,1,4,1 | 12-Mar-25 08:00:00 | COLO4 | CELL_2 |
| 693 | CHI05-04-02-L1-1530 | Interior - L1 AHUs - COLO4 Cell 2 | Not Started | 14-Mar-25 17:00:00 | 63 | CHI05-PH2-FIT-BL-D5,3,3,2,1,4,1 | 14-Mar-25 08:00:00 | COLO4 | CELL_2 |
| 694 | CHI05-04-02-L1-1540 | Interior - L1 ATSs - COLO4 Cell 2 | Not Started | 13-Mar-25 17:00:00 | 59 | CHI05-PH2-FIT-BL-D5,3,3,2,1,4,1 | 13-Mar-25 08:00:00 | COLO4 | CELL_2 |
| 695 | CHI05-04-02-L1-1550 | Interior - L1 Busway - COLO4 Cell 2 | Not Started | 13-Mar-25 17:00:00 | 59 | CHI05-PH2-FIT-BL-D5,3,3,2,1,4,1 | 13-Mar-25 08:00:00 | COLO4 | CELL_2 |
| 696 | CHI05-04-02-L1-1610 | Interior - L1 ADP - COLO4 Cell 2 | Not Started | 12-Mar-25 17:00:00 | 45 | CHI05-PH2-FIT-BL-D5,3,3,2,1,4,1 | 12-Mar-25 08:00:00 | COLO4 | CELL_2 |
| 697 | CHI05-04-02-L2-1620 | Interior - L2 UPS - COLO4 Cell 2 | Not Started | 19-Mar-25 17:00:00 | 45 | CHI05-PH2-FIT-BL-D5,3,3,2,1,4,2 | 13-Mar-25 08:00:00 | COLO4 | CELL_2 |
| 698 | CHI05-04-02-L2-1630 | Interior - L2 MSB - COLO4 Cell 2 | Not Started | 26-Mar-25 17:00:00 | 45 | CHI05-PH2-FIT-BL-D5,3,3,2,1,4,2 | 20-Mar-25 08:00:00 | COLO4 | CELL_2 |
| 699 | CHI05-04-02-L2-1640 | Interior - L2 PDUs - COLO4 Cell 2 | Not Started | 09-Apr-25 17:00:00 | 40 | CHI05-PH2-FIT-BL-D5,3,3,2,1,4,2 | 03-Apr-25 08:00:00 | COLO4 | CELL_2 |
| 700 | CHI05-04-02-L2-1650 | Interior - L2 AHUs - COLO4 Cell 2 | Not Started | 23-Apr-25 17:00:00 | 40 | CHI05-PH2-FIT-BL-D5,3,3,2,1,4,2 | 17-Apr-25 08:00:00 | COLO4 | CELL_2 |

| entry | activity_id | activity_name | activity_status | finish | total_float | wbs_code | start | location | sub_location |
| --- | --- | --- | --- | --- | --- | --- | --- | --- | --- |
| 701 | CHI05-04-02-L2-1660 | Interior - L2 ATSs - COLO4 Cell 2 | Not Started | 09-Apr-25 17:00:00 | 45 | CHI05-PH2-FIT-BL-D5,3,3,2,1,4,2 | 03-Apr-25 08:00:00 | COLO4 | CELL_2 |
| 702 | CHI05-04-02-L2-1670 | Interior - L2 Busway - COLO4 Cell 2 | Not Started | 16-Apr-25 17:00:00 | 40 | CHI05-PH2-FIT-BL-D5,3,3,2,1,4,2 | 10-Apr-25 08:00:00 | COLO4 | CELL_2 |
| 703 | CHI05-04-02-L2-1730 | Interior - L2 ADP - COLO4 Cell 2 | Not Started | 02-Apr-25 17:00:00 | 45 | CHI05-PH2-FIT-BL-D5,3,3,2,1,4,2 | 27-Mar-25 08:00:00 | COLO4 | CELL_2 |
| 704 | CHI05-04-02-L3-1740 | Interior - L3 UPS - COLO4 Cell 2 | Not Started | 21-Mar-25 17:00:00 | 48 | CHI05-PH2-FIT-BL-D5,3,3,2,1,4,3 | 17-Mar-25 08:00:00 | COLO4 | CELL_2 |
| 705 | CHI05-04-02-L3-1750 | Interior - L3 MSB - COLO4 Cell 2 | Not Started | 16-May-25 17:00:00 | 13 | CHI05-PH2-FIT-BL-D5,3,3,2,1,4,3 | 12-May-25 08:00:00 | COLO4 | CELL_2 |
| 706 | CHI05-04-02-L3-1760 | Interior - L3 PDUs - COLO4 Cell 2 | Not Started | 23-May-25 17:00:00 | 18 | CHI05-PH2-FIT-BL-D5,3,3,2,1,4,3 | 19-May-25 08:00:00 | COLO4 | CELL_2 |
| 707 | CHI05-04-02-L3-1770 | Interior - L3 AHUs - COLO4 Cell 2 | Not Started | 09-Jun-25 17:00:00 | 13 | CHI05-PH2-FIT-BL-D5,3,3,2,1,4,3 | 03-Jun-25 08:00:00 | COLO4 | CELL_2 |
| 708 | CHI05-04-02-L3-1780 | Interior - L3 ATSs - COLO4 Cell 2 | Not Started | 02-Jun-25 17:00:00 | 13 | CHI05-PH2-FIT-BL-D5,3,3,2,1,4,3 | 27-May-25 08:00:00 | COLO4 | CELL_2 |
| 709 | CHI05-04-02-L3-1790 | Interior - L3 Busway - COLO4 Cell 2 | Not Started | 09-Jun-25 17:00:00 | 13 | CHI05-PH2-FIT-BL-D5,3,3,2,1,4,3 | 03-Jun-25 08:00:00 | COLO4 | CELL_2 |
| 710 | CHI05-04-02-L3-1850 | Interior - L3 ADP - COLO4 Cell 2 | Not Started | 23-May-25 17:00:00 | 13 | CHI05-PH2-FIT-BL-D5,3,3,2,1,4,3 | 19-May-25 08:00:00 | COLO4 | CELL_2 |
| 711 | CHI05-04-03-MG-1440 | Install Dampers and actuators at Louvers - Upper level (RED) - COLO4 Cell 3 - MG | Not Started | 26-Dec-24 17:00:00 | 23 | CHI05-PH2-FIT-BL-D5,3,3,2,3,2 | 19-Dec-24 08:00:00 | UPPERLEVEL(RED) |  |
| 712 | CHI05-04-03-MG-1450 | Install Dampers and actuators at Louvers - Lower level (OA) - COLO4 Cell 3 - MG | Not Started | 30-Dec-24 17:00:00 | 23 | CHI05-PH2-FIT-BL-D5,3,3,2,3,2 | 23-Dec-24 08:00:00 | LOWERLEVEL(OA) |  |
| 713 | CHI05-04-03-MG-1460 | Overhead MEP Installation - COLO4 Cell 3 - MG | Not Started | 27-Jan-25 17:00:00 | 14 | CHI05-PH2-FIT-BL-D5,3,3,2,3,2 | 14-Jan-25 08:00:00 | COLO4 | CELL_3 |
| 714 | CHI05-04-03-MG-1470 | Deliver AHU into Mech. Gallery - COLO4 Cell 3 - MG | Not Started | 29-Jan-25 17:00:00 | 14 | CHI05-PH2-FIT-BL-D5,3,3,2,3,2 | 28-Jan-25 08:00:00 | COLO4 | CELL_3 |
| 715 | CHI05-04-03-MG-1480 | Install Walls and Primer Paint - COLO4 Cell 3 - MG | Not Started | 12-Feb-25 17:00:00 | 14 | CHI05-PH2-FIT-BL-D5,3,3,2,3,2 | 30-Jan-25 08:00:00 | COLO4 | CELL_3 |
| 716 | CHI05-04-03-MG-1490 | Placing the AHU - COLO4 Cell 3 - MG | Not Started | 24-Feb-25 12:00:00 | 49 | CHI05-PH2-FIT-BL-D5,3,3,2,3,2 | 20-Feb-25 08:00:00 | COLO4 | CELL_3 |
| 717 | CHI05-04-03-MG-1500 | Layout Ceiling and install Pencile Rod - COLO4 Cell 3 - MG | Not Started | 13-Feb-25 17:00:00 | 53 | CHI05-PH2-FIT-BL-D5,3,3,2,3,2 | 13-Feb-25 08:00:00 | COLO4 | CELL_3 |
| 718 | CHI05-04-03-MG-1510 | Piping and Electrical Termination to AHUs - COLO4 Cell 3 - MG | Not Started | 10-Mar-25 12:00:00 | 58 | CHI05-PH2-FIT-BL-D5,3,3,2,3,2 | 24-Feb-25 13:00:00 | COLO4 | CELL_3 |
| 719 | CHI05-04-03-MG-1520 | Pipe Testing - COLO4 Cell 3 - MG | Not Started | 12-Mar-25 12:00:00 | 60 | CHI05-PH2-FIT-BL-D5,3,3,2,3,2 | 10-Mar-25 13:00:00 | COLO4 | CELL_3 |
| 720 | CHI05-04-03-MG-1530 | Install ceiling and Light Fittings - COLO4 Cell 3 - MG | Not Started | 24-Mar-25 12:00:00 | 60 | CHI05-PH2-FIT-BL-D5,3,3,2,3,2 | 12-Mar-25 13:00:00 | COLO4 | CELL_3 |
| 721 | CHI05-04-03-MG-1540 | Trim out MEP - COLO4 Cell 3 - MG | Not Started | 24-Mar-25 12:00:00 | 63 | CHI05-PH2-FIT-BL-D5,3,3,2,3,2 | 17-Mar-25 13:00:00 | COLO4 | CELL_3 |
| 722 | CHI05-04-03-MG-1485 | Post Wall Overhead MEP - COLO4 Cell 3 - MG | Not Started | 05-Mar-25 17:00:00 | 49 | CHI05-PH2-FIT-BL-D5,3,3,2,3,2 | 13-Feb-25 08:00:00 | COLO4 | CELL_3 |
| 723 | CHI05-04-03-ER-1440 | Install Walls and Primer Paint - COLO4 Cell 3 - ER | Not Started | 14-Feb-25 17:00:00 | 0 | CHI05-PH2-FIT-BL-D5,3,3,2,3,5 | 03-Feb-25 08:00:00 | COLO4 | CELL_3 |
| 724 | CHI05-04-03-ER-1450 | Sprinklers and Overhead MEP (Above Ceiling) - COLO4 Cell 3 - ER | Not Started | 04-Mar-25 17:00:00 | 0 | CHI05-PH2-FIT-BL-D5,3,3,2,3,5 | 19-Feb-25 08:00:00 | COLO4 | CELL_3 |
| 725 | CHI05-04-03-ER-1460 | Install Upper Screens - COLO4 Cell 3 - ER | Not Started | 18-Feb-25 17:00:00 | 0 | CHI05-PH2-FIT-BL-D5,3,3,2,3,5 | 12-Feb-25 08:00:00 | COLO4 | CELL_3 |
| 726 | CHI05-04-03-ER-1470 | Install Ceiling - COLO4 Cell 3 - ER | Not Started | 07-Mar-25 17:00:00 | 0 | CHI05-PH2-FIT-BL-D5,3,3,2,3,5 | 05-Mar-25 08:00:00 | COLO4 | CELL_3 |
| 727 | CHI05-04-03-ER-1480 | Below Ceiling MEP Rough In - COLO4 Cell 3 - ER | Not Started | 21-Mar-25 17:00:00 | 0 | CHI05-PH2-FIT-BL-D5,3,3,2,3,5 | 10-Mar-25 08:00:00 | COLO4 | CELL_3 |
| 728 | CHI05-04-03-ER-1490 | Installation of ADP & ATS - COLO4 Cell 3 - ER | Not Started | 18-Mar-25 17:00:00 | 24 | CHI05-PH2-FIT-BL-D5,3,3,2,3,5 | 12-Mar-25 08:00:00 | COLO4 | CELL_3 |
| 729 | CHI05-04-03-ER-1500 | Installation of UPS Equipment - COLO4 Cell 3 - ER | Not Started | 21-Mar-25 17:00:00 | 5 | CHI05-PH2-FIT-BL-D5,3,3,2,3,5 | 17-Mar-25 08:00:00 | COLO4 | CELL_3 |
| 730 | CHI05-04-03-ER-1510 | Connet to Cable tray and conduit equipment - COLO4 Cell 3 - ER | Not Started | 20-Mar-25 17:00:00 | 65 | CHI05-PH2-FIT-BL-D5,3,3,2,3,5 | 14-Mar-25 08:00:00 | COLO4 | CELL_3 |
| 731 | CHI05-04-03-ER-1520 | Cable Pulling at Elec. Equipment - COLO4 Cell 3 - ER | Not Started | 22-Apr-25 17:00:00 | 57 | CHI05-PH2-FIT-BL-D5,3,3,2,3,5 | 02-Apr-25 08:00:00 | COLO4 | CELL_3 |
| 732 | CHI05-04-03-ER-1530 | Door Frame Installation - COLO4 Cell 3 - ER | Not Started | 28-Mar-25 17:00:00 | 10 | CHI05-PH2-FIT-BL-D5,3,3,2,3,5 | 24-Mar-25 08:00:00 | COLO4 | CELL_3 |
| 733 | CHI05-04-03-ER-1540 | Finishes and Signage - COLO4 Cell 3 - ER | Not Started | 24-Apr-25 17:00:00 | 65 | CHI05-PH2-FIT-BL-D5,3,3,2,3,5 | 18-Apr-25 08:00:00 | COLO4 | CELL_3 |
| 734 | CHI05-04-03-ER-1495 | Installation of MSB - COLO4 Cell 3 - ER | Not Started | 18-Mar-25 17:00:00 | 24 | CHI05-PH2-FIT-BL-D5,3,3,2,3,5 | 12-Mar-25 08:00:00 | COLO4 | CELL_3 |
| 735 | CHI05-04-03-DH-1430 | Termination at PDU & Busway - COLO4 Cell 3 - DH | Not Started | 23-Apr-25 17:00:00 | 2 | CHI05-PH2-FIT-BL-D5,3,3,2,3,1 | 03-Apr-25 08:00:00 | COLO4 | CELL_3 |
| 736 | CHI05-04-03-DH-1440 | Overhead MEP and Hangers (Above Ceiling) - COLO4 Cell 3 - DH | Not Started | 24-Feb-25 17:00:00 | 9 | CHI05-PH2-FIT-BL-D5,3,3,2,3,1 | 07-Feb-25 08:00:00 | COLO4 | CELL_3 |
| 737 | CHI05-04-03-DH-1450 | HAC install and Rise - COLO4 Cell 3 - DH | Not Started | 31-Mar-25 17:00:00 | 37 | CHI05-PH2-FIT-BL-D5,3,3,2,3,1 | 25-Mar-25 08:00:00 | COLO4 | CELL_3 |
| 738 | CHI05-04-03-DH-1460 | Cable Pulling at PDU & Busway- COLO4 Cell 3 - DH | Not Started | 07-Apr-25 17:00:00 | 14 | CHI05-PH2-FIT-BL-D5,3,3,2,3,1 | 25-Mar-25 08:00:00 | COLO4 | CELL_3 |
| 739 | CHI05-04-03-DH-1470 | Security Screen Installation - COLO4 Cell 3 - DH | Not Started | 21-Feb-25 17:00:00 | 10 | CHI05-PH2-FIT-BL-D5,3,3,2,3,1 | 19-Feb-25 08:00:00 | COLO4 | CELL_3 |
| 740 | CHI05-04-03-DH-1480 | Ceiling Grid and Tile - COLO4 Cell 3 - DH | Not Started | 03-Mar-25 17:00:00 | 9 | CHI05-PH2-FIT-BL-D5,3,3,2,3,1 | 25-Feb-25 08:00:00 | COLO4 | CELL_3 |
| 741 | CHI05-04-03-DH-1490 | Install PDU's - COLO4 Cell 3 - DH | Not Started | 24-Mar-25 17:00:00 | 9 | CHI05-PH2-FIT-BL-D5,3,3,2,3,1 | 18-Mar-25 08:00:00 | COLO4 | CELL_3 |
| 742 | CHI05-04-03-DH-1500 | Overhead MEP Installation (Below Ceiling) - COLO4 Cell 3 - DH | Not Started | 17-Mar-25 17:00:00 | 9 | CHI05-PH2-FIT-BL-D5,3,3,2,3,1 | 04-Mar-25 08:00:00 | COLO4 | CELL_3 |
| 743 | CHI05-04-03-DH-1510 | Install Low Voltage Wiring and Fiber Optic - COLO4 Cell 3 - DH | Not Started | 14-Apr-25 17:00:00 | 37 | CHI05-PH2-FIT-BL-D5,3,3,2,3,1 | 01-Apr-25 08:00:00 | COLO4 | CELL_3 |
| 744 | CHI05-04-03-DH-1520 | HAC Placing - COLO4 Cell 3 - DH | Not Started | 24-Mar-25 17:00:00 | 29 | CHI05-PH2-FIT-BL-D5,3,3,2,3,1 | 18-Mar-25 08:00:00 | COLO4 | CELL_3 |
| 745 | CHI05-04-03-DH-1530 | Finishes and Signage - COLO4 Cell 3 - DH | Not Started | 23-Apr-25 17:00:00 | 66 | CHI05-PH2-FIT-BL-D5,3,3,2,3,1 | 17-Apr-25 08:00:00 | COLO4 | CELL_3 |
| 746 | CHI05-04-03-L1-1620 | Interior - L1 UPS - COLO4 Cell 3 | Not Started | 24-Mar-25 17:00:00 | 26 | CHI05-PH2-FIT-BL-D5,3,3,2,3,4,1 | 24-Mar-25 08:00:00 | COLO4 | CELL_3 |
| 747 | CHI05-04-03-L1-1630 | Interior - L1 MSB - COLO4 Cell 3 | Not Started | 25-Mar-25 17:00:00 | 33 | CHI05-PH2-FIT-BL-D5,3,3,2,3,4,1 | 25-Mar-25 08:00:00 | COLO4 | CELL_3 |
| 748 | CHI05-04-03-L1-1640 | Interior - L1 PDUs - COLO4 Cell 3 | Not Started | 26-Mar-25 17:00:00 | 33 | CHI05-PH2-FIT-BL-D5,3,3,2,3,4,1 | 26-Mar-25 08:00:00 | COLO4 | CELL_3 |
| 749 | CHI05-04-03-L1-1650 | Interior - L1 AHUs - COLO4 Cell 3 | Not Started | 28-Mar-25 17:00:00 | 33 | CHI05-PH2-FIT-BL-D5,3,3,2,3,4,1 | 28-Mar-25 08:00:00 | COLO4 | CELL_3 |
| 750 | CHI05-04-03-L1-1660 | Interior - L1 ATSs - COLO4 Cell 3 | Not Started | 27-Mar-25 17:00:00 | 33 | CHI05-PH2-FIT-BL-D5,3,3,2,3,4,1 | 27-Mar-25 08:00:00 | COLO4 | CELL_3 |
| 751 | CHI05-04-03-L1-1670 | Interior - L1 Busway - COLO4 Cell 3 | Not Started | 27-Mar-25 17:00:00 | 33 | CHI05-PH2-FIT-BL-D5,3,3,2,3,4,1 | 27-Mar-25 08:00:00 | COLO4 | CELL_3 |
| 752 | CHI05-04-03-L1-1730 | Interior - L1 ADP - COLO4 Cell 3 | Not Started | 26-Mar-25 17:00:00 | 33 | CHI05-PH2-FIT-BL-D5,3,3,2,3,4,1 | 26-Mar-25 08:00:00 | COLO4 | CELL_3 |
| 753 | CHI05-04-03-L2-1740 | Interior - L2 UPS - COLO4 Cell 3 | Not Started | 04-Apr-25 17:00:00 | 33 | CHI05-PH2-FIT-BL-D5,3,3,2,3,4,2 | 31-Mar-25 08:00:00 | COLO4 | CELL_3 |
| 754 | CHI05-04-03-L2-1750 | Interior - L2 MSB - COLO4 Cell 3 | Not Started | 11-Apr-25 17:00:00 | 33 | CHI05-PH2-FIT-BL-D5,3,3,2,3,4,2 | 07-Apr-25 08:00:00 | COLO4 | CELL_3 |
| 755 | CHI05-04-03-L2-1760 | Interior - L2 PDUs - COLO4 Cell 3 | Not Started | 30-Apr-25 17:00:00 | 25 | CHI05-PH2-FIT-BL-D5,3,3,2,3,4,2 | 24-Apr-25 08:00:00 | COLO4 | CELL_3 |
| 756 | CHI05-04-03-L2-1770 | Interior - L2 AHUs - COLO4 Cell 3 | Not Started | 14-May-25 17:00:00 | 25 | CHI05-PH2-FIT-BL-D5,3,3,2,3,4,2 | 08-May-25 08:00:00 | COLO4 | CELL_3 |
| 757 | CHI05-04-03-L2-1780 | Interior - L2 ATSs - COLO4 Cell 3 | Not Started | 25-Apr-25 17:00:00 | 33 | CHI05-PH2-FIT-BL-D5,3,3,2,3,4,2 | 21-Apr-25 08:00:00 | COLO4 | CELL_3 |
| 758 | CHI05-04-03-L2-1790 | Interior - L2 Busway - COLO4 Cell 3 | Not Started | 07-May-25 17:00:00 | 25 | CHI05-PH2-FIT-BL-D5,3,3,2,3,4,2 | 01-May-25 08:00:00 | COLO4 | CELL_3 |
| 759 | CHI05-04-03-L2-1850 | Interior - L2 ADP - COLO4 Cell 3 | Not Started | 18-Apr-25 17:00:00 | 33 | CHI05-PH2-FIT-BL-D5,3,3,2,3,4,2 | 14-Apr-25 08:00:00 | COLO4 | CELL_3 |
| 760 | CHI05-04-03-L3-1860 | Interior - L3 UPS - COLO4 Cell 3 | Not Started | 04-Apr-25 17:00:00 | 38 | CHI05-PH2-FIT-BL-D5,3,3,2,3,4,3 | 31-Mar-25 08:00:00 | COLO4 | CELL_3 |
| 761 | CHI05-04-03-L3-1870 | Interior - L3 MSB - COLO4 Cell 3 | Not Started | 16-May-25 17:00:00 | 13 | CHI05-PH2-FIT-BL-D5,3,3,2,3,4,3 | 12-May-25 08:00:00 | COLO4 | CELL_3 |
| 762 | CHI05-04-03-L3-1880 | Interior - L3 PDUs - COLO4 Cell 3 | Not Started | 23-May-25 17:00:00 | 18 | CHI05-PH2-FIT-BL-D5,3,3,2,3,4,3 | 19-May-25 08:00:00 | COLO4 | CELL_3 |
| 763 | CHI05-04-03-L3-1890 | Interior - L3 AHUs - COLO4 Cell 3 | Not Started | 09-Jun-25 17:00:00 | 13 | CHI05-PH2-FIT-BL-D5,3,3,2,3,4,3 | 03-Jun-25 08:00:00 | COLO4 | CELL_3 |
| 764 | CHI05-04-03-L3-1900 | Interior - L3 ATSs - COLO4 Cell 3 | Not Started | 02-Jun-25 17:00:00 | 13 | CHI05-PH2-FIT-BL-D5,3,3,2,3,4,3 | 27-May-25 08:00:00 | COLO4 | CELL_3 |
| 765 | CHI05-04-03-L3-1910 | Interior - L3 Busway - COLO4 Cell 3 | Not Started | 09-Jun-25 17:00:00 | 13 | CHI05-PH2-FIT-BL-D5,3,3,2,3,4,3 | 03-Jun-25 08:00:00 | COLO4 | CELL_3 |
| 766 | CHI05-04-03-L3-1970 | Interior - L3 ADP - COLO4 Cell 3 | Not Started | 23-May-25 17:00:00 | 13 | CHI05-PH2-FIT-BL-D5,3,3,2,3,4,3 | 19-May-25 08:00:00 | COLO4 | CELL_3 |
| 767 | CHI05-04-04-MG-1550 | Install Dampers and actuators at Louvers - Upper level (RED) - COLO4 Cell 4 - MG | Not Started | 03-Jan-25 17:00:00 | 33 | CHI05-PH2-FIT-BL-D5,3,3,2,2,2 | 27-Dec-24 08:00:00 | UPPERLEVEL(RED) |  |
| 768 | CHI05-04-04-MG-1560 | Install Dampers and actuators at Louvers - Lower level (OA) - COLO4 Cell 4 - MG | Not Started | 07-Jan-25 17:00:00 | 33 | CHI05-PH2-FIT-BL-D5,3,3,2,2,2 | 31-Dec-24 08:00:00 | LOWERLEVEL(OA) |  |
| 769 | CHI05-04-04-MG-1570 | Overhead MEP Installation - COLO4 Cell 4 - MG | Not Started | 10-Feb-25 17:00:00 | 19 | CHI05-PH2-FIT-BL-D5,3,3,2,2,2 | 28-Jan-25 08:00:00 | COLO4 | CELL_4 |
| 770 | CHI05-04-04-MG-1580 | Deliver AHU into Mech. Gallery - COLO4 Cell 4 - MG | Not Started | 12-Feb-25 17:00:00 | 19 | CHI05-PH2-FIT-BL-D5,3,3,2,2,2 | 11-Feb-25 08:00:00 | COLO4 | CELL_4 |

| entry | activity_id | activity_name | activity_status | finish | total_float | wbs_code | start | location | sub_location |
| --- | --- | --- | --- | --- | --- | --- | --- | --- | --- |
| 771 | CHI05-04-04-MG-1590 | Install Walls and Primer Paint - COLO4 Cell 4 - MG | Not Started | 26-Feb-25 17:00:00 | 19 | CHI05-PH2-FIT-BL-D5,3,3,2,2,2 | 13-Feb-25 08:00:00 | COLO4 | CELL_4 |
| 772 | CHI05-04-04-MG-1600 | Placing the AHU - COLO4 Cell 4 - MG | Not Started | 10-Mar-25 12:00:00 | 41 | CHI05-PH2-FIT-BL-D5,3,3,2,2,2 | 06-Mar-25 08:00:00 | COLO4 | CELL_4 |
| 773 | CHI05-04-04-MG-1610 | Layout Ceiling and install Pencile Rod - COLO4 Cell 4 - MG | Not Started | 27-Feb-25 17:00:00 | 45 | CHI05-PH2-FIT-BL-D5,3,3,2,2,2 | 27-Feb-25 08:00:00 | COLO4 | CELL_4 |
| 774 | CHI05-04-04-MG-1620 | Piping and Electrical Termination to AHUs - COLO4 Cell 4 - MG | Not Started | 24-Mar-25 12:00:00 | 58 | CHI05-PH2-FIT-BL-D5,3,3,2,2,2 | 10-Mar-25 13:00:00 | COLO4 | CELL_4 |
| 775 | CHI05-04-04-MG-1630 | Pipe Testing - COLO4 Cell 4 - MG | Not Started | 26-Mar-25 12:00:00 | 58 | CHI05-PH2-FIT-BL-D5,3,3,2,2,2 | 24-Mar-25 13:00:00 | COLO4 | CELL_4 |
| 776 | CHI05-04-04-MG-1640 | Install ceiling and Light Fittings - COLO4 Cell 4 - MG | Not Started | 07-Apr-25 12:00:00 | 58 | CHI05-PH2-FIT-BL-D5,3,3,2,2,2 | 26-Mar-25 13:00:00 | COLO4 | CELL_4 |
| 777 | CHI05-04-04-MG-1650 | Trim out MEP - COLO4 Cell 4 - MG | Not Started | 07-Apr-25 12:00:00 | 58 | CHI05-PH2-FIT-BL-D5,3,3,2,2,2 | 31-Mar-25 13:00:00 | COLO4 | CELL_4 |
| 778 | CHI05-04-04-MG-1595 | Post Wall Overhead MEP - COLO4 Cell 4 - MG | Not Started | 19-Mar-25 17:00:00 | 41 | CHI05-PH2-FIT-BL-D5,3,3,2,2,2 | 27-Feb-25 08:00:00 | COLO4 | CELL_4 |
| 779 | CHI05-04-04-ER-1550 | Install Walls and Primer Paint - COLO4 Cell 4 - ER | Not Started | 28-Feb-25 17:00:00 | 0 | CHI05-PH2-FIT-BL-D5,3,3,2,2,5 | 17-Feb-25 08:00:00 | COLO4 | CELL_4 |
| 780 | CHI05-04-04-ER-1560 | Sprinklers and Overhead MEP (Above Ceiling) - COLO4 Cell 4 - ER | Not Started | 18-Mar-25 17:00:00 | 0 | CHI05-PH2-FIT-BL-D5,3,3,2,2,5 | 05-Mar-25 08:00:00 | COLO4 | CELL_4 |
| 781 | CHI05-04-04-ER-1570 | Install Upper Screens - COLO4 Cell 4 - ER | Not Started | 04-Mar-25 17:00:00 | 0 | CHI05-PH2-FIT-BL-D5,3,3,2,2,5 | 26-Feb-25 08:00:00 | COLO4 | CELL_4 |
| 782 | CHI05-04-04-ER-1580 | Install Ceiling - COLO4 Cell 4 - ER | Not Started | 21-Mar-25 17:00:00 | 0 | CHI05-PH2-FIT-BL-D5,3,3,2,2,5 | 19-Mar-25 08:00:00 | COLO4 | CELL_4 |
| 783 | CHI05-04-04-ER-1590 | Below Ceiling MEP Rough In - COLO4 Cell 4 - ER | Not Started | 04-Apr-25 17:00:00 | 0 | CHI05-PH2-FIT-BL-D5,3,3,2,2,5 | 24-Mar-25 08:00:00 | COLO4 | CELL_4 |
| 784 | CHI05-04-04-ER-1600 | Installation of ADP & ATS - COLO4 Cell 4 - ER | Not Started | 28-Mar-25 17:00:00 | 23 | CHI05-PH2-FIT-BL-D5,3,3,2,2,5 | 24-Mar-25 08:00:00 | COLO4 | CELL_4 |
| 785 | CHI05-04-04-ER-1610 | Installation of UPS Equipment - COLO4 Cell 4 - ER | Not Started | 04-Apr-25 17:00:00 | 0 | CHI05-PH2-FIT-BL-D5,3,3,2,2,5 | 31-Mar-25 08:00:00 | COLO4 | CELL_4 |
| 786 | CHI05-04-04-ER-1620 | Connet to Cable tray and conduit equipment - COLO4 Cell 4 - ER | Not Started | 28-Mar-25 17:00:00 | 74 | CHI05-PH2-FIT-BL-D5,3,3,2,2,5 | 24-Mar-25 08:00:00 | COLO4 | CELL_4 |
| 787 | CHI05-04-04-ER-1630 | Cable Pulling at Elec. Equipment - COLO4 Cell 4 - ER | Not Started | 13-May-25 17:00:00 | 57 | CHI05-PH2-FIT-BL-D5,3,3,2,2,5 | 23-Apr-25 08:00:00 | COLO4 | CELL_4 |
| 788 | CHI05-04-04-ER-1640 | Door Frame Installation - COLO4 Cell 4 - ER | Not Started | 11-Apr-25 17:00:00 | 0 | CHI05-PH2-FIT-BL-D5,3,3,2,2,5 | 07-Apr-25 08:00:00 | COLO4 | CELL_4 |
| 789 | CHI05-04-04-ER-1650 | Finishes and Signage - COLO4 Cell 4 - ER | Not Started | 13-May-25 17:00:00 | 57 | CHI05-PH2-FIT-BL-D5,3,3,2,2,5 | 07-May-25 08:00:00 | COLO4 | CELL_4 |
| 790 | CHI05-04-04-ER-1625 | Installation of MSB - COLO4 Cell 4 - ER | Not Started | 28-Mar-25 17:00:00 | 21 | CHI05-PH2-FIT-BL-D5,3,3,2,2,5 | 24-Mar-25 08:00:00 | COLO4 | CELL_4 |
| 791 | CHI05-04-04-DH-1635 | Closing Construction Access Door - COLO4 Cell 4 - DH | Not Started | 30-Apr-25 17:00:00 | 40 | CHI05-PH2-FIT-BL-D5,3,3,2,2,1 | 10-Apr-25 08:00:00 | COLO4 | CELL_4 |
| 792 | CHI05-04-04-DH-1540 | Termination at PDU & Busway - COLO4 Cell 4 - DH | Not Started | 14-May-25 17:00:00 | 2 | CHI05-PH2-FIT-BL-D5,3,3,2,2,1 | 24-Apr-25 08:00:00 | COLO4 | CELL_4 |
| 793 | CHI05-04-04-DH-1550 | Overhead MEP and Hangers (Above Ceiling) - COLO4 Cell 4 - DH | Not Started | 12-Mar-25 17:00:00 | 12 | CHI05-PH2-FIT-BL-D5,3,3,2,2,1 | 25-Feb-25 08:00:00 | COLO4 | CELL_4 |
| 794 | CHI05-04-04-DH-1560 | HAC install and Rise - COLO4 Cell 4 - DH | Not Started | 16-Apr-25 17:00:00 | 35 | CHI05-PH2-FIT-BL-D5,3,3,2,2,1 | 10-Apr-25 08:00:00 | COLO4 | CELL_4 |
| 795 | CHI05-04-04-DH-1570 | Cable Pulling at PDU & Busway- COLO4 Cell 4 - DH | Not Started | 23-Apr-25 17:00:00 | 17 | CHI05-PH2-FIT-BL-D5,3,3,2,2,1 | 10-Apr-25 08:00:00 | COLO4 | CELL_4 |
| 796 | CHI05-04-04-DH-1580 | Security Screen Installation - COLO4 Cell 4 - DH | Not Started | 07-Mar-25 17:00:00 | 15 | CHI05-PH2-FIT-BL-D5,3,3,2,2,1 | 05-Mar-25 08:00:00 | COLO4 | CELL_4 |
| 797 | CHI05-04-04-DH-1590 | Ceiling Grid and Tile - COLO4 Cell 4 - DH | Not Started | 19-Mar-25 17:00:00 | 12 | CHI05-PH2-FIT-BL-D5,3,3,2,2,1 | 13-Mar-25 08:00:00 | COLO4 | CELL_4 |
| 798 | CHI05-04-04-DH-1600 | Install PDU's - COLO4 Cell 4 - DH | Not Started | 09-Apr-25 17:00:00 | 12 | CHI05-PH2-FIT-BL-D5,3,3,2,2,1 | 03-Apr-25 08:00:00 | COLO4 | CELL_4 |
| 799 | CHI05-04-04-DH-1610 | Overhead MEP Installation (Below Ceiling) - COLO4 Cell 4 - DH | Not Started | 02-Apr-25 17:00:00 | 12 | CHI05-PH2-FIT-BL-D5,3,3,2,2,1 | 20-Mar-25 08:00:00 | COLO4 | CELL_4 |
| 800 | CHI05-04-04-DH-1620 | Install Low Voltage Wiring and Fiber Optic - COLO4 Cell 4 - DH | Not Started | 30-Apr-25 17:00:00 | 35 | CHI05-PH2-FIT-BL-D5,3,3,2,2,1 | 17-Apr-25 08:00:00 | COLO4 | CELL_4 |
| 801 | CHI05-04-04-DH-1630 | HAC Placing - COLO4 Cell 4 - DH | Not Started | 09-Apr-25 17:00:00 | 22 | CHI05-PH2-FIT-BL-D5,3,3,2,2,1 | 03-Apr-25 08:00:00 | COLO4 | CELL_4 |
| 802 | CHI05-04-04-DH-1640 | Finishes and Signage - COLO4 Cell 4 - DH | Not Started | 14-May-25 17:00:00 | 56 | CHI05-PH2-FIT-BL-D5,3,3,2,2,1 | 08-May-25 08:00:00 | COLO4 | CELL_4 |
| 803 | CHI05-04-04-L1-1740 | Interior - L1 UPS - COLO4 Cell 4 | Not Started | 07-Apr-25 17:00:00 | 16 | CHI05-PH2-FIT-BL-D5,3,3,2,2,4,1 | 07-Apr-25 08:00:00 | COLO4 | CELL_4 |
| 804 | CHI05-04-04-L1-1750 | Interior - L1 MSB - COLO4 Cell 4 | Not Started | 07-Apr-25 17:00:00 | 16 | CHI05-PH2-FIT-BL-D5,3,3,2,2,4,1 | 07-Apr-25 08:00:00 | COLO4 | CELL_4 |
| 805 | CHI05-04-04-L1-1760 | Interior - L1 PDUs - COLO4 Cell 4 | Not Started | 10-Apr-25 17:00:00 | 14 | CHI05-PH2-FIT-BL-D5,3,3,2,2,4,1 | 10-Apr-25 08:00:00 | COLO4 | CELL_4 |
| 806 | CHI05-04-04-L1-1770 | Interior - L1 AHUs - COLO4 Cell 4 | Not Started | 14-Apr-25 17:00:00 | 14 | CHI05-PH2-FIT-BL-D5,3,3,2,2,4,1 | 14-Apr-25 08:00:00 | COLO4 | CELL_4 |
| 807 | CHI05-04-04-L1-1780 | Interior - L1 ATSs - COLO4 Cell 4 | Not Started | 08-Apr-25 17:00:00 | 17 | CHI05-PH2-FIT-BL-D5,3,3,2,2,4,1 | 08-Apr-25 08:00:00 | COLO4 | CELL_4 |
| 808 | CHI05-04-04-L1-1790 | Interior - L1 Busway - COLO4 Cell 4 | Not Started | 11-Apr-25 17:00:00 | 14 | CHI05-PH2-FIT-BL-D5,3,3,2,2,4,1 | 11-Apr-25 08:00:00 | COLO4 | CELL_4 |
| 809 | CHI05-04-04-L1-1850 | Interior - L1 ADP - COLO4 Cell 4 | Not Started | 08-Apr-25 17:00:00 | 17 | CHI05-PH2-FIT-BL-D5,3,3,2,2,4,1 | 08-Apr-25 08:00:00 | COLO4 | CELL_4 |
| 810 | CHI05-04-04-L2-1860 | Interior - L2 UPS - COLO4 Cell 4 | Not Started | 21-Apr-25 17:00:00 | 14 | CHI05-PH2-FIT-BL-D5,3,3,2,2,4,2 | 15-Apr-25 08:00:00 | COLO4 | CELL_4 |
| 811 | CHI05-04-04-L2-1870 | Interior - L2 MSB - COLO4 Cell 4 | Not Started | 28-Apr-25 17:00:00 | 14 | CHI05-PH2-FIT-BL-D5,3,3,2,2,4,2 | 22-Apr-25 08:00:00 | COLO4 | CELL_4 |
| 812 | CHI05-04-04-L2-1880 | Interior - L2 PDUs - COLO4 Cell 4 | Not Started | 21-May-25 17:00:00 | 2 | CHI05-PH2-FIT-BL-D5,3,3,2,2,4,2 | 15-May-25 08:00:00 | COLO4 | CELL_4 |
| 813 | CHI05-04-04-L2-1890 | Interior - L2 AHUs - COLO4 Cell 4 | Not Started | 05-Jun-25 17:00:00 | 10 | CHI05-PH2-FIT-BL-D5,3,3,2,2,4,2 | 30-May-25 08:00:00 | COLO4 | CELL_4 |
| 814 | CHI05-04-04-L2-1900 | Interior - L2 ATSs - COLO4 Cell 4 | Not Started | 12-May-25 17:00:00 | 19 | CHI05-PH2-FIT-BL-D5,3,3,2,2,4,2 | 06-May-25 08:00:00 | COLO4 | CELL_4 |
| 815 | CHI05-04-04-L2-1910 | Interior - L2 Busway - COLO4 Cell 4 | Not Started | 29-May-25 17:00:00 | 10 | CHI05-PH2-FIT-BL-D5,3,3,2,2,4,2 | 22-May-25 08:00:00 | COLO4 | CELL_4 |
| 816 | CHI05-04-04-L2-1970 | Interior - L2 ADP - COLO4 Cell 4 | Not Started | 05-May-25 17:00:00 | 19 | CHI05-PH2-FIT-BL-D5,3,3,2,2,4,2 | 29-Apr-25 08:00:00 | COLO4 | CELL_4 |
| 817 | CHI05-04-04-L3-1980 | Interior - L3 UPS - COLO4 Cell 4 | Not Started | 16-May-25 17:00:00 | 0 | CHI05-PH2-FIT-BL-D5,3,3,2,2,4,3 | 12-May-25 08:00:00 | COLO4 | CELL_4 |
| 818 | CHI05-04-04-L3-1990 | Interior - L3 MSB - COLO4 Cell 4 | Not Started | 23-May-25 17:00:00 | 0 | CHI05-PH2-FIT-BL-D5,3,3,2,2,4,3 | 19-May-25 08:00:00 | COLO4 | CELL_4 |
| 819 | CHI05-04-04-L3-2000 | Interior - L3 PDUs - COLO4 Cell 4 | Not Started | 02-Jun-25 17:00:00 | 0 | CHI05-PH2-FIT-BL-D5,3,3,2,2,4,3 | 27-May-25 08:00:00 | COLO4 | CELL_4 |
| 820 | CHI05-04-04-L3-2010 | Interior - L3 AHUs - COLO4 Cell 4 | Not Started | 26-Jun-25 17:00:00 | 0 | CHI05-PH2-FIT-BL-D5,3,3,2,2,4,3 | 20-Jun-25 08:00:00 | COLO4 | CELL_4 |
| 821 | CHI05-04-04-L3-2020 | Interior - L3 ATSs - COLO4 Cell 4 | Not Started | 16-Jun-25 17:00:00 | 0 | CHI05-PH2-FIT-BL-D5,3,3,2,2,4,3 | 10-Jun-25 08:00:00 | COLO4 | CELL_4 |
| 822 | CHI05-04-04-L3-2030 | Interior - L3 Busway - COLO4 Cell 4 | Not Started | 23-Jun-25 17:00:00 | 0 | CHI05-PH2-FIT-BL-D5,3,3,2,2,4,3 | 17-Jun-25 08:00:00 | COLO4 | CELL_4 |
| 823 | CHI05-04-04-L3-2090 | Interior - L3 ADP - COLO4 Cell 4 | Not Started | 09-Jun-25 17:00:00 | 0 | CHI05-PH2-FIT-BL-D5,3,3,2,2,4,3 | 03-Jun-25 08:00:00 | COLO4 | CELL_4 |
| 824 | CHI05-04-04-L4-1000 | Cx LEV4 - COLO4 | Not Started | 31-Jul-25 17:00:00 | 0 | CHI05-PH2-FIT-BL-D5,3,3,2,5,1 | 27-Jun-25 08:00:00 | COLO4 |  |
| 825 | CHI05-04-04-L5-1000 | Cx LEV5 / IST - COLO4 | Not Started | 04-Aug-25 17:00:00 | 0 | CHI05-PH2-FIT-BL-D5,3,3,2,5,2 | 01-Aug-25 08:00:00 | ISTCOLO4 |  |
| 826 | CHI05-05-01-MG-1330 | Install Dampers and actuators at Louvers - Upper level (RED) - COLO5 Cell 1 - MG | Not Started | 11-Oct-24 17:00:00 | 0 | CHI05-PH2-FIT-BL-D5,3,3,3,6,2 | 07-Oct-24 08:00:00 | UPPERLEVEL(RED) |  |
| 827 | CHI05-05-01-MG-1340 | Install Dampers and actuators at Louvers - Lower level (OA) - COLO5 Cell 1 - MG | Not Started | 15-Oct-24 17:00:00 | 53 | CHI05-PH2-FIT-BL-D5,3,3,3,6,2 | 09-Oct-24 08:00:00 | LOWERLEVEL(OA) |  |
| 828 | CHI05-05-01-MG-1350 | Overhead MEP Installation - COLO5 Cell 1 - MG | Not Started | 29-Oct-24 17:00:00 | 53 | CHI05-PH2-FIT-BL-D5,3,3,3,6,2 | 16-Oct-24 08:00:00 | COLO5 | CELL_1 |
| 829 | CHI05-05-01-MG-1360 | Deliver AHU into Mech. Gallery - COLO5 Cell 1 - MG | Not Started | 20-Nov-24 17:00:00 | 39 | CHI05-PH2-FIT-BL-D5,3,3,3,6,2 | 19-Nov-24 08:00:00 | COLO5 | CELL_1 |
| 830 | CHI05-05-01-MG-1370 | Install Walls and Primer Paint - COLO5 Cell 1 - MG | Not Started | 05-Dec-24 17:00:00 | 39 | CHI05-PH2-FIT-BL-D5,3,3,3,6,2 | 21-Nov-24 08:00:00 | COLO5 | CELL_1 |
| 831 | CHI05-05-01-MG-1380 | Placing the AHU - COLO5 Cell 1 - MG | Not Started | 19-Dec-24 17:00:00 | 77 | CHI05-PH2-FIT-BL-D5,3,3,3,6,2 | 13-Dec-24 08:00:00 | COLO5 | CELL_1 |
| 832 | CHI05-05-01-MG-1390 | Layout Ceiling and install Pencile Rod - COLO5 Cell 1 - MG | Not Started | 06-Dec-24 17:00:00 | 81 | CHI05-PH2-FIT-BL-D5,3,3,3,6,2 | 06-Dec-24 08:00:00 | COLO5 | CELL_1 |
| 833 | CHI05-05-01-MG-1400 | Piping and Electrical Termination to AHUs - COLO5 Cell 1 - MG | Not Started | 06-Jan-25 17:00:00 | 77 | CHI05-PH2-FIT-BL-D5,3,3,3,6,2 | 20-Dec-24 08:00:00 | COLO5 | CELL_1 |
| 834 | CHI05-05-01-MG-1410 | Pipe Testing - COLO5 Cell 1 - MG | Not Started | 08-Jan-25 17:00:00 | 83 | CHI05-PH2-FIT-BL-D5,3,3,3,6,2 | 07-Jan-25 08:00:00 | COLO5 | CELL_1 |
| 835 | CHI05-05-01-MG-1420 | Install ceiling and Light Fittings - COLO5 Cell 1 - MG | Not Started | 20-Jan-25 17:00:00 | 83 | CHI05-PH2-FIT-BL-D5,3,3,3,6,2 | 09-Jan-25 08:00:00 | COLO5 | CELL_1 |
| 836 | CHI05-05-01-MG-1430 | Trim out MEP - COLO5 Cell 1 - MG | Not Started | 27-Jan-25 17:00:00 | 87 | CHI05-PH2-FIT-BL-D5,3,3,3,6,2 | 21-Jan-25 08:00:00 | COLO5 | CELL_1 |
| 837 | CHI05-05-01-MG-1375 | Post Wall Overhead MEP - COLO5 Cell 1 - MG | Not Started | 27-Dec-24 17:00:00 | 77 | CHI05-PH2-FIT-BL-D5,3,3,3,6,2 | 06-Dec-24 08:00:00 | COLO5 | CELL_1 |
| 838 | CHI05-05-01-MG-1425 | Install Damper in Ceiling (RAD) - COLO 5 Cell 1 - MG | Not Started | 27-Jan-25 17:00:00 | 87 | CHI05-PH2-FIT-BL-D5,3,3,3,6,2 | 21-Jan-25 08:00:00 | COLO_5 | CELL_1 |
| 839 | CHI05-05-01-ER-1330 | Install Walls and Primer Paint - COLO5 Cell 1 - ER | Not Started | 15-Oct-24 17:00:00 | 58 | CHI05-PH2-FIT-BL-D5,3,3,3,6,5 | 02-Oct-24 08:00:00 | COLO5 | CELL_1 |
| 840 | CHI05-05-01-ER-1340 | Sprinklers and Overhead MEP (Above Ceiling) - COLO5 Cell 1 - ER | Not Started | 05-Nov-24 17:00:00 | 58 | CHI05-PH2-FIT-BL-D5,3,3,3,6,5 | 23-Oct-24 08:00:00 | COLO5 | CELL_1 |

| entry | activity_id | activity_name | activity_status | finish | total_float | wbs_code | start | location | sub_location |
| --- | --- | --- | --- | --- | --- | --- | --- | --- | --- |
| 841 | CHI05-05-01-ER-1350 | Install Upper Screens - COLO5 Cell 1 - ER | Not Started | 22-Oct-24 17:00:00 | 58 | CHI05-PH2-FIT-BL-D5,3,3,3,6,5 | 16-Oct-24 08:00:00 | COLO5 | CELL_1 |
| 842 | CHI05-05-01-ER-1360 | Install Ceiling - COLO5 Cell 1 - ER | Not Started | 08-Nov-24 17:00:00 | 58 | CHI05-PH2-FIT-BL-D5,3,3,3,6,5 | 06-Nov-24 08:00:00 | COLO5 | CELL_1 |
| 843 | CHI05-05-01-ER-1370 | Below Ceiling MEP Rough In - COLO5 Cell 1 - ER | Not Started | 22-Nov-24 17:00:00 | 58 | CHI05-PH2-FIT-BL-D5,3,3,3,6,5 | 11-Nov-24 08:00:00 | COLO5 | CELL_1 |
| 844 | CHI05-05-01-ER-1380 | Installation of ADP & ATS - COLO5 Cell 1 - ER | Not Started | 05-Dec-24 17:00:00 | 87 | CHI05-PH2-FIT-BL-D5,3,3,3,6,5 | 29-Nov-24 08:00:00 | COLO5 | CELL_1 |
| 845 | CHI05-05-01-ER-1390 | Installation of UPS Equipment - COLO5 Cell 1 - ER | Not Started | 02-Dec-24 17:00:00 | 73 | CHI05-PH2-FIT-BL-D5,3,3,3,6,5 | 25-Nov-24 08:00:00 | COLO5 | CELL_1 |
| 846 | CHI05-05-01-ER-1400 | Connet to Cable tray and conduit equipment - COLO5 Cell 1 - ER | Not Started | 16-Dec-24 17:00:00 | 94 | CHI05-PH2-FIT-BL-D5,3,3,3,6,5 | 10-Dec-24 08:00:00 | COLO5 | CELL_1 |
| 847 | CHI05-05-01-ER-1410 | Cable Pulling at Elec. Equipment - COLO5 Cell 1 - ER | Not Started | 08-Jan-25 17:00:00 | 94 | CHI05-PH2-FIT-BL-D5,3,3,3,6,5 | 17-Dec-24 08:00:00 | COLO5 | CELL_1 |
| 848 | CHI05-05-01-ER-1420 | Door Frame Installation - COLO5 Cell 1 - ER | Not Started | 09-Dec-24 17:00:00 | 88 | CHI05-PH2-FIT-BL-D5,3,3,3,6,5 | 03-Dec-24 08:00:00 | COLO5 | CELL_1 |
| 849 | CHI05-05-01-ER-1430 | Finishes and Signage - COLO5 Cell 1 - ER | Not Started | 10-Jan-25 17:00:00 | 109 | CHI05-PH2-FIT-BL-D5,3,3,3,6,5 | 06-Jan-25 08:00:00 | COLO5 | CELL_1 |
| 850 | CHI05-05-01-ER-1385 | Installation of MSB - COLO5 Cell 1 - ER | Not Started | 12-Dec-24 17:00:00 | 81 | CHI05-PH2-FIT-BL-D5,3,3,3,6,5 | 06-Dec-24 08:00:00 | COLO5 | CELL_1 |
| 851 | CHI05-05-01-DH-1320 | Cable Pulling at PDU & Busway - COLO5 Cell 1 - DH | Not Started | 16-Jan-25 17:00:00 | 44 | CHI05-PH2-FIT-BL-D5,3,3,3,6,1 | 26-Dec-24 08:00:00 | COLO5 | CELL_1 |
| 852 | CHI05-05-01-DH-1330 | Overhead MEP and Hangers (Above Ceiling) - COLO5 Cell 1 - DH | Not Started | 29-Oct-24 17:00:00 | 63 | CHI05-PH2-FIT-BL-D5,3,3,3,6,1 | 02-Oct-24 08:00:00 | COLO5 | CELL_1 |
| 853 | CHI05-05-01-DH-1340 | HAC install and Rise - COLO5 Cell 1 - DH | Not Started | 02-Jan-25 17:00:00 | 74 | CHI05-PH2-FIT-BL-D5,3,3,3,6,1 | 26-Dec-24 08:00:00 | COLO5 | CELL_1 |
| 854 | CHI05-05-01-DH-1350 | Termination at PDU & Busway- COLO5 Cell 1 - DH | Not Started | 09-Jan-25 17:00:00 | 49 | CHI05-PH2-FIT-BL-D5,3,3,3,6,1 | 26-Dec-24 08:00:00 | COLO5 | CELL_1 |
| 855 | CHI05-05-01-DH-1360 | Security Screen Installation - COLO5 Cell 1 - DH | Not Started | 25-Nov-24 17:00:00 | 44 | CHI05-PH2-FIT-BL-D5,3,3,3,6,1 | 21-Nov-24 08:00:00 | COLO5 | CELL_1 |
| 856 | CHI05-05-01-DH-1370 | Ceiling Grid and Tile - COLO5 Cell 1 - DH | Not Started | 03-Dec-24 17:00:00 | 44 | CHI05-PH2-FIT-BL-D5,3,3,3,6,1 | 26-Nov-24 08:00:00 | COLO5 | CELL_1 |
| 857 | CHI05-05-01-DH-1380 | Install PDU's - COLO5 Cell 1 - DH | Not Started | 24-Dec-24 17:00:00 | 44 | CHI05-PH2-FIT-BL-D5,3,3,3,6,1 | 18-Dec-24 08:00:00 | COLO5 | CELL_1 |
| 858 | CHI05-05-01-DH-1390 | Overhead MEP Installation (Below Ceiling) - COLO5 Cell 1 - DH | Not Started | 17-Dec-24 17:00:00 | 44 | CHI05-PH2-FIT-BL-D5,3,3,3,6,1 | 04-Dec-24 08:00:00 | COLO5 | CELL_1 |
| 859 | CHI05-05-01-DH-1400 | Install Low Voltage Wiring and Fiber Optic - COLO5 Cell 1 - DH | Not Started | 16-Jan-25 17:00:00 | 74 | CHI05-PH2-FIT-BL-D5,3,3,3,6,1 | 03-Jan-25 08:00:00 | COLO5 | CELL_1 |
| 860 | CHI05-05-01-DH-1410 | HAC Placing - COLO5 Cell 1 - DH | Not Started | 24-Dec-24 17:00:00 | 74 | CHI05-PH2-FIT-BL-D5,3,3,3,6,1 | 18-Dec-24 08:00:00 | COLO5 | CELL_1 |
| 861 | CHI05-05-01-DH-1420 | Finishes and Signage - COLO5 Cell 1 - DH | Not Started | 23-Jan-25 17:00:00 | 105 | CHI05-PH2-FIT-BL-D5,3,3,3,6,1 | 17-Jan-25 08:00:00 | COLO5 | CELL_1 |
| 862 | CHI05-05-01-L1-1500 | Interior - L1 UPS - COLO5 Cell 1 | Not Started | 03-Dec-24 17:00:00 | 103 | CHI05-PH2-FIT-BL-D5,3,3,3,6,4,1 | 03-Dec-24 08:00:00 | COLO5 | CELL_1 |
| 863 | CHI05-05-01-L1-1510 | Interior - L1 MSB - COLO5 Cell 1 | Not Started | 13-Dec-24 17:00:00 | 106 | CHI05-PH2-FIT-BL-D5,3,3,3,6,4,1 | 13-Dec-24 08:00:00 | COLO5 | CELL_1 |
| 864 | CHI05-05-01-L1-1520 | Interior - L1 PDUs - COLO5 Cell 1 | Not Started | 26-Dec-24 17:00:00 | 103 | CHI05-PH2-FIT-BL-D5,3,3,3,6,4,1 | 26-Dec-24 08:00:00 | COLO5 | CELL_1 |
| 865 | CHI05-05-01-L1-1530 | Interior - L1 AHUs - COLO5 Cell 1 | Not Started | 03-Jan-25 17:00:00 | 108 | CHI05-PH2-FIT-BL-D5,3,3,3,6,4,1 | 03-Jan-25 08:00:00 | COLO5 | CELL_1 |
| 866 | CHI05-05-01-L1-1540 | Interior - L1 ATSs - COLO5 Cell 1 | Not Started | 17-Dec-24 17:00:00 | 114 | CHI05-PH2-FIT-BL-D5,3,3,3,6,4,1 | 17-Dec-24 08:00:00 | COLO5 | CELL_1 |
| 867 | CHI05-05-01-L1-1550 | Interior - L1 Busway - COLO5 Cell 1 | Not Started | 27-Dec-24 17:00:00 | 107 | CHI05-PH2-FIT-BL-D5,3,3,3,6,4,1 | 27-Dec-24 08:00:00 | COLO5 | CELL_1 |
| 868 | CHI05-05-01-L1-1610 | Interior - L1 ADP - COLO5 Cell 1 | Not Started | 16-Dec-24 17:00:00 | 110 | CHI05-PH2-FIT-BL-D5,3,3,3,6,4,1 | 16-Dec-24 08:00:00 | COLO5 | CELL_1 |
| 869 | CHI05-05-01-L2-1620 | Interior - L2 UPS - COLO5 Cell 1 | Not Started | 03-Mar-25 17:00:00 | 52 | CHI05-PH2-FIT-BL-D5,3,3,3,6,4,2 | 25-Feb-25 08:00:00 | COLO5 | CELL_1 |
| 870 | CHI05-05-01-L2-1630 | Interior - L2 MSB - COLO5 Cell 1 | Not Started | 10-Mar-25 17:00:00 | 52 | CHI05-PH2-FIT-BL-D5,3,3,3,6,4,2 | 04-Mar-25 08:00:00 | COLO5 | CELL_1 |
| 871 | CHI05-05-01-L2-1640 | Interior - L2 PDUs - COLO5 Cell 1 | Not Started | 17-Mar-25 17:00:00 | 52 | CHI05-PH2-FIT-BL-D5,3,3,3,6,4,2 | 11-Mar-25 08:00:00 | COLO5 | CELL_1 |
| 872 | CHI05-05-01-L2-1650 | Interior - L2 AHUs - COLO5 Cell 1 | Not Started | 31-Mar-25 17:00:00 | 52 | CHI05-PH2-FIT-BL-D5,3,3,3,6,4,2 | 25-Mar-25 08:00:00 | COLO5 | CELL_1 |
| 873 | CHI05-05-01-L2-1660 | Interior - L2 ATSs - COLO5 Cell 1 | Not Started | 24-Mar-25 17:00:00 | 52 | CHI05-PH2-FIT-BL-D5,3,3,3,6,4,2 | 18-Mar-25 08:00:00 | COLO5 | CELL_1 |
| 874 | CHI05-05-01-L2-1670 | Interior - L2 Busway - COLO5 Cell 1 | Not Started | 24-Mar-25 17:00:00 | 52 | CHI05-PH2-FIT-BL-D5,3,3,3,6,4,2 | 18-Mar-25 08:00:00 | COLO5 | CELL_1 |
| 875 | CHI05-05-01-L2-1730 | Interior - L2 ADP - COLO5 Cell 1 | Not Started | 17-Mar-25 17:00:00 | 52 | CHI05-PH2-FIT-BL-D5,3,3,3,6,4,2 | 11-Mar-25 08:00:00 | COLO5 | CELL_1 |
| 876 | CHI05-05-01-L3-1740 | Interior - L3 UPS - COLO5 Cell 1 | Not Started | 31-Mar-25 17:00:00 | 37 | CHI05-PH2-FIT-BL-D5,3,3,3,6,4,3 | 25-Mar-25 08:00:00 | COLO5 | CELL_1 |
| 877 | CHI05-05-01-L3-1750 | Interior - L3 MSB - COLO5 Cell 1 | Not Started | 07-Apr-25 17:00:00 | 37 | CHI05-PH2-FIT-BL-D5,3,3,3,6,4,3 | 01-Apr-25 08:00:00 | COLO5 | CELL_1 |
| 878 | CHI05-05-01-L3-1760 | Interior - L3 PDUs - COLO5 Cell 1 | Not Started | 14-Apr-25 17:00:00 | 37 | CHI05-PH2-FIT-BL-D5,3,3,3,6,4,3 | 08-Apr-25 08:00:00 | COLO5 | CELL_1 |
| 879 | CHI05-05-01-L3-1770 | Interior - L3 AHUs - COLO5 Cell 1 | Not Started | 28-Apr-25 17:00:00 | 37 | CHI05-PH2-FIT-BL-D5,3,3,3,6,4,3 | 22-Apr-25 08:00:00 | COLO5 | CELL_1 |
| 880 | CHI05-05-01-L3-1780 | Interior - L3 ATSs - COLO5 Cell 1 | Not Started | 21-Apr-25 17:00:00 | 37 | CHI05-PH2-FIT-BL-D5,3,3,3,6,4,3 | 15-Apr-25 08:00:00 | COLO5 | CELL_1 |
| 881 | CHI05-05-01-L3-1790 | Interior - L3 Busway - COLO5 Cell 1 | Not Started | 21-Apr-25 17:00:00 | 37 | CHI05-PH2-FIT-BL-D5,3,3,3,6,4,3 | 15-Apr-25 08:00:00 | COLO5 | CELL_1 |
| 882 | CHI05-05-01-L3-1850 | Interior - L3 ADP - COLO5 Cell 1 | Not Started | 14-Apr-25 17:00:00 | 37 | CHI05-PH2-FIT-BL-D5,3,3,3,6,4,3 | 08-Apr-25 08:00:00 | COLO5 | CELL_1 |
| 883 | CHI05-05-02-MG-1440 | Install Dampers and actuators at Louvers - Upper level (RED) - COLO5 Cell 2 - MG | Not Started | 18-Oct-24 17:00:00 | 58 | CHI05-PH2-FIT-BL-D5,3,3,3,1,2 | 14-Oct-24 08:00:00 | UPPERLEVEL(RED) |  |
| 884 | CHI05-05-02-MG-1450 | Install Dampers and actuators at Louvers - Lower level (OA) - COLO5 Cell 2 - MG | Not Started | 22-Oct-24 17:00:00 | 58 | CHI05-PH2-FIT-BL-D5,3,3,3,1,2 | 16-Oct-24 08:00:00 | LOWERLEVEL(OA) |  |
| 885 | CHI05-05-02-MG-1460 | Overhead MEP Installation - COLO5 Cell 2 - MG | Not Started | 12-Nov-24 17:00:00 | 53 | CHI05-PH2-FIT-BL-D5,3,3,3,1,2 | 30-Oct-24 08:00:00 | COLO5 | CELL_2 |
| 886 | CHI05-05-02-MG-1470 | Deliver AHU into Mech. Gallery - COLO5 Cell 2 - MG | Not Started | 22-Nov-24 17:00:00 | 47 | CHI05-PH2-FIT-BL-D5,3,3,3,1,2 | 21-Nov-24 08:00:00 | COLO5 | CELL_2 |
| 887 | CHI05-05-02-MG-1480 | Install Walls and Primer Paint - COLO5 Cell 2 - MG | Not Started | 19-Dec-24 17:00:00 | 39 | CHI05-PH2-FIT-BL-D5,3,3,3,1,2 | 06-Dec-24 08:00:00 | COLO5 | CELL_2 |
| 888 | CHI02-05-02-MG-1490 | Placing the AHU - COLO5 Cell 2 - MG | Not Started | 02-Jan-25 12:00:00 | 80 | CHI05-PH2-FIT-BL-D5,3,3,3,1,2 | 30-Dec-24 08:00:00 | COLO5 | CELL_2 |
| 889 | CHI02-05-02-MG-1500 | Layout Ceiling and install Pencile Rod - COLO5 Cell 2 - MG | Not Started | 20-Dec-24 17:00:00 | 84 | CHI05-PH2-FIT-BL-D5,3,3,3,1,2 | 20-Dec-24 08:00:00 | COLO5 | CELL_2 |
| 890 | CHI02-05-02-MG-1510 | Piping and Electrical Termination to AHUs - COLO5 Cell 2 - MG | Not Started | 20-Jan-25 17:00:00 | 77 | CHI05-PH2-FIT-BL-D5,3,3,3,1,2 | 07-Jan-25 08:00:00 | COLO5 | CELL_2 |
| 891 | CHI05-05-02-MG-1520 | Pipe Testing - COLO5 Cell 2 - MG | Not Started | 22-Jan-25 17:00:00 | 81 | CHI05-PH2-FIT-BL-D5,3,3,3,1,2 | 21-Jan-25 08:00:00 | COLO5 | CELL_2 |
| 892 | CHI05-05-02-MG-1530 | Install ceiling and Light Fittings - COLO5 Cell 2 - MG | Not Started | 03-Feb-25 17:00:00 | 81 | CHI05-PH2-FIT-BL-D5,3,3,3,1,2 | 23-Jan-25 08:00:00 | COLO5 | CELL_2 |
| 893 | CHI05-05-02-MG-1540 | Trim out MEP - COLO5 Cell 2 - MG | Not Started | 03-Feb-25 17:00:00 | 87 | CHI05-PH2-FIT-BL-D5,3,3,3,1,2 | 28-Jan-25 08:00:00 | COLO5 | CELL_2 |
| 894 | CHI05-05-02-MG-1485 | Post Wall Overhead MEP - COLO5 Cell 2 - MG | Not Started | 13-Jan-25 17:00:00 | 80 | CHI05-PH2-FIT-BL-D5,3,3,3,1,2 | 20-Dec-24 08:00:00 | COLO5 | CELL_2 |
| 895 | CHI05-05-02-ER-1440 | Install Walls and Primer Paint - COLO5 Cell 2 - ER | Not Started | 29-Oct-24 17:00:00 | 61 | CHI05-PH2-FIT-BL-D5,3,3,3,1,5 | 16-Oct-24 08:00:00 | COLO5 | CELL_2 |
| 896 | CHI05-05-02-ER-1450 | Sprinklers and Overhead MEP (Above Ceiling) - COLO5 Cell 2 - ER | Not Started | 19-Nov-24 17:00:00 | 58 | CHI05-PH2-FIT-BL-D5,3,3,3,1,5 | 06-Nov-24 08:00:00 | COLO5 | CELL_2 |
| 897 | CHI02-05-02-ER-1460 | Install Upper Screens - COLO5 Cell 2 - ER | Not Started | 31-Oct-24 17:00:00 | 61 | CHI05-PH2-FIT-BL-D5,3,3,3,1,5 | 25-Oct-24 08:00:00 | COLO5 | CELL_2 |
| 898 | CHI05-05-02-ER-1470 | Install Ceiling - COLO5 Cell 2 - ER | Not Started | 22-Nov-24 17:00:00 | 58 | CHI05-PH2-FIT-BL-D5,3,3,3,1,5 | 20-Nov-24 08:00:00 | COLO5 | CELL_2 |
| 899 | CHI05-05-02-ER-1480 | Below Ceiling MEP Rough In - COLO5 Cell 2 - ER | Not Started | 09-Dec-24 17:00:00 | 58 | CHI05-PH2-FIT-BL-D5,3,3,3,1,5 | 25-Nov-24 08:00:00 | COLO5 | CELL_2 |
| 900 | CHI05-05-02-ER-1490 | Installation of ADP & ATS - COLO5 Cell 2 - ER | Not Started | 12-Dec-24 17:00:00 | 87 | CHI05-PH2-FIT-BL-D5,3,3,3,1,5 | 06-Dec-24 08:00:00 | COLO5 | CELL_2 |
| 901 | CHI05-05-02-ER-1500 | Installation of UPS Equipment - COLO5 Cell 2 - ER | Not Started | 16-Dec-24 17:00:00 | 68 | CHI05-PH2-FIT-BL-D5,3,3,3,1,5 | 10-Dec-24 08:00:00 | COLO5 | CELL_2 |
| 902 | CHI05-05-02-ER-1510 | Connet to Cable tray and conduit equipment - COLO5 Cell 2 - ER | Not Started | 23-Dec-24 17:00:00 | 104 | CHI05-PH2-FIT-BL-D5,3,3,3,1,5 | 17-Dec-24 08:00:00 | COLO5 | CELL_2 |
| 903 | CHI05-05-02-ER-1520 | Cable Pulling at Elec. Equipment - COLO5 Cell 2 - ER | Not Started | 29-Jan-25 17:00:00 | 94 | CHI05-PH2-FIT-BL-D5,3,3,3,1,5 | 09-Jan-25 08:00:00 | COLO5 | CELL_2 |
| 904 | CHI05-05-02-ER-1530 | Door Frame Installation - COLO5 Cell 2 - ER | Not Started | 09-Jan-25 17:00:00 | 67 | CHI05-PH2-FIT-BL-D5,3,3,3,1,5 | 03-Jan-25 08:00:00 | COLO5 | CELL_2 |
| 905 | CHI05-05-02-ER-1540 | Finishes and Signage - COLO5 Cell 2 - ER | Not Started | 31-Jan-25 17:00:00 | 104 | CHI05-PH2-FIT-BL-D5,3,3,3,1,5 | 27-Jan-25 08:00:00 | COLO5 | CELL_2 |
| 906 | CHI05-05-02-ER-1495 | Installation of MSB - COLO5 Cell 2 - ER | Not Started | 19-Dec-24 17:00:00 | 81 | CHI05-PH2-FIT-BL-D5,3,3,3,1,5 | 13-Dec-24 08:00:00 | COLO5 | CELL_2 |
| 907 | CHI05-05-02-DH-1430 | Cable Pulling at PDU & Busway - COLO5 Cell 2 - DH | Not Started | 13-Feb-25 17:00:00 | 39 | CHI05-PH2-FIT-BL-D5,3,3,3,1,1 | 24-Jan-25 08:00:00 | COLO5 | CELL_2 |
| 908 | CHI05-05-02-DH-1440 | Overhead MEP and Hangers (Above Ceiling) - COLO5 Cell 2 - DH | Not Started | 14-Nov-24 17:00:00 | 66 | CHI05-PH2-FIT-BL-D5,3,3,3,1,1 | 30-Oct-24 08:00:00 | COLO5 | CELL_2 |
| 909 | CHI05-05-02-DH-1450 | HAC install and Rise - COLO5 Cell 2 - DH | Not Started | 30-Jan-25 17:00:00 | 64 | CHI05-PH2-FIT-BL-D5,3,3,3,1,1 | 24-Jan-25 08:00:00 | COLO5 | CELL_2 |
| 910 | CHI05-05-02-DH-1460 | Termination at PDU & Busway- COLO5 Cell 2 - DH | Not Started | 27-Feb-25 17:00:00 | 85 | CHI05-PH2-FIT-BL-D5,3,3,3,1,1 | 14-Feb-25 08:00:00 | COLO5 | CELL_2 |

| entry | activity_id | activity_name | activity_status | finish | total_float | wbs_code | start | location | sub_location |
| --- | --- | --- | --- | --- | --- | --- | --- | --- | --- |
| 911 | CHI05-05-02-DH-1470 | Security Screen Installation - COLO5 Cell 2 - DH | Not Started | 24-Dec-24 17:00:00 | 39 | CHI05-PH2-FIT-BL-D5,3,3,3,1,1 | 20-Dec-24 08:00:00 | COLO5 | CELL_2 |
| 912 | CHI05-05-02-DH-1480 | Ceiling Grid and Tile - COLO5 Cell 2 - DH | Not Started | 02-Jan-25 17:00:00 | 39 | CHI05-PH2-FIT-BL-D5,3,3,3,1,1 | 26-Dec-24 08:00:00 | COLO5 | CELL_2 |
| 913 | CHI05-05-02-DH-1490 | Install PDU's - COLO5 Cell 2 - DH | Not Started | 23-Jan-25 17:00:00 | 39 | CHI05-PH2-FIT-BL-D5,3,3,3,1,1 | 17-Jan-25 08:00:00 | COLO5 | CELL_2 |
| 914 | CHI05-05-02-DH-1500 | Overhead MEP Installation (Below Ceiling) - COLO5 Cell 2 - DH | Not Started | 16-Jan-25 17:00:00 | 39 | CHI05-PH2-FIT-BL-D5,3,3,3,1,1 | 03-Jan-25 08:00:00 | COLO5 | CELL_2 |
| 915 | CHI05-05-02-DH-1510 | Install Low Voltage Wiring and Fiber Optic - COLO5 Cell 2 - DH | Not Started | 13-Feb-25 17:00:00 | 64 | CHI05-PH2-FIT-BL-D5,3,3,3,1,1 | 31-Jan-25 08:00:00 | COLO5 | CELL_2 |
| 916 | CHI05-05-02-DH-1520 | HAC Placing - COLO5 Cell 2 - DH | Not Started | 23-Jan-25 17:00:00 | 64 | CHI05-PH2-FIT-BL-D5,3,3,3,1,1 | 17-Jan-25 08:00:00 | COLO5 | CELL_2 |
| 917 | CHI05-05-02-DH-1530 | Finishes and Signage - COLO5 Cell 2 - DH | Not Started | 06-Mar-25 17:00:00 | 85 | CHI05-PH2-FIT-BL-D5,3,3,3,1,1 | 28-Feb-25 08:00:00 | COLO5 | CELL_2 |
| 918 | CHI05-05-02-L1-1620 | Interior - L1 UPS - COLO5 Cell 2 | Not Started | 17-Dec-24 17:00:00 | 93 | CHI05-PH2-FIT-BL-D5,3,3,3,1,4,1 | 17-Dec-24 08:00:00 | COLO5 | CELL_2 |
| 919 | CHI05-05-02-L1-1630 | Interior - L1 MSB - COLO5 Cell 2 | Not Started | 20-Dec-24 17:00:00 | 101 | CHI05-PH2-FIT-BL-D5,3,3,3,1,4,1 | 20-Dec-24 08:00:00 | COLO5 | CELL_2 |
| 920 | CHI05-05-02-L1-1640 | Interior - L1 PDUs - COLO5 Cell 2 | Not Started | 24-Jan-25 17:00:00 | 83 | CHI05-PH2-FIT-BL-D5,3,3,3,1,4,1 | 24-Jan-25 08:00:00 | COLO5 | CELL_2 |
| 921 | CHI05-05-02-L1-1650 | Interior - L1 AHUs - COLO5 Cell 2 | Not Started | 28-Jan-25 17:00:00 | 91 | CHI05-PH2-FIT-BL-D5,3,3,3,1,4,1 | 28-Jan-25 08:00:00 | COLO5 | CELL_2 |
| 922 | CHI05-05-02-L1-1660 | Interior - L1 ATSs - COLO5 Cell 2 | Not Started | 24-Dec-24 17:00:00 | 109 | CHI05-PH2-FIT-BL-D5,3,3,3,1,4,1 | 24-Dec-24 08:00:00 | COLO5 | CELL_2 |
| 923 | CHI05-05-02-L1-1670 | Interior - L1 Busway - COLO5 Cell 2 | Not Started | 27-Jan-25 17:00:00 | 87 | CHI05-PH2-FIT-BL-D5,3,3,3,1,4,1 | 27-Jan-25 08:00:00 | COLO5 | CELL_2 |
| 924 | CHI05-05-02-L1-1730 | Interior - L1 ADP - COLO5 Cell 2 | Not Started | 23-Dec-24 17:00:00 | 105 | CHI05-PH2-FIT-BL-D5,3,3,3,1,4,1 | 23-Dec-24 08:00:00 | COLO5 | CELL_2 |
| 925 | CHI05-05-02-L2-1740 | Interior - L2 UPS - COLO5 Cell 2 | Not Started | 03-Mar-25 17:00:00 | 52 | CHI05-PH2-FIT-BL-D5,3,3,3,1,4,2 | 25-Feb-25 08:00:00 | COLO5 | CELL_2 |
| 926 | CHI05-05-02-L2-1750 | Interior - L2 MSB - COLO5 Cell 2 | Not Started | 10-Mar-25 17:00:00 | 52 | CHI05-PH2-FIT-BL-D5,3,3,3,1,4,2 | 04-Mar-25 08:00:00 | COLO5 | CELL_2 |
| 927 | CHI05-05-02-L2-1760 | Interior - L2 PDUs - COLO5 Cell 2 | Not Started | 17-Mar-25 17:00:00 | 52 | CHI05-PH2-FIT-BL-D5,3,3,3,1,4,2 | 11-Mar-25 08:00:00 | COLO5 | CELL_2 |
| 928 | CHI05-05-02-L2-1770 | Interior - L2 AHUs - COLO5 Cell 2 | Not Started | 31-Mar-25 17:00:00 | 52 | CHI05-PH2-FIT-BL-D5,3,3,3,1,4,2 | 25-Mar-25 08:00:00 | COLO5 | CELL_2 |
| 929 | CHI05-05-02-L2-1780 | Interior - L2 ATSs - COLO5 Cell 2 | Not Started | 24-Mar-25 17:00:00 | 52 | CHI05-PH2-FIT-BL-D5,3,3,3,1,4,2 | 18-Mar-25 08:00:00 | COLO5 | CELL_2 |
| 930 | CHI05-05-02-L2-1790 | Interior - L2 Busway - COLO5 Cell 2 | Not Started | 24-Mar-25 17:00:00 | 52 | CHI05-PH2-FIT-BL-D5,3,3,3,1,4,2 | 18-Mar-25 08:00:00 | COLO5 | CELL_2 |
| 931 | CHI05-05-02-L2-1850 | Interior - L2 ADP - COLO5 Cell 2 | Not Started | 17-Mar-25 17:00:00 | 52 | CHI05-PH2-FIT-BL-D5,3,3,3,1,4,2 | 11-Mar-25 08:00:00 | COLO5 | CELL_2 |
| 932 | CHI05-05-02-L3-1860 | Interior - L3 UPS - COLO5 Cell 2 | Not Started | 31-Mar-25 17:00:00 | 37 | CHI05-PH2-FIT-BL-D5,3,3,3,1,4,3 | 25-Mar-25 08:00:00 | COLO5 | CELL_2 |
| 933 | CHI05-05-02-L3-1870 | Interior - L3 MSB - COLO5 Cell 2 | Not Started | 07-Apr-25 17:00:00 | 37 | CHI05-PH2-FIT-BL-D5,3,3,3,1,4,3 | 01-Apr-25 08:00:00 | COLO5 | CELL_2 |
| 934 | CHI05-05-02-L3-1880 | Interior - L3 PDUs - COLO5 Cell 2 | Not Started | 14-Apr-25 17:00:00 | 37 | CHI05-PH2-FIT-BL-D5,3,3,3,1,4,3 | 08-Apr-25 08:00:00 | COLO5 | CELL_2 |
| 935 | CHI05-05-02-L3-1890 | Interior - L3 AHUs - COLO5 Cell 2 | Not Started | 28-Apr-25 17:00:00 | 37 | CHI05-PH2-FIT-BL-D5,3,3,3,1,4,3 | 22-Apr-25 08:00:00 | COLO5 | CELL_2 |
| 936 | CHI05-05-02-L3-1900 | Interior - L3 ATSs - COLO5 Cell 2 | Not Started | 21-Apr-25 17:00:00 | 37 | CHI05-PH2-FIT-BL-D5,3,3,3,1,4,3 | 15-Apr-25 08:00:00 | COLO5 | CELL_2 |
| 937 | CHI05-05-02-L3-1910 | Interior - L3 Busway - COLO5 Cell 2 | Not Started | 21-Apr-25 17:00:00 | 37 | CHI05-PH2-FIT-BL-D5,3,3,3,1,4,3 | 15-Apr-25 08:00:00 | COLO5 | CELL_2 |
| 938 | CHI05-05-02-L3-1970 | Interior - L3 ADP - COLO5 Cell 2 | Not Started | 14-Apr-25 17:00:00 | 37 | CHI05-PH2-FIT-BL-D5,3,3,3,1,4,3 | 08-Apr-25 08:00:00 | COLO5 | CELL_2 |
| 939 | CHI05-05-03-MG-1550 | Install Dampers and actuators at Louvers - Upper level (RED) - COLO5 Cell 3 - MG | Not Started | 25-Oct-24 17:00:00 | 68 | CHI05-PH2-FIT-BL-D5,3,3,3,3,2 | 21-Oct-24 08:00:00 | UPPERLEVEL(RED) |  |
| 940 | CHI05-05-03-MG-1560 | Install Dampers and actuators at Louvers - Lower level (OA) - COLO5 Cell 3 - MG | Not Started | 29-Oct-24 17:00:00 | 68 | CHI05-PH2-FIT-BL-D5,3,3,3,3,2 | 23-Oct-24 08:00:00 | LOWERLEVEL(OA) |  |
| 941 | CHI05-05-03-MG-1570 | Overhead MEP Installation - COLO5 Cell 3 - MG | Not Started | 26-Nov-24 17:00:00 | 58 | CHI05-PH2-FIT-BL-D5,3,3,3,3,2 | 13-Nov-24 08:00:00 | COLO5 | CELL_3 |
| 942 | CHI05-05-03-MG-1580 | Deliver AHU into Mech. Gallery - COLO5 Cell 3 - MG | Not Started | 29-Nov-24 17:00:00 | 58 | CHI05-PH2-FIT-BL-D5,3,3,3,3,2 | 27-Nov-24 08:00:00 | COLO5 | CELL_3 |
| 943 | CHI05-05-03-MG-1590 | Install Walls and Primer Paint - COLO5 Cell 3 - MG | Not Started | 06-Jan-25 17:00:00 | 44 | CHI05-PH2-FIT-BL-D5,3,3,3,3,2 | 20-Dec-24 08:00:00 | COLO5 | CELL_3 |
| 944 | CHI05-05-03-MG-1600 | Placing the AHU - COLO5 Cell 3 - MG | Not Started | 16-Jan-25 12:00:00 | 77 | CHI05-PH2-FIT-BL-D5,3,3,3,3,2 | 14-Jan-25 08:00:00 | COLO5 | CELL_3 |
| 945 | CHI05-05-03-MG-1610 | Layout Ceiling and install Pencile Rod - COLO5 Cell 3 - MG | Not Started | 07-Jan-25 17:00:00 | 81 | CHI05-PH2-FIT-BL-D5,3,3,3,3,2 | 07-Jan-25 08:00:00 | COLO5 | CELL_3 |
| 946 | CHI05-05-03-MG-1620 | Piping and Electrical Termination to AHUs - COLO5 Cell 3 - MG | Not Started | 03-Feb-25 17:00:00 | 77 | CHI05-PH2-FIT-BL-D5,3,3,3,3,2 | 21-Jan-25 08:00:00 | COLO5 | CELL_3 |
| 947 | CHI05-05-03-MG-1630 | Pipe Testing - COLO5 Cell 3 - MG | Not Started | 05-Feb-25 17:00:00 | 79 | CHI05-PH2-FIT-BL-D5,3,3,3,3,2 | 04-Feb-25 08:00:00 | COLO5 | CELL_3 |
| 948 | CHI05-05-03-MG-1640 | Install ceiling and Light Fittings - COLO5 Cell 3 - MG | Not Started | 17-Feb-25 17:00:00 | 79 | CHI05-PH2-FIT-BL-D5,3,3,3,3,2 | 06-Feb-25 08:00:00 | COLO5 | CELL_3 |
| 949 | CHI05-05-03-MG-1650 | Trim out MEP - COLO5 Cell 3 - MG | Not Started | 17-Feb-25 17:00:00 | 82 | CHI05-PH2-FIT-BL-D5,3,3,3,3,2 | 11-Feb-25 08:00:00 | COLO5 | CELL_3 |
| 950 | CHI05-05-03-MG-1595 | Post Wall Overhead MEP - COLO5 Cell 3 - MG | Not Started | 27-Jan-25 17:00:00 | 77 | CHI05-PH2-FIT-BL-D5,3,3,3,3,2 | 07-Jan-25 08:00:00 | COLO5 | CELL_3 |
| 951 | CHI05-05-03-ER-1550 | Install Walls and Primer Paint - COLO5 Cell 3 - ER | Not Started | 12-Nov-24 17:00:00 | 61 | CHI05-PH2-FIT-BL-D5,3,3,3,3,5 | 30-Oct-24 08:00:00 | COLO5 | CELL_3 |
| 952 | CHI05-05-03-ER-1560 | Sprinklers and Overhead MEP (Above Ceiling) - COLO5 Cell 3 - ER | Not Started | 04-Dec-24 17:00:00 | 58 | CHI05-PH2-FIT-BL-D5,3,3,3,3,5 | 20-Nov-24 08:00:00 | COLO5 | CELL_3 |
| 953 | CHI05-05-03-ER-1570 | Install Upper Screens - COLO5 Cell 3 - ER | Not Started | 14-Nov-24 17:00:00 | 61 | CHI05-PH2-FIT-BL-D5,3,3,3,3,5 | 08-Nov-24 08:00:00 | COLO5 | CELL_3 |
| 954 | CHI05-05-03-ER-1580 | Install Ceiling - COLO5 Cell 3 - ER | Not Started | 09-Dec-24 17:00:00 | 58 | CHI05-PH2-FIT-BL-D5,3,3,3,3,5 | 05-Dec-24 08:00:00 | COLO5 | CELL_3 |
| 955 | CHI05-05-03-ER-1590 | Below Ceiling MEP Rough In - COLO5 Cell 3 - ER | Not Started | 23-Dec-24 17:00:00 | 58 | CHI05-PH2-FIT-BL-D5,3,3,3,3,5 | 10-Dec-24 08:00:00 | COLO5 | CELL_3 |
| 956 | CHI05-05-03-ER-1600 | Installation of ADP & ATS - COLO5 Cell 3 - ER | Not Started | 19-Dec-24 17:00:00 | 87 | CHI05-PH2-FIT-BL-D5,3,3,3,3,5 | 13-Dec-24 08:00:00 | COLO5 | CELL_3 |
| 957 | CHI05-05-03-ER-1610 | Installation of UPS Equipment - COLO5 Cell 3 - ER | Not Started | 31-Dec-24 17:00:00 | 63 | CHI05-PH2-FIT-BL-D5,3,3,3,3,5 | 24-Dec-24 08:00:00 | COLO5 | CELL_3 |
| 958 | CHI05-05-03-ER-1620 | Connet to Cable tray and conduit equipment - COLO5 Cell 3 - ER | Not Started | 31-Dec-24 17:00:00 | 114 | CHI05-PH2-FIT-BL-D5,3,3,3,3,5 | 24-Dec-24 08:00:00 | COLO5 | CELL_3 |
| 959 | CHI05-05-03-ER-1630 | Cable Pulling at Elec. Equipment - COLO5 Cell 3 - ER | Not Started | 19-Feb-25 17:00:00 | 94 | CHI05-PH2-FIT-BL-D5,3,3,3,3,5 | 30-Jan-25 08:00:00 | COLO5 | CELL_3 |
| 960 | CHI05-05-03-ER-1640 | Door Frame Installation - COLO5 Cell 3 - ER | Not Started | 09-Jan-25 17:00:00 | 67 | CHI05-PH2-FIT-BL-D5,3,3,3,3,5 | 03-Jan-25 08:00:00 | COLO5 | CELL_3 |
| 961 | CHI05-05-03-ER-1650 | Finishes and Signage - COLO5 Cell 3 - ER | Not Started | 13-Mar-25 17:00:00 | 85 | CHI05-PH2-FIT-BL-D5,3,3,3,3,5 | 07-Mar-25 08:00:00 | COLO5 | CELL_3 |
| 962 | CHI05-05-03-ER-1605 | Installation of MSB - COLO5 Cell 3 - ER | Not Started | 27-Dec-24 17:00:00 | 81 | CHI05-PH2-FIT-BL-D5,3,3,3,3,5 | 20-Dec-24 08:00:00 | COLO5 | CELL_3 |
| 963 | CHI05-05-03-DH-1540 | Termination at PDU & Busway - COLO5 Cell 3 - DH | Not Started | 06-Mar-25 17:00:00 | 39 | CHI05-PH2-FIT-BL-D5,3,3,3,3,1 | 14-Feb-25 08:00:00 | COLO5 | CELL_3 |
| 964 | CHI05-05-03-DH-1550 | Overhead MEP and Hangers (Above Ceiling) - COLO5 Cell 3 - DH | Not Started | 03-Dec-24 17:00:00 | 69 | CHI05-PH2-FIT-BL-D5,3,3,3,3,1 | 15-Nov-24 08:00:00 | COLO5 | CELL_3 |
| 965 | CHI05-05-03-DH-1560 | HAC install and Rise - COLO5 Cell 3 - DH | Not Started | 13-Feb-25 17:00:00 | 64 | CHI05-PH2-FIT-BL-D5,3,3,3,3,1 | 07-Feb-25 08:00:00 | COLO5 | CELL_3 |
| 966 | CHI05-05-03-DH-1570 | Cable Pulling at PDU & Busway- COLO5 Cell 3 - DH | Not Started | 20-Feb-25 17:00:00 | 49 | CHI05-PH2-FIT-BL-D5,3,3,3,3,1 | 07-Feb-25 08:00:00 | COLO5 | CELL_3 |
| 967 | CHI05-05-03-DH-1580 | Security Screen Installation - COLO5 Cell 3 - DH | Not Started | 09-Jan-25 17:00:00 | 44 | CHI05-PH2-FIT-BL-D5,3,3,3,3,1 | 07-Jan-25 08:00:00 | COLO5 | CELL_3 |
| 968 | CHI05-05-03-DH-1590 | Ceiling Grid and Tile - COLO5 Cell 3 - DH | Not Started | 16-Jan-25 17:00:00 | 44 | CHI05-PH2-FIT-BL-D5,3,3,3,3,1 | 10-Jan-25 08:00:00 | COLO5 | CELL_3 |
| 969 | CHI05-05-03-DH-1600 | Install PDU's - COLO5 Cell 3 - DH | Not Started | 06-Feb-25 17:00:00 | 44 | CHI05-PH2-FIT-BL-D5,3,3,3,3,1 | 31-Jan-25 08:00:00 | COLO5 | CELL_3 |
| 970 | CHI05-05-03-DH-1610 | Overhead MEP Installation (Below Ceiling) - COLO5 Cell 3 - DH | Not Started | 30-Jan-25 17:00:00 | 44 | CHI05-PH2-FIT-BL-D5,3,3,3,3,1 | 17-Jan-25 08:00:00 | COLO5 | CELL_3 |
| 971 | CHI05-05-03-DH-1620 | Install Low Voltage Wiring and Fiber Optic - COLO5 Cell 3 - DH | Not Started | 27-Feb-25 17:00:00 | 64 | CHI05-PH2-FIT-BL-D5,3,3,3,3,1 | 14-Feb-25 08:00:00 | COLO5 | CELL_3 |
| 972 | CHI05-05-03-DH-1630 | HAC Placing - COLO5 Cell 3 - DH | Not Started | 06-Feb-25 17:00:00 | 64 | CHI05-PH2-FIT-BL-D5,3,3,3,3,1 | 31-Jan-25 08:00:00 | COLO5 | CELL_3 |
| 973 | CHI05-05-03-DH-1640 | Finishes and Signage - COLO5 Cell 3 - DH | Not Started | 20-Mar-25 17:00:00 | 85 | CHI05-PH2-FIT-BL-D5,3,3,3,3,1 | 14-Mar-25 08:00:00 | COLO5 | CELL_3 |
| 974 | CHI05-05-03-L1-1740 | Interior - L1 UPS - COLO5 Cell 3 | Not Started | 02-Jan-25 17:00:00 | 83 | CHI05-PH2-FIT-BL-D5,3,3,3,3,4,1 | 02-Jan-25 08:00:00 | COLO5 | CELL_3 |
| 975 | CHI05-05-03-L1-1750 | Interior - L1 MSB - COLO5 Cell 3 | Not Started | 03-Jan-25 17:00:00 | 93 | CHI05-PH2-FIT-BL-D5,3,3,3,3,4,1 | 03-Jan-25 08:00:00 | COLO5 | CELL_3 |
| 976 | CHI05-05-03-L1-1760 | Interior - L1 PDUs - COLO5 Cell 3 | Not Started | 07-Feb-25 17:00:00 | 73 | CHI05-PH2-FIT-BL-D5,3,3,3,3,4,1 | 07-Feb-25 08:00:00 | COLO5 | CELL_3 |
| 977 | CHI05-05-03-L1-1770 | Interior - L1 AHUs - COLO5 Cell 3 | Not Started | 11-Feb-25 17:00:00 | 81 | CHI05-PH2-FIT-BL-D5,3,3,3,3,4,1 | 11-Feb-25 08:00:00 | COLO5 | CELL_3 |
| 978 | CHI05-05-03-L1-1780 | Interior - L1 ATSs - COLO5 Cell 3 | Not Started | 07-Jan-25 17:00:00 | 101 | CHI05-PH2-FIT-BL-D5,3,3,3,3,4,1 | 07-Jan-25 08:00:00 | COLO5 | CELL_3 |
| 979 | CHI05-05-03-L1-1790 | Interior - L1 Busway - COLO5 Cell 3 | Not Started | 10-Feb-25 17:00:00 | 77 | CHI05-PH2-FIT-BL-D5,3,3,3,3,4,1 | 10-Feb-25 08:00:00 | COLO5 | CELL_3 |
| 980 | CHI05-05-03-L1-1850 | Interior - L1 ADP - COLO5 Cell 3 | Not Started | 06-Jan-25 17:00:00 | 97 | CHI05-PH2-FIT-BL-D5,3,3,3,3,4,1 | 06-Jan-25 08:00:00 | COLO5 | CELL_3 |

| entry | activity_id | activity_name | activity_status | finish | total_float | wbs_code | start | location | sub_location |
| --- | --- | --- | --- | --- | --- | --- | --- | --- | --- |
| 981 | CHI05-05-03-L2-1860 | Interior - L2 UPS - COLO5 Cell 3 | Not Started | 03-Mar-25 17:00:00 | 52 | CHI05-PH2-FIT-BL-D5,3,3,3,3,4,2 | 25-Feb-25 08:00:00 | COLO5 | CELL_3 |
| 982 | CHI05-05-03-L2-1870 | Interior - L2 MSB - COLO5 Cell 3 | Not Started | 10-Mar-25 17:00:00 | 52 | CHI05-PH2-FIT-BL-D5,3,3,3,3,4,2 | 04-Mar-25 08:00:00 | COLO5 | CELL_3 |
| 983 | CHI05-05-03-L2-1880 | Interior - L2 PDUs - COLO5 Cell 3 | Not Started | 17-Mar-25 17:00:00 | 52 | CHI05-PH2-FIT-BL-D5,3,3,3,3,4,2 | 11-Mar-25 08:00:00 | COLO5 | CELL_3 |
| 984 | CHI05-05-03-L2-1890 | Interior - L2 AHUs - COLO5 Cell 3 | Not Started | 31-Mar-25 17:00:00 | 52 | CHI05-PH2-FIT-BL-D5,3,3,3,3,4,2 | 25-Mar-25 08:00:00 | COLO5 | CELL_3 |
| 985 | CHI05-05-03-L2-1900 | Interior - L2 ATSs - COLO5 Cell 3 | Not Started | 24-Mar-25 17:00:00 | 52 | CHI05-PH2-FIT-BL-D5,3,3,3,3,4,2 | 18-Mar-25 08:00:00 | COLO5 | CELL_3 |
| 986 | CHI05-05-03-L2-1910 | Interior - L2 Busway - COLO5 Cell 3 | Not Started | 24-Mar-25 17:00:00 | 52 | CHI05-PH2-FIT-BL-D5,3,3,3,3,4,2 | 18-Mar-25 08:00:00 | COLO5 | CELL_3 |
| 987 | CHI05-05-03-L2-1970 | Interior - L2 ADP - COLO5 Cell 3 | Not Started | 17-Mar-25 17:00:00 | 52 | CHI05-PH2-FIT-BL-D5,3,3,3,3,4,2 | 11-Mar-25 08:00:00 | COLO5 | CELL_3 |
| 988 | CHI05-05-03-L3-1980 | Interior - L3 UPS - COLO5 Cell 3 | Not Started | 31-Mar-25 17:00:00 | 37 | CHI05-PH2-FIT-BL-D5,3,3,3,3,4,3 | 25-Mar-25 08:00:00 | COLO5 | CELL_3 |
| 989 | CHI05-05-03-L3-1990 | Interior - L3 MSB - COLO5 Cell 3 | Not Started | 07-Apr-25 17:00:00 | 37 | CHI05-PH2-FIT-BL-D5,3,3,3,3,4,3 | 01-Apr-25 08:00:00 | COLO5 | CELL_3 |
| 990 | CHI05-05-03-L3-2000 | Interior - L3 PDUs - COLO5 Cell 3 | Not Started | 14-Apr-25 17:00:00 | 37 | CHI05-PH2-FIT-BL-D5,3,3,3,3,4,3 | 08-Apr-25 08:00:00 | COLO5 | CELL_3 |
| 991 | CHI05-05-03-L3-2010 | Interior - L3 AHUs - COLO5 Cell 3 | Not Started | 28-Apr-25 17:00:00 | 37 | CHI05-PH2-FIT-BL-D5,3,3,3,3,4,3 | 22-Apr-25 08:00:00 | COLO5 | CELL_3 |
| 992 | CHI05-05-03-L3-2020 | Interior - L3 ATSs - COLO5 Cell 3 | Not Started | 21-Apr-25 17:00:00 | 37 | CHI05-PH2-FIT-BL-D5,3,3,3,3,4,3 | 15-Apr-25 08:00:00 | COLO5 | CELL_3 |
| 993 | CHI05-05-03-L3-2030 | Interior - L3 Busway - COLO5 Cell 3 | Not Started | 21-Apr-25 17:00:00 | 37 | CHI05-PH2-FIT-BL-D5,3,3,3,3,4,3 | 15-Apr-25 08:00:00 | COLO5 | CELL_3 |
| 994 | CHI05-05-03-L3-2090 | Interior - L3 ADP - COLO5 Cell 3 | Not Started | 14-Apr-25 17:00:00 | 37 | CHI05-PH2-FIT-BL-D5,3,3,3,3,4,3 | 08-Apr-25 08:00:00 | COLO5 | CELL_3 |
| 995 | CHI05-05-04-MG-1660 | Install Dampers and actuators at Louvers - Upper level (RED) - COLO5 Cell 4 - MG | Not Started | 01-Nov-24 17:00:00 | 73 | CHI05-PH2-FIT-BL-D5,3,3,3,2,2 | 28-Oct-24 08:00:00 | UPPERLEVEL(RED) |  |
| 996 | CHI05-05-04-MG-1670 | Install Dampers and actuators at Louvers - Lower level (OA) - COLO5 Cell 4 - MG | Not Started | 05-Nov-24 17:00:00 | 78 | CHI05-PH2-FIT-BL-D5,3,3,3,2,2 | 30-Oct-24 08:00:00 | LOWERLEVEL(OA) |  |
| 997 | CHI05-05-04-MG-1680 | Overhead MEP Installation - COLO5 Cell 4 - MG | Not Started | 11-Dec-24 17:00:00 | 63 | CHI05-PH2-FIT-BL-D5,3,3,3,2,2 | 27-Nov-24 08:00:00 | COLO5 | CELL_4 |
| 998 | CHI05-05-04-MG-1690 | Deliver AHU into Mech. Gallery - COLO5 Cell 4 - MG | Not Started | 13-Dec-24 17:00:00 | 63 | CHI05-PH2-FIT-BL-D5,3,3,3,2,2 | 12-Dec-24 08:00:00 | COLO5 | CELL_4 |
| 999 | CHI05-05-04-MG-1700 | Install Walls and Primer Paint - COLO5 Cell 4 - MG | Not Started | 20-Jan-25 17:00:00 | 49 | CHI05-PH2-FIT-BL-D5,3,3,3,2,2 | 07-Jan-25 08:00:00 | COLO5 | CELL_4 |
| 1000 | CHI05-05-04-MG-1710 | Placing the AHU - COLO5 Cell 4 - MG | Not Started | 30-Jan-25 12:00:00 | 69 | CHI05-PH2-FIT-BL-D5,3,3,3,2,2 | 28-Jan-25 08:00:00 | COLO5 | CELL_4 |
| 1001 | CHI05-05-04-MG-1720 | Layout Ceiling and install Pencile Rod - COLO5 Cell 4 - MG | Not Started | 21-Jan-25 17:00:00 | 73 | CHI05-PH2-FIT-BL-D5,3,3,3,2,2 | 21-Jan-25 08:00:00 | COLO5 | CELL_4 |
| 1002 | CHI05-05-04-MG-1730 | Piping and Electrical Termination to AHUs - COLO5 Cell 4 - MG | Not Started | 17-Feb-25 17:00:00 | 77 | CHI05-PH2-FIT-BL-D5,3,3,3,2,2 | 04-Feb-25 08:00:00 | COLO5 | CELL_4 |
| 1003 | CHI05-05-04-MG-1740 | Pipe Testing - COLO5 Cell 4 - MG | Not Started | 19-Feb-25 17:00:00 | 77 | CHI05-PH2-FIT-BL-D5,3,3,3,2,2 | 18-Feb-25 08:00:00 | COLO5 | CELL_4 |
| 1004 | CHI05-05-04-MG-1750 | Install ceiling and Light Fittings - COLO5 Cell 4 - MG | Not Started | 03-Mar-25 17:00:00 | 77 | CHI05-PH2-FIT-BL-D5,3,3,3,2,2 | 20-Feb-25 08:00:00 | COLO5 | CELL_4 |
| 1005 | CHI05-05-04-MG-1760 | Trim out MEP - COLO5 Cell 4 - MG | Not Started | 03-Mar-25 17:00:00 | 77 | CHI05-PH2-FIT-BL-D5,3,3,3,2,2 | 25-Feb-25 08:00:00 | COLO5 | CELL_4 |
| 1006 | CHI05-05-04-MG-1705 | Post Wall Overhead MEP - COLO5 Cell 4 - MG | Not Started | 10-Feb-25 17:00:00 | 69 | CHI05-PH2-FIT-BL-D5,3,3,3,2,2 | 21-Jan-25 08:00:00 | COLO5 | CELL_4 |
| 1007 | CHI05-05-04-ER-1660 | Install Walls and Primer Paint - COLO5 Cell 4 - ER | Not Started | 26-Nov-24 17:00:00 | 61 | CHI05-PH2-FIT-BL-D5,3,3,3,2,5 | 13-Nov-24 08:00:00 | COLO5 | CELL_4 |
| 1008 | CHI05-05-04-ER-1670 | Sprinklers and Overhead MEP (Above Ceiling) - COLO5 Cell 4 - ER | Not Started | 18-Dec-24 17:00:00 | 58 | CHI05-PH2-FIT-BL-D5,3,3,3,2,5 | 05-Dec-24 08:00:00 | COLO5 | CELL_4 |
| 1009 | CHI05-05-04-ER-1680 | Install Upper Screens - COLO5 Cell 4 - ER | Not Started | 29-Nov-24 17:00:00 | 61 | CHI05-PH2-FIT-BL-D5,3,3,3,2,5 | 22-Nov-24 08:00:00 | COLO5 | CELL_4 |
| 1010 | CHI05-05-04-ER-1690 | Install Ceiling - COLO5 Cell 4 - ER | Not Started | 23-Dec-24 17:00:00 | 58 | CHI05-PH2-FIT-BL-D5,3,3,3,2,5 | 19-Dec-24 08:00:00 | COLO5 | CELL_4 |
| 1011 | CHI05-05-04-ER-1700 | Below Ceiling MEP Rough In - COLO5 Cell 4 - ER | Not Started | 08-Jan-25 17:00:00 | 58 | CHI05-PH2-FIT-BL-D5,3,3,3,2,5 | 24-Dec-24 08:00:00 | COLO5 | CELL_4 |
| 1012 | CHI05-05-04-ER-1710 | Installation of ADP & ATS - COLO5 Cell 4 - ER | Not Started | 03-Jan-25 17:00:00 | 83 | CHI05-PH2-FIT-BL-D5,3,3,3,2,5 | 27-Dec-24 08:00:00 | COLO5 | CELL_4 |
| 1013 | CHI05-05-04-ER-1720 | Installation of UPS Equipment - COLO5 Cell 4 - ER | Not Started | 15-Jan-25 17:00:00 | 58 | CHI05-PH2-FIT-BL-D5,3,3,3,2,5 | 09-Jan-25 08:00:00 | COLO5 | CELL_4 |
| 1014 | CHI05-05-04-ER-1730 | Connet to Cable tray and conduit equipment - COLO5 Cell 4 - ER | Not Started | 08-Jan-25 17:00:00 | 124 | CHI05-PH2-FIT-BL-D5,3,3,3,2,5 | 02-Jan-25 08:00:00 | COLO5 | CELL_4 |
| 1015 | CHI05-05-04-ER-1740 | Cable Pulling at Elec. Equipment - COLO5 Cell 4 - ER | Not Started | 12-Mar-25 17:00:00 | 94 | CHI05-PH2-FIT-BL-D5,3,3,3,2,5 | 20-Feb-25 08:00:00 | COLO5 | CELL_4 |
| 1016 | CHI05-05-04-ER-1750 | Door Frame Installation - COLO5 Cell 4 - ER | Not Started | 22-Jan-25 17:00:00 | 58 | CHI05-PH2-FIT-BL-D5,3,3,3,2,5 | 16-Jan-25 08:00:00 | COLO5 | CELL_4 |
| 1017 | CHI05-05-04-ER-1760 | Finishes and Signage - COLO5 Cell 4 - ER | Not Started | 27-Mar-25 17:00:00 | 85 | CHI05-PH2-FIT-BL-D5,3,3,3,2,5 | 21-Mar-25 08:00:00 | COLO5 | CELL_4 |
| 1018 | CHI05-05-04-ER-1715 | Installation of MSB - COLO5 Cell 4 - ER | Not Started | 06-Jan-25 17:00:00 | 81 | CHI05-PH2-FIT-BL-D5,3,3,3,2,5 | 30-Dec-24 08:00:00 | COLO5 | CELL_4 |
| 1019 | CHI05-05-04-DH-1745 | Closing Construction Access Door - COLO5 Cell 4 - DH | Not Started | 13-Mar-25 17:00:00 | 69 | CHI05-PH2-FIT-BL-D5,3,3,3,2,1 | 21-Feb-25 08:00:00 | COLO5 | CELL_4 |
| 1020 | CHI05-05-04-DH-1650 | Termination at PDU & Busway - COLO5 Cell 4 - DH | Not Started | 27-Mar-25 17:00:00 | 39 | CHI05-PH2-FIT-BL-D5,3,3,3,2,1 | 07-Mar-25 08:00:00 | COLO5 | CELL_4 |
| 1021 | CHI05-05-04-DH-1660 | Overhead MEP and Hangers (Above Ceiling) - COLO5 Cell 4 - DH | Not Started | 19-Dec-24 17:00:00 | 72 | CHI05-PH2-FIT-BL-D5,3,3,3,2,1 | 04-Dec-24 08:00:00 | COLO5 | CELL_4 |
| 1022 | CHI05-05-04-DH-1670 | HAC install and Rise - COLO5 Cell 4 - DH | Not Started | 27-Feb-25 17:00:00 | 64 | CHI05-PH2-FIT-BL-D5,3,3,3,2,1 | 21-Feb-25 08:00:00 | COLO5 | CELL_4 |
| 1023 | CHI05-05-04-DH-1680 | Cable Pulling at PDU & Busway- COLO5 Cell 4 - DH | Not Started | 06-Mar-25 17:00:00 | 54 | CHI05-PH2-FIT-BL-D5,3,3,3,2,1 | 21-Feb-25 08:00:00 | COLO5 | CELL_4 |
| 1024 | CHI05-05-04-DH-1690 | Security Screen Installation - COLO5 Cell 4 - DH | Not Started | 23-Jan-25 17:00:00 | 49 | CHI05-PH2-FIT-BL-D5,3,3,3,2,1 | 21-Jan-25 08:00:00 | COLO5 | CELL_4 |
| 1025 | CHI05-05-04-DH-1700 | Ceiling Grid and Tile - COLO5 Cell 4 - DH | Not Started | 30-Jan-25 17:00:00 | 49 | CHI05-PH2-FIT-BL-D5,3,3,3,2,1 | 24-Jan-25 08:00:00 | COLO5 | CELL_4 |
| 1026 | CHI05-05-04-DH-1710 | Install PDU's - COLO5 Cell 4 - DH | Not Started | 20-Feb-25 17:00:00 | 49 | CHI05-PH2-FIT-BL-D5,3,3,3,2,1 | 14-Feb-25 08:00:00 | COLO5 | CELL_4 |
| 1027 | CHI05-05-04-DH-1720 | Overhead MEP Installation (Below Ceiling) - COLO5 Cell 4 - DH | Not Started | 13-Feb-25 17:00:00 | 49 | CHI05-PH2-FIT-BL-D5,3,3,3,2,1 | 31-Jan-25 08:00:00 | COLO5 | CELL_4 |
| 1028 | CHI05-05-04-DH-1730 | Install Low Voltage Wiring and Fiber Optic - COLO5 Cell 4 - DH | Not Started | 13-Mar-25 17:00:00 | 64 | CHI05-PH2-FIT-BL-D5,3,3,3,2,1 | 28-Feb-25 08:00:00 | COLO5 | CELL_4 |
| 1029 | CHI05-05-04-DH-1740 | HAC Placing - COLO5 Cell 4 - DH | Not Started | 20-Feb-25 17:00:00 | 64 | CHI05-PH2-FIT-BL-D5,3,3,3,2,1 | 14-Feb-25 08:00:00 | COLO5 | CELL_4 |
| 1030 | CHI05-05-04-DH-1750 | Finishes and Signage - COLO5 Cell 4 - DH | Not Started | 03-Apr-25 17:00:00 | 85 | CHI05-PH2-FIT-BL-D5,3,3,3,2,1 | 28-Mar-25 08:00:00 | COLO5 | CELL_4 |
| 1031 | CHI05-05-04-L1-1860 | Interior - L1 UPS - COLO5 Cell 4 | Not Started | 02-Jan-25 17:00:00 | 83 | CHI05-PH2-FIT-BL-D5,3,3,3,2,4,1 | 02-Jan-25 08:00:00 | COLO5 | CELL_4 |
| 1032 | CHI05-05-04-L1-1870 | Interior - L1 MSB - COLO5 Cell 4 | Not Started | 07-Jan-25 17:00:00 | 81 | CHI05-PH2-FIT-BL-D5,3,3,3,2,4,1 | 07-Jan-25 08:00:00 | COLO5 | CELL_4 |
| 1033 | CHI05-05-04-L1-1880 | Interior - L1 PDUs - COLO5 Cell 4 | Not Started | 21-Feb-25 17:00:00 | 49 | CHI05-PH2-FIT-BL-D5,3,3,3,2,4,1 | 21-Feb-25 08:00:00 | COLO5 | CELL_4 |
| 1034 | CHI05-05-04-L1-1890 | Interior - L1 AHUs - COLO5 Cell 4 | Not Started | 25-Feb-25 17:00:00 | 49 | CHI05-PH2-FIT-BL-D5,3,3,3,2,4,1 | 25-Feb-25 08:00:00 | COLO5 | CELL_4 |
| 1035 | CHI05-05-04-L1-1900 | Interior - L1 ATSs - COLO5 Cell 4 | Not Started | 09-Jan-25 17:00:00 | 81 | CHI05-PH2-FIT-BL-D5,3,3,3,2,4,1 | 09-Jan-25 08:00:00 | COLO5 | CELL_4 |
| 1036 | CHI05-05-04-L1-1910 | Interior - L1 Busway - COLO5 Cell 4 | Not Started | 24-Feb-25 17:00:00 | 49 | CHI05-PH2-FIT-BL-D5,3,3,3,2,4,1 | 24-Feb-25 08:00:00 | COLO5 | CELL_4 |
| 1037 | CHI05-05-04-L1-1970 | Interior - L1 ADP - COLO5 Cell 4 | Not Started | 08-Jan-25 17:00:00 | 81 | CHI05-PH2-FIT-BL-D5,3,3,3,2,4,1 | 08-Jan-25 08:00:00 | COLO5 | CELL_4 |
| 1038 | CHI05-05-04-L2-1980 | Interior - L2 UPS - COLO5 Cell 4 | Not Started | 04-Mar-25 17:00:00 | 49 | CHI05-PH2-FIT-BL-D5,3,3,3,2,4,2 | 26-Feb-25 08:00:00 | COLO5 | CELL_4 |
| 1039 | CHI05-05-04-L2-1990 | Interior - L2 MSB - COLO5 Cell 4 | Not Started | 11-Mar-25 17:00:00 | 49 | CHI05-PH2-FIT-BL-D5,3,3,3,2,4,2 | 05-Mar-25 08:00:00 | COLO5 | CELL_4 |
| 1040 | CHI05-05-04-L2-2000 | Interior - L2 PDUs - COLO5 Cell 4 | Not Started | 03-Apr-25 17:00:00 | 39 | CHI05-PH2-FIT-BL-D5,3,3,3,2,4,2 | 28-Mar-25 08:00:00 | COLO5 | CELL_4 |
| 1041 | CHI05-05-04-L2-2010 | Interior - L2 AHUs - COLO5 Cell 4 | Not Started | 17-Apr-25 17:00:00 | 39 | CHI05-PH2-FIT-BL-D5,3,3,3,2,4,2 | 11-Apr-25 08:00:00 | COLO5 | CELL_4 |
| 1042 | CHI05-05-04-L2-2020 | Interior - L2 ATSs - COLO5 Cell 4 | Not Started | 25-Mar-25 17:00:00 | 49 | CHI05-PH2-FIT-BL-D5,3,3,3,2,4,2 | 19-Mar-25 08:00:00 | COLO5 | CELL_4 |
| 1043 | CHI05-05-04-L2-2030 | Interior - L2 Busway - COLO5 Cell 4 | Not Started | 10-Apr-25 17:00:00 | 39 | CHI05-PH2-FIT-BL-D5,3,3,3,2,4,2 | 04-Apr-25 08:00:00 | COLO5 | CELL_4 |
| 1044 | CHI05-05-04-L2-2090 | Interior - L2 ADP - COLO5 Cell 4 | Not Started | 18-Mar-25 17:00:00 | 49 | CHI05-PH2-FIT-BL-D5,3,3,3,2,4,2 | 12-Mar-25 08:00:00 | COLO5 | CELL_4 |
| 1045 | CHI05-05-04-L3-2100 | Interior - L3 UPS - COLO5 Cell 4 | Not Started | 31-Mar-25 17:00:00 | 35 | CHI05-PH2-FIT-BL-D5,3,3,3,2,4,3 | 25-Mar-25 08:00:00 | COLO5 | CELL_4 |
| 1046 | CHI05-05-04-L3-2110 | Interior - L3 MSB - COLO5 Cell 4 | Not Started | 07-Apr-25 17:00:00 | 35 | CHI05-PH2-FIT-BL-D5,3,3,3,2,4,3 | 01-Apr-25 08:00:00 | COLO5 | CELL_4 |
| 1047 | CHI05-05-04-L3-2120 | Interior - L3 PDUs - COLO5 Cell 4 | Not Started | 14-Apr-25 17:00:00 | 40 | CHI05-PH2-FIT-BL-D5,3,3,3,2,4,3 | 08-Apr-25 08:00:00 | COLO5 | CELL_4 |
| 1048 | CHI05-05-04-L3-2130 | Interior - L3 AHUs - COLO5 Cell 4 | Not Started | 30-Apr-25 17:00:00 | 35 | CHI05-PH2-FIT-BL-D5,3,3,3,2,4,3 | 24-Apr-25 08:00:00 | COLO5 | CELL_4 |
| 1049 | CHI05-05-04-L3-2140 | Interior - L3 ATSs - COLO5 Cell 4 | Not Started | 21-Apr-25 17:00:00 | 35 | CHI05-PH2-FIT-BL-D5,3,3,3,2,4,3 | 15-Apr-25 08:00:00 | COLO5 | CELL_4 |
| 1050 | CHI05-05-04-L3-2150 | Interior - L3 Busway - COLO5 Cell 4 | Not Started | 28-Apr-25 17:00:00 | 35 | CHI05-PH2-FIT-BL-D5,3,3,3,2,4,3 | 22-Apr-25 08:00:00 | COLO5 | CELL_4 |

| entry | activity_id | activity_name | activity_status | finish | total_float | wbs_code | start | location | sub_location |
| --- | --- | --- | --- | --- | --- | --- | --- | --- | --- |
| 1051 | CHI05-05-04-L3-2210 | Interior - L3 ADP - COLO5 Cell 4 | Not Started | 14-Apr-25 17:00:00 | 35 | CHI05-PH2-FIT-BL-D5,3,3,3,2,4,3 | 08-Apr-25 08:00:00 | COLO5 | CELL_4 |
| 1052 | CHI05-05-04-L4-1000 | COLO5 Cx LEV4 - COLO5 | Not Started | 04-Jun-25 17:00:00 | 35 | CHI05-PH2-FIT-BL-D5,3,3,3,5,1 | 01-May-25 08:00:00 | COLO5CXLEV4 |  |
| 1053 | CHI05-05-04-L5-1000 | COLO5 Cx LEV5 / IST - COLO5 | Not Started | 06-Jun-25 17:00:00 | 35 | CHI05-PH2-FIT-BL-D5,3,3,3,5,2 | 05-Jun-25 08:00:00 | COLO5CXLEV5 |  |
| 1054 | CHI05-02-01-L1-1220 | L1 UPM - COLO2 | Not Started | 27-Nov-24 17:00:00 | 75 | CHI05-PH2-FIT-BL-D5,3,3,6,1 | 22-Nov-24 08:00:00 | COLO2 |  |
| 1055 | CHI05-02-01-L1-1230 | L1 XFMR - MV- COLO2 | Not Started | 05-Nov-24 17:00:00 | 96 | CHI05-PH2-FIT-BL-D5,3,3,6,1 | 31-Oct-24 08:00:00 | COLO2 |  |
| 1056 | CHI05-02-01-L1-1240 | L1 GEN - COLO2 | Not Started | 29-Nov-24 17:00:00 | 83 | CHI05-PH2-FIT-BL-D5,3,3,6,1 | 25-Nov-24 08:00:00 | COLO2 |  |
| 1057 | CHI05-03-01-L1-1340 | L1 UPM - COLO3 | Not Started | 27-Nov-24 17:00:00 | 68 | CHI05-PH2-FIT-BL-D5,3,3,6,1 | 22-Nov-24 08:00:00 | COLO3 |  |
| 1058 | CHI05-03-01-L1-1350 | L1 XFMR - MV- COLO3 | Not Started | 12-Nov-24 17:00:00 | 84 | CHI05-PH2-FIT-BL-D5,3,3,6,1 | 07-Nov-24 08:00:00 | COLO3 |  |
| 1059 | CHI05-03-01-L1-1360 | L1 GEN - COLO3 | Not Started | 08-Nov-24 17:00:00 | 86 | CHI05-PH2-FIT-BL-D5,3,3,6,1 | 05-Nov-24 08:00:00 | COLO3 |  |
| 1060 | CHI05-04-01-L1-1460 | L1 UPM - COLO4 | Not Started | 27-Nov-24 17:00:00 | 74 | CHI05-PH2-FIT-BL-D5,3,3,6,1 | 22-Nov-24 08:00:00 | COLO4 |  |
| 1061 | CHI05-04-01-L1-1470 | L1 XFMR - MV- COLO4 | Not Started | 19-Nov-24 17:00:00 | 85 | CHI05-PH2-FIT-BL-D5,3,3,6,1 | 14-Nov-24 08:00:00 | COLO4 |  |
| 1062 | CHI05-04-01-L1-1480 | L1 GEN - COLO4 | Not Started | 15-Nov-24 17:00:00 | 87 | CHI05-PH2-FIT-BL-D5,3,3,6,1 | 12-Nov-24 08:00:00 | COLO4 |  |
| 1063 | CHI05-05-01-L1-1580 | L1 UPM - COLO5 | Not Started | 27-Nov-24 17:00:00 | 75 | CHI05-PH2-FIT-BL-D5,3,3,6,1 | 22-Nov-24 08:00:00 | COLO5 |  |
| 1064 | CHI05-05-01-L1-1590 | L1 XFMR - MV- COLO5 | Not Started | 26-Nov-24 17:00:00 | 81 | CHI05-PH2-FIT-BL-D5,3,3,6,1 | 21-Nov-24 08:00:00 | COLO5 |  |
| 1065 | CHI05-05-01-L1-1600 | L1 GEN - COLO5 | Not Started | 22-Nov-24 17:00:00 | 83 | CHI05-PH2-FIT-BL-D5,3,3,6,1 | 19-Nov-24 08:00:00 | COLO5 |  |
| 1066 | CHI05-02-01-L1-1200 | L1 UTS / UTSR - Site | Not Started | 21-Jan-25 17:00:00 | 42 | CHI05-PH2-FIT-BL-D5,3,3,6,1 | 21-Jan-25 08:00:00 |  |  |
| 1067 | CHI05-02-01-L1-1210 | L1 UMS 04 - COLO 3 | Not Started | 14-Nov-24 17:00:00 | 73 | CHI05-PH2-FIT-BL-D5,3,3,6,1 | 14-Nov-24 08:00:00 | COLO3 |  |
| 1068 | CHI05-02-02-L1-1330 | L1 UMS 03 - COLO 3 | Not Started | 14-Nov-24 17:00:00 | 73 | CHI05-PH2-FIT-BL-D5,3,3,6,1 | 14-Nov-24 08:00:00 | COLO3 |  |
| 1069 | CHI05-02-03-L1-1450 | L1 UMS 01 - COLO 5 | Not Started | 21-Nov-24 17:00:00 | 68 | CHI05-PH2-FIT-BL-D5,3,3,6,1 | 21-Nov-24 08:00:00 | COLO5 |  |
| 1070 | CHI05-02-04-L1-1570 | L1 URS 01 - COLO 5 | Not Started | 21-Nov-24 17:00:00 | 68 | CHI05-PH2-FIT-BL-D5,3,3,6,1 | 21-Nov-24 08:00:00 | COLO5 |  |
| 1071 | CHI05-02-01-L2-1340 | L2 UPM - COLO2 | Not Started | 24-Feb-25 17:00:00 | 35 | CHI05-PH2-FIT-BL-D5,3,3,6,2 | 28-Jan-25 08:00:00 | COLO2 |  |
| 1072 | CHI05-02-01-L2-1350 | L2 XFMR - COLO2 | Not Started | 24-Feb-25 17:00:00 | 40 | CHI05-PH2-FIT-BL-D5,3,3,6,2 | 28-Jan-25 08:00:00 | COLO2 |  |
| 1073 | CHI05-02-01-L2-1360 | L2 GEN - COLO2 | Not Started | 24-Feb-25 17:00:00 | 40 | CHI05-PH2-FIT-BL-D5,3,3,6,2 | 28-Jan-25 08:00:00 | COLO2 |  |
| 1074 | CHI05-03-01-L2-1460 | L2 UPM - COLO3 | Not Started | 24-Feb-25 17:00:00 | 28 | CHI05-PH2-FIT-BL-D5,3,3,6,2 | 28-Jan-25 08:00:00 | COLO3 |  |
| 1075 | CHI05-03-01-L2-1470 | L2 XFMR - COLO3 | Not Started | 24-Feb-25 17:00:00 | 33 | CHI05-PH2-FIT-BL-D5,3,3,6,2 | 28-Jan-25 08:00:00 | COLO3 |  |
| 1076 | CHI05-03-01-L2-1480 | L2 GEN - COLO3 | Not Started | 24-Feb-25 17:00:00 | 33 | CHI05-PH2-FIT-BL-D5,3,3,6,2 | 28-Jan-25 08:00:00 | COLO3 |  |
| 1077 | CHI05-04-01-L2-1580 | L2 UPM - COLO4 | Not Started | 24-Feb-25 17:00:00 | 34 | CHI05-PH2-FIT-BL-D5,3,3,6,2 | 28-Jan-25 08:00:00 | COLO4 |  |
| 1078 | CHI05-04-01-L2-1590 | L2 XFMR - COLO4 | Not Started | 24-Feb-25 17:00:00 | 39 | CHI05-PH2-FIT-BL-D5,3,3,6,2 | 28-Jan-25 08:00:00 | COLO4 |  |
| 1079 | CHI05-04-01-L2-1600 | L2 GEN - COLO4 | Not Started | 24-Feb-25 17:00:00 | 39 | CHI05-PH2-FIT-BL-D5,3,3,6,2 | 28-Jan-25 08:00:00 | COLO4 |  |
| 1080 | CHI05-05-01-L2-1700 | L2 UPM - COLO5 | Not Started | 24-Feb-25 17:00:00 | 35 | CHI05-PH2-FIT-BL-D5,3,3,6,2 | 28-Jan-25 08:00:00 | COLO5 |  |
| 1081 | CHI05-05-01-L2-1710 | L2 XFMR - COLO5 | Not Started | 24-Feb-25 17:00:00 | 40 | CHI05-PH2-FIT-BL-D5,3,3,6,2 | 28-Jan-25 08:00:00 | COLO5 |  |
| 1082 | CHI05-05-01-L2-1720 | L2 GEN - COLO5 | Not Started | 24-Feb-25 17:00:00 | 40 | CHI05-PH2-FIT-BL-D5,3,3,6,2 | 28-Jan-25 08:00:00 | COLO5 |  |
| 1083 | CHI05-02-01-L2-1330 | L2 URS 01 - COLO 5 | Not Started | 17-Feb-25 17:00:00 | 33 | CHI05-PH2-FIT-BL-D5,3,3,6,2 | 11-Feb-25 08:00:00 | COLO5 |  |
| 1084 | CHI05-02-02-L2-1450 | L2 UMS 03 - COLO 3 | Not Started | 24-Feb-25 17:00:00 | 28 | CHI05-PH2-FIT-BL-D5,3,3,6,2 | 18-Feb-25 08:00:00 | COLO3 |  |
| 1085 | CHI05-02-03-L2-1570 | L2 UMS 04 - COLO 3 | Not Started | 24-Feb-25 17:00:00 | 28 | CHI05-PH2-FIT-BL-D5,3,3,6,2 | 18-Feb-25 08:00:00 | COLO3 |  |
| 1086 | CHI05-02-04-L2-1690 | L2 UMS 01 - COLO 5 | Not Started | 24-Feb-25 17:00:00 | 28 | CHI05-PH2-FIT-BL-D5,3,3,6,2 | 18-Feb-25 08:00:00 | COLO5 |  |
| 1087 | CHI05-05-01-L2-1680 | L2 UTS / UTSR - Site | Not Started | 17-Feb-25 17:00:00 | 28 | CHI05-PH2-FIT-BL-D5,3,3,6,2 | 11-Feb-25 08:00:00 |  |  |
| 1088 | CHI05-02-01-L3-1460 | L3 UPM - COLO2 | Not Started | 24-Mar-25 17:00:00 | 35 | CHI05-PH2-FIT-BL-D5,3,3,6,3 | 25-Feb-25 08:00:00 | COLO2 |  |
| 1089 | CHI05-02-01-L3-1470 | L3 XFMR - COLO2 | Not Started | 24-Mar-25 17:00:00 | 40 | CHI05-PH2-FIT-BL-D5,3,3,6,3 | 25-Feb-25 08:00:00 | COLO2 |  |
| 1090 | CHI05-02-01-L3-1480 | L3 GEN - COLO2 | Not Started | 24-Mar-25 17:00:00 | 40 | CHI05-PH2-FIT-BL-D5,3,3,6,3 | 25-Feb-25 08:00:00 | COLO2 |  |
| 1091 | CHI05-03-01-L3-1580 | L3 UPM - COLO3 | Not Started | 25-Mar-25 17:00:00 | 27 | CHI05-PH2-FIT-BL-D5,3,3,6,3 | 26-Feb-25 08:00:00 | COLO3 |  |
| 1092 | CHI05-03-01-L3-1590 | L3 XFMR - COLO3 | Not Started | 25-Mar-25 17:00:00 | 32 | CHI05-PH2-FIT-BL-D5,3,3,6,3 | 26-Feb-25 08:00:00 | COLO3 |  |
| 1093 | CHI05-03-01-L3-1600 | L3 GEN - COLO3 | Not Started | 25-Mar-25 17:00:00 | 32 | CHI05-PH2-FIT-BL-D5,3,3,6,3 | 26-Feb-25 08:00:00 | COLO3 |  |
| 1094 | CHI05-04-01-L3-1700 | L3 UPM - COLO4 | Not Started | 09-May-25 17:00:00 | 0 | CHI05-PH2-FIT-BL-D5,3,3,6,3 | 14-Apr-25 08:00:00 | COLO4 |  |
| 1095 | CHI05-04-01-L3-1710 | L3 XFMR - COLO4 | Not Started | 09-May-25 17:00:00 | 5 | CHI05-PH2-FIT-BL-D5,3,3,6,3 | 14-Apr-25 08:00:00 | COLO4 |  |
| 1096 | CHI05-04-01-L3-1720 | L3 GEN - COLO4 | Not Started | 09-May-25 17:00:00 | 5 | CHI05-PH2-FIT-BL-D5,3,3,6,3 | 14-Apr-25 08:00:00 | COLO4 |  |
| 1097 | CHI05-05-01-L3-1820 | L3 UPM - COLO5 | Not Started | 24-Mar-25 17:00:00 | 35 | CHI05-PH2-FIT-BL-D5,3,3,6,3 | 25-Feb-25 08:00:00 | COLO5 |  |
| 1098 | CHI05-05-01-L3-1830 | L3 XFMR - COLO5 | Not Started | 24-Mar-25 17:00:00 | 40 | CHI05-PH2-FIT-BL-D5,3,3,6,3 | 25-Feb-25 08:00:00 | COLO5 |  |
| 1099 | CHI05-05-01-L3-1840 | L3 GEN - COLO5 | Not Started | 24-Mar-25 17:00:00 | 40 | CHI05-PH2-FIT-BL-D5,3,3,6,3 | 25-Feb-25 08:00:00 | COLO5 |  |
| 1100 | CHI05-02-01-L3-1440 | L3 UTS / UTSR - Site | Not Started | 07-Mar-25 17:00:00 | 29 | CHI05-PH2-FIT-BL-D5,3,3,6,3 | 03-Mar-25 08:00:00 |  |  |
| 1101 | CHI05-02-01-L3-1450 | L3 UMS 04 - COLO 3 | Not Started | 21-Mar-25 17:00:00 | 29 | CHI05-PH2-FIT-BL-D5,3,3,6,3 | 17-Mar-25 08:00:00 | COLO3 |  |
| 1102 | CHI05-02-02-L3-1570 | L3 UMS 03 - COLO 3 | Not Started | 21-Mar-25 17:00:00 | 29 | CHI05-PH2-FIT-BL-D5,3,3,6,3 | 17-Mar-25 08:00:00 | COLO3 |  |
| 1103 | CHI05-02-03-L3-1690 | L3 URS 01 - COLO 5 | Not Started | 14-Mar-25 17:00:00 | 29 | CHI05-PH2-FIT-BL-D5,3,3,6,3 | 10-Mar-25 08:00:00 | COLO5 |  |
| 1104 | CHI05-02-04-L3-1810 | L3 UMS 01 - COLO 5 | Not Started | 14-Mar-25 17:00:00 | 29 | CHI05-PH2-FIT-BL-D5,3,3,6,3 | 10-Mar-25 08:00:00 | COLO5 |  |
| 1105 | CHI05-CON-1020 | (3) UTS - Install and Terminate (1 wk/ea) | Not Started | 10-Feb-25 17:00:00 | 28 | CHI05-PH2-FIT-BL-D5,3,2 | 21-Jan-25 08:00:00 |  |  |
| 1106 | CHI05-CON-1050 | Permanent Power Live | Not Started | 28-Feb-25 17:00:00 | 0 | CHI05-PH2-FIT-BL-D5,3,2 |  |  |  |
| 1107 | CHI05-CON-1030 | Installation and Termiation of MV Cable | Not Started | 24-Feb-25 17:00:00 | 28 | CHI05-PH2-FIT-BL-D5,3,2 | 21-Jan-25 08:00:00 |  |  |
| 1108 | CHI05-CFCI-1020 | HAC's - Submittal Preparation | Completed | 07-Jun-24 17:00:00 |  | CHI05-PH2-FIT-BL-D5,4,2,1 | 03-Jun-24 08:00:00 |  |  |
| 1109 | CHI05-CFCI-1080 | HAC's - Submittal Review | Completed | 10-Jun-24 17:00:00 |  | CHI05-PH2-FIT-BL-D5,4,2,1 | 10-Jun-24 08:00:00 |  |  |
| 1110 | CHI05-CFCI-1090 | HAC's - Lead Time | In Progress | 13-Sep-24 17:00:00 | 140 | CHI05-PH2-FIT-BL-D5,4,2,1 | 11-Jun-24 08:00:00 |  |  |
| 1111 | CHI05-CFCI-1140 | Doors/Frames/Hardware - Submittal Preparation | In Progress | 09-Aug-24 17:00:00 | 60 | CHI05-PH2-FIT-BL-D5,4,2,9 | 19-Jun-24 08:00:00 |  |  |
| 1112 | CHI05-CFCI-1160 | Doors/Frames/Hardware - Submittal Review | In Progress | 09-Aug-24 17:00:00 | 60 | CHI05-PH2-FIT-BL-D5,4,2,9 | 28-Jun-24 08:00:00 |  |  |
| 1113 | CHI05-CFCI-1220 | Doors/Frames/Hardware - Lead Time | Not Started | 02-Jan-25 17:00:00 | 60 | CHI05-PH2-FIT-BL-D5,4,2,9 | 12-Aug-24 08:00:00 |  |  |
| 1114 | CHI05-CFCI-1000 | DX Split Units - Submittal Preparation | Completed | 11-Jun-24 17:00:00 |  | CHI05-PH2-FIT-BL-D5,4,2,4 | 21-May-24 08:00:00 |  |  |
| 1115 | CHI05-CFCI-1120 | DX Split Units - Submittal Review | Completed | 28-Jun-24 17:00:00 |  | CHI05-PH2-FIT-BL-D5,4,2,4 | 12-Jun-24 08:00:00 |  |  |
| 1116 | CHI05-CFCI-1170 | DX Split Units - Lead Time | In Progress | 21-Oct-24 17:00:00 | 57 | CHI05-PH2-FIT-BL-D5,4,2,4 | 01-Jul-24 08:00:00 |  |  |
| 1117 | CHI05-CFCI-1030 | AHU (Admin) - Submittal Preparation | Completed | 21-Jun-24 17:00:00 |  | CHI05-PH2-FIT-BL-D5,4,2,6 | 03-Jun-24 08:00:00 |  |  |
| 1118 | CHI05-CFCI-1150 | AHU (Admin) - Submittal Review | Completed | 08-Jul-24 17:00:00 |  | CHI05-PH2-FIT-BL-D5,4,2,6 | 24-Jun-24 08:00:00 |  |  |
| 1119 | CHI05-CFCI-1200 | AHU (Admin) - Lead Time | In Progress | 18-Nov-24 17:00:00 | 39 | CHI05-PH2-FIT-BL-D5,4,2,6 | 09-Jul-24 08:00:00 |  |  |
| 1120 | CHI05-CFCI-1050 | Overhead Cable Bus - Submittal Preparation | Completed | 06-Jun-24 17:00:00 |  | CHI05-PH2-FIT-BL-D5,4,2,8 | 06-Jun-24 08:00:00 |  |  |

| entry | activity_id | activity_name | activity_status | finish | total_float | wbs_code | start | location |
| --- | --- | --- | --- | --- | --- | --- | --- | --- |
| 1121 | CHI05-CFCI-1070 | Overhead Cable Bus - Submittal Review | Completed | 10-Jun-24 17:00:00 |  | CHI05-PH2-FIT-BL-D5,4,2,8 | 07-Jun-24 08:00:00 |  |
| 1122 | CHI05-CFCI-1100 | Overhead Cable Bus - Lead Time | In Progress | 18-Nov-24 17:00:00 | 40 | CHI05-PH2-FIT-BL-D5,4,2,8 | 11-Jun-24 08:00:00 |  |
| 1123 | CHI05-CFCI-1180 | Medium Voltage Cabling - Submittal Preparation | Completed | 09-Jul-24 17:00:00 |  | CHI05-PH2-FIT-BL-D5,4,2,3 | 03-Jul-24 08:00:00 |  |
| 1124 | CHI05-CFCI-1190 | Medium Voltage Cabling - Submittal Review | In Progress | 09-Aug-24 17:00:00 | 33 | CHI05-PH2-FIT-BL-D5,4,2,3 | 04-Jul-24 08:00:00 |  |
| 1125 | CHI05-CFCI-1210 | Medium Voltage Cabling - Lead Time | In Progress | 27-Dec-24 17:00:00 | 33 | CHI05-PH2-FIT-BL-D5,4,2,3 | 10-Jul-24 08:00:00 |  |
| 1126 | CHI05-CFCI-1040 | Elec. Distribution System - Submittal Preparation | Completed | 07-Jun-24 17:00:00 |  | CHI05-PH2-FIT-BL-D5,4,2,5 | 03-Jun-24 08:00:00 |  |
| 1127 | CHI05-CFCI-1110 | Elec. Distribution System - Submittal Review | Completed | 11-Jun-24 17:00:00 |  | CHI05-PH2-FIT-BL-D5,4,2,5 | 11-Jun-24 08:00:00 |  |
| 1128 | CHI05-CFCI-1130 | Elec. Distribution System - Lead Time | In Progress | 26-Sep-24 17:00:00 | 186 | CHI05-PH2-FIT-BL-D5,4,2,5 | 12-Jun-24 08:00:00 |  |
| 1129 | CHI05-CFCI-1010 | Light Fixture - Submittal Preparation | In Progress | 09-Aug-24 17:00:00 | 130 | CHI05-PH2-FIT-BL-D5,4,2,7 | 27-May-24 08:00:00 |  |
| 1130 | CHI05-CFCI-1060 | Light Fixture - Submittal Review | In Progress | 09-Aug-24 17:00:00 | 130 | CHI05-PH2-FIT-BL-D5,4,2,7 | 06-Jun-24 08:00:00 |  |
| 1131 | CHI05-CFCI-1230 | Light Fixture - Lead Time | Not Started | 03-Dec-24 17:00:00 | 130 | CHI05-PH2-FIT-BL-D5,4,2,7 | 12-Aug-24 08:00:00 |  |
| 1132 | CHI05-CFCI-1240 | Damper Assembly and Delivery | Not Started | 04-Oct-24 17:00:00 | 0 | CHI05-PH2-FIT-BL-D5,4,2,2 | 02-Oct-24 08:00:00 |  |
| 1133 | CHI05-OFCI-1000 | AHU - COLO 2 - In Storage | Not Started | 08-Oct-24 17:00:00 | 49 | CHI05-PH2-FIT-BL-D5,4,1,1,1 | 02-Oct-24 08:00:00 | COLO2 |
| 1134 | CHI05-OFCI-1450 | AHU - COLO 3 - In Storage | Not Started | 15-Oct-24 17:00:00 | 49 | CHI05-PH2-FIT-BL-D5,4,1,1,2 | 09-Oct-24 08:00:00 | COLO3 |
| 1135 | CHI05-OFCI-1460 | AHU - COLO 4 - Start ROJ | Not Started |  | 55 | CHI05-PH2-FIT-BL-D5,4,1,1,3 | 09-Oct-24 08:00:00 | COLO4 |
| 1136 | CHI05-OFCI-1470 | AHU - COLO 4 - ROJ | Not Started | 15-Oct-24 17:00:00 | 55 | CHI05-PH2-FIT-BL-D5,4,1,1,3 | 09-Oct-24 08:00:00 | COLO4 |
| 1137 | CHI05-OFCI-1480 | AHU - COLO 4 - Finish ROJ | Not Started | 15-Oct-24 17:00:00 | 55 | CHI05-PH2-FIT-BL-D5,4,1,1,3 |  | COLO4 |
| 1138 | CHI05-OFCI-1010 | AHU - COLO 5 - Start ROJ | Not Started |  | 63 | CHI05-PH2-FIT-BL-D5,4,1,1,5 | 02-Oct-24 08:00:00 | COLO5 |
| 1139 | CHI05-OFCI-1020 | AHU - COLO 5 - ROJ | Not Started | 15-Oct-24 17:00:00 | 63 | CHI05-PH2-FIT-BL-D5,4,1,1,5 | 02-Oct-24 08:00:00 | COLO5 |
| 1140 | CHI05-OFCI-1490 | AHU - COLO 5 - Finish ROJ | Not Started | 15-Oct-24 17:00:00 | 63 | CHI05-PH2-FIT-BL-D5,4,1,1,5 |  | COLO5 |
| 1141 | CHI05-OFCI-1860 | ATS - COLO 2 - Start ROJ | Not Started |  | 0 | CHI05-PH2-FIT-BL-D5,4,1,2,1 | 14-Nov-24 08:00:00 | COLO2 |
| 1142 | CHI05-OFCI-1870 | ATS - COLO 2 - ROJ | Not Started | 27-Nov-24 17:00:00 | 94 | CHI05-PH2-FIT-BL-D5,4,1,2,1 | 14-Nov-24 08:00:00 | COLO2 |
| 1143 | CHI05-OFCI-1970 | ATS - COLO 2 - Finish ROJ | Not Started | 27-Nov-24 17:00:00 | 94 | CHI05-PH2-FIT-BL-D5,4,1,2,1 |  | COLO2 |
| 1144 | CHI05-OFCI-2140 | ATS - COLO 3 - Start ROJ | Not Started |  | 78 | CHI05-PH2-FIT-BL-D5,4,1,2,2 | 16-Dec-24 08:00:00 | COLO3 |
| 1145 | CHI05-OFCI-2150 | ATS - COLO 3 - ROJ | Not Started | 31-Dec-24 17:00:00 | 78 | CHI05-PH2-FIT-BL-D5,4,1,2,2 | 16-Dec-24 08:00:00 | COLO3 |
| 1146 | CHI05-OFCI-2270 | ATS - COLO 3 - Finish ROJ | Not Started | 31-Dec-24 17:00:00 | 78 | CHI05-PH2-FIT-BL-D5,4,1,2,2 |  | COLO3 |
| 1147 | CHI05-OFCI-1590 | ATS - COLO 4 - Start ROJ | Not Started |  | 64 | CHI05-PH2-FIT-BL-D5,4,1,2,3 | 28-Oct-24 08:00:00 | COLO4 |
| 1148 | CHI05-OFCI-1600 | ATS - COLO 4 - ROJ | Not Started | 27-Nov-24 17:00:00 | 64 | CHI05-PH2-FIT-BL-D5,4,1,2,3 | 28-Oct-24 08:00:00 | COLO4 |
| 1149 | CHI05-OFCI-1980 | ATS - COLO 4 - Finish ROJ | Not Started | 27-Nov-24 17:00:00 | 64 | CHI05-PH2-FIT-BL-D5,4,1,2,3 |  | COLO4 |
| 1150 | CHI05-OFCI-1030 | ATS - COLO 5 - Start ROJ | Not Started |  | 118 | CHI05-PH2-FIT-BL-D5,4,1,2,5 | 02-Oct-24 08:00:00 | COLO5 |
| 1151 | CHI05-OFCI-1040 | ATS - COLO 5 - ROJ | Not Started | 15-Oct-24 17:00:00 | 118 | CHI05-PH2-FIT-BL-D5,4,1,2,5 | 02-Oct-24 08:00:00 | COLO5 |
| 1152 | CHI05-OFCI-1500 | ATS - COLO 5 - Finish ROJ | Not Started | 15-Oct-24 17:00:00 | 118 | CHI05-PH2-FIT-BL-D5,4,1,2,5 |  | COLO5 |
| 1153 | CHI05-OFCI-1050 | BAS - COLO 2 - Start ROJ | Not Started |  | 27 | CHI05-PH2-FIT-BL-D5,4,1,6,1 | 02-Oct-24 08:00:00 | COLO2 |
| 1154 | CHI05-OFCI-1060 | BAS - COLO 2 - ROJ | Not Started | 29-Oct-24 17:00:00 | 27 | CHI05-PH2-FIT-BL-D5,4,1,6,1 | 02-Oct-24 08:00:00 | COLO2 |
| 1155 | CHI05-OFCI-1650 | BAS - COLO 2 - Finish ROJ | Not Started | 29-Oct-24 17:00:00 | 27 | CHI05-PH2-FIT-BL-D5,4,1,6,1 |  | COLO2 |
| 1156 | CHI05-OFCI-1680 | BAS - COLO 3 - Start ROJ | Not Started |  | 27 | CHI05-PH2-FIT-BL-D5,4,1,6,2 | 30-Oct-24 08:00:00 | COLO3 |
| 1157 | CHI05-OFCI-1690 | BAS - COLO 3 - ROJ | Not Started | 30-Dec-24 17:00:00 | 27 | CHI05-PH2-FIT-BL-D5,4,1,6,2 | 30-Oct-24 08:00:00 | COLO3 |
| 1158 | CHI05-OFCI-2230 | BAS - COLO 3 - Finish ROJ | Not Started | 30-Dec-24 17:00:00 | 27 | CHI05-PH2-FIT-BL-D5,4,1,6,2 |  | COLO3 |
| 1159 | CHI05-OFCI-1700 | BAS - COLO 4 - Start ROJ | Not Started |  | 38 | CHI05-PH2-FIT-BL-D5,4,1,6,3 | 30-Oct-24 08:00:00 | COLO4 |
| 1160 | CHI05-OFCI-1710 | BAS - COLO 4 - ROJ | Not Started | 30-Dec-24 17:00:00 | 38 | CHI05-PH2-FIT-BL-D5,4,1,6,3 | 30-Oct-24 08:00:00 | COLO4 |
| 1161 | CHI05-OFCI-2240 | BAS - COLO 4 - Finish ROJ | Not Started | 30-Dec-24 17:00:00 | 38 | CHI05-PH2-FIT-BL-D5,4,1,6,3 |  | COLO4 |
| 1162 | CHI05-OFCI-1070 | BAS - COLO 5 - Start ROJ | Not Started |  | 76 | CHI05-PH2-FIT-BL-D5,4,1,6,5 | 02-Oct-24 08:00:00 | COLO5 |
| 1163 | CHI05-OFCI-1080 | BAS - COLO 5 - ROJ | Not Started | 29-Oct-24 17:00:00 | 76 | CHI05-PH2-FIT-BL-D5,4,1,6,5 | 02-Oct-24 08:00:00 | COLO5 |
| 1164 | CHI05-OFCI-1660 | BAS - COLO 5 - Finish ROJ | Not Started | 29-Oct-24 17:00:00 | 76 | CHI05-PH2-FIT-BL-D5,4,1,6,5 |  | COLO5 |
| 1165 | CHI05-OFCI-1090 | Busway/Bus Plugs - COLO 2 - In Storage | Not Started | 16-Oct-24 17:00:00 | 31 | CHI05-PH2-FIT-BL-D5,4,1,3,1 | 02-Oct-24 08:00:00 | COLO2 |
| 1166 | CHI05-OFCI-2020 | Busway/Bus Plugs - COLO 3 - Start ROJ | Not Started |  | 0 | CHI05-PH2-FIT-BL-D5,4,1,3,2 | 02-Dec-24 08:00:00 | COLO3 |
| 1167 | CHI05-OFCI-2030 | Busway/Bus Plugs - COLO 3 - ROJ | Not Started | 30-Dec-24 17:00:00 | 85 | CHI05-PH2-FIT-BL-D5,4,1,3,2 | 02-Dec-24 08:00:00 | COLO3 |
| 1168 | CHI05-OFCI-2250 | Busway/Bus Plugs - COLO 3 - Finish ROJ | Not Started | 30-Dec-24 17:00:00 | 85 | CHI05-PH2-FIT-BL-D5,4,1,3,2 |  | COLO3 |
| 1169 | CHI05-OFCI-2040 | Busway/Bus Plugs - COLO 4 - Start ROJ | Not Started |  | 87 | CHI05-PH2-FIT-BL-D5,4,1,3,3 | 02-Dec-24 08:00:00 | COLO4 |
| 1170 | CHI05-OFCI-2050 | Busway/Bus Plugs - COLO 4 - ROJ | Not Started | 30-Dec-24 17:00:00 | 87 | CHI05-PH2-FIT-BL-D5,4,1,3,3 | 02-Dec-24 08:00:00 | COLO4 |
| 1171 | CHI05-OFCI-2260 | Busway/Bus Plugs - COLO 4 - Finish ROJ | Not Started | 30-Dec-24 17:00:00 | 87 | CHI05-PH2-FIT-BL-D5,4,1,3,3 |  | COLO4 |
| 1172 | CHI05-OFCI-1100 | Busway/Bus Plugs - COLO 5 - Start ROJ | Not Started |  | 122 | CHI05-PH2-FIT-BL-D5,4,1,3,5 | 02-Oct-24 08:00:00 | COLO5 |
| 1173 | CHI05-OFCI-1110 | Busway/Bus Plugs - COLO 5 - ROJ | Not Started | 29-Oct-24 17:00:00 | 122 | CHI05-PH2-FIT-BL-D5,4,1,3,5 | 02-Oct-24 08:00:00 | COLO5 |
| 1174 | CHI05-OFCI-1670 | Busway/Bus Plugs - COLO 5 - Finish ROJ | Not Started | 29-Oct-24 17:00:00 | 122 | CHI05-PH2-FIT-BL-D5,4,1,3,5 |  | COLO5 |
| 1175 | CHI05-OFCI-1120 | EPMS - COLO 2 | Not Started | 02-Oct-24 17:00:00 | 103 | CHI05-PH2-FIT-BL-D5,4,1,4,1 | 02-Oct-24 08:00:00 | COLO2 |
| 1176 | CHI05-OFCI-1440 | EPMS - COLO 3 | Not Started | 16-Oct-24 17:00:00 | 103 | CHI05-PH2-FIT-BL-D5,4,1,4,2 | 03-Oct-24 08:00:00 | COLO3 |
| 1177 | CHI05-OFCI-1570 | EPMS - COLO 4 | Not Started | 31-Oct-24 17:00:00 | 103 | CHI05-PH2-FIT-BL-D5,4,1,4,3 | 17-Oct-24 08:00:00 | COLO4 |
| 1178 | CHI05-OFCI-1730 | EPMS - COLO 5 | Not Started | 15-Nov-24 17:00:00 | 103 | CHI05-PH2-FIT-BL-D5,4,1,4,5 | 01-Nov-24 08:00:00 | COLO5 |
| 1179 | CHI05-OFCI-1130 | GENS - COLO 2 - In Storage | Not Started | 30-Sep-24 17:00:00 | 0 | CHI05-PH2-FIT-BL-D5,4,1,5,1 | 20-Sep-24 08:00:00 | COLO2 |
| 1180 | CHI05-OFCI-1140 | GENS - COLO 3 - In Storage | Not Started | 02-Oct-24 17:00:00 | 67 | CHI05-PH2-FIT-BL-D5,4,1,5,2 | 20-Sep-24 08:00:00 | COLO3 |
| 1181 | CHI05-OFCI-1150 | GENS - COLO 4 - In Storage | Not Started | 04-Oct-24 17:00:00 | 67 | CHI05-PH2-FIT-BL-D5,4,1,5,3 | 20-Sep-24 08:00:00 | COLO4 |
| 1182 | CHI05-OFCI-1160 | GENS - COLO 5 - In Storage | Not Started | 08-Oct-24 17:00:00 | 67 | CHI05-PH2-FIT-BL-D5,4,1,5,5 | 20-Sep-24 08:00:00 | COLO5 |
| 1183 | CHI05-OFCI-1840 | LVS - COLO 2 - Start ROJ | Not Started |  | 0 | CHI05-PH2-FIT-BL-D5,4,1,7,1 | 13-Nov-24 08:00:00 | COLO2 |
| 1184 | CHI05-OFCI-1850 | LVS - COLO 2 - ROJ | Not Started | 27-Nov-24 17:00:00 | 0 | CHI05-PH2-FIT-BL-D5,4,1,7,1 | 13-Nov-24 08:00:00 | COLO2 |
| 1185 | CHI05-OFCI-1990 | LVS - COLO 2 - Finish ROJ | Not Started | 27-Nov-24 17:00:00 | 94 | CHI05-PH2-FIT-BL-D5,4,1,7,1 |  | COLO2 |
| 1186 | CHI05-OFCI-1930 | LVS - COLO 3 - Start ROJ | Not Started |  | 87 | CHI05-PH2-FIT-BL-D5,4,1,7,2 | 21-Nov-24 08:00:00 | COLO3 |
| 1187 | CHI05-OFCI-1940 | LVS - COLO 3 - ROJ | Not Started | 05-Dec-24 17:00:00 | 95 | CHI05-PH2-FIT-BL-D5,4,1,7,2 | 21-Nov-24 08:00:00 | COLO3 |
| 1188 | CHI05-OFCI-2100 | LVS - COLO 3 - Finish ROJ | Not Started | 05-Dec-24 17:00:00 | 95 | CHI05-PH2-FIT-BL-D5,4,1,7,2 |  | COLO3 |
| 1189 | CHI05-OFCI-2180 | LVS - COLO 4 - Start ROJ | Not Started |  | 0 | CHI05-PH2-FIT-BL-D5,4,1,7,3 | 23-Dec-24 08:00:00 | COLO4 |
| 1190 | CHI05-OFCI-2190 | LVS - COLO 4 - ROJ | Not Started | 06-Jan-25 17:00:00 | 60 | CHI05-PH2-FIT-BL-D5,4,1,7,3 | 23-Dec-24 08:00:00 | COLO4 |

| entry | activity_id | activity_name | activity_status | finish | total_float | wbs_code | start | location |
| --- | --- | --- | --- | --- | --- | --- | --- | --- |
| 1191 | CHI05-OFCI-2280 | LVS - COLO 4 - Finish ROJ | Not Started | 06-Jan-25 17:00:00 | 60 | CHI05-PH2-FIT-BL-D5,4,1,7,3 |  | COLO4 |
| 1192 | CHI05-OFCI-1950 | LVS - COLO 5 - Start ROJ | Not Started |  | 87 | CHI05-PH2-FIT-BL-D5,4,1,7,5 | 21-Nov-24 08:00:00 | COLO5 |
| 1193 | CHI05-OFCI-1960 | LVS - COLO 5 - ROJ | Not Started | 05-Dec-24 17:00:00 | 87 | CHI05-PH2-FIT-BL-D5,4,1,7,5 | 21-Nov-24 08:00:00 | COLO5 |
| 1194 | CHI05-OFCI-2110 | LVS - COLO 5 - Finish ROJ | Not Started | 05-Dec-24 17:00:00 | 87 | CHI05-PH2-FIT-BL-D5,4,1,7,5 |  | COLO5 |
| 1195 | CHI05-OFCI-1170 | MVS (UPM) - COLO 2 - Start ROJ | Not Started |  | 173 | CHI05-PH2-FIT-BL-D5,4,1,8,1 | 02-Oct-24 08:00:00 | COLO2 |
| 1196 | CHI05-OFCI-1180 | MVS (UPM) - COLO 2 - ROJ | Not Started | 15-Oct-24 17:00:00 | 173 | CHI05-PH2-FIT-BL-D5,4,1,8,1 | 02-Oct-24 08:00:00 | COLO2 |
| 1197 | CHI05-OFCI-1530 | MVS (UPM) - COLO 2 - Finish ROJ | Not Started | 15-Oct-24 17:00:00 | 173 | CHI05-PH2-FIT-BL-D5,4,1,8,1 |  | COLO2 |
| 1198 | CHI05-OFCI-1190 | MVS (UPM) - COLO 3 - Start ROJ | Not Started |  | 173 | CHI05-PH2-FIT-BL-D5,4,1,8,2 | 02-Oct-24 08:00:00 | COLO3 |
| 1199 | CHI05-OFCI-1200 | MVS (UPM) - COLO 3 - ROJ | Not Started | 15-Oct-24 17:00:00 | 173 | CHI05-PH2-FIT-BL-D5,4,1,8,2 | 02-Oct-24 08:00:00 | COLO3 |
| 1200 | CHI05-OFCI-1510 | MVS (UPM) - COLO 3 - Finish ROJ | Not Started | 15-Oct-24 17:00:00 | 173 | CHI05-PH2-FIT-BL-D5,4,1,8,2 |  | COLO3 |
| 1201 | CHI05-OFCI-1210 | MVS (UPM) - COLO 4 - Start ROJ | Not Started |  | 178 | CHI05-PH2-FIT-BL-D5,4,1,8,3 | 02-Oct-24 08:00:00 | COLO4 |
| 1202 | CHI05-OFCI-1220 | MVS (UPM) - COLO 4 - ROJ | Not Started | 15-Oct-24 17:00:00 | 178 | CHI05-PH2-FIT-BL-D5,4,1,8,3 | 02-Oct-24 08:00:00 | COLO4 |
| 1203 | CHI05-OFCI-1520 | MVS (UPM) - COLO 4 - Finish ROJ | Not Started | 15-Oct-24 17:00:00 | 178 | CHI05-PH2-FIT-BL-D5,4,1,8,3 |  | COLO4 |
| 1204 | CHI05-OFCI-1230 | MVS (UPM) - COLO 5 - Start ROJ | Not Started |  | 89 | CHI05-PH2-FIT-BL-D5,4,1,8,5 | 02-Oct-24 08:00:00 | COLO5 |
| 1205 | CHI05-OFCI-1240 | MVS (UPM) - COLO 5 - ROJ | Not Started | 15-Oct-24 17:00:00 | 89 | CHI05-PH2-FIT-BL-D5,4,1,8,5 | 02-Oct-24 08:00:00 | COLO5 |
| 1206 | CHI05-OFCI-1540 | MVS (UPM) - COLO 5 - Finish ROJ | Not Started | 15-Oct-24 17:00:00 | 89 | CHI05-PH2-FIT-BL-D5,4,1,8,5 |  | COLO5 |
| 1207 | CHI05-OFCI-1250 | MVS (XFMR) - COLO 2 - In storage | Not Started | 02-Oct-24 17:00:00 | 63 | CHI05-PH2-FIT-BL-D5,4,1,9,1 | 02-Oct-24 08:00:00 | COLO2 |
| 1208 | CHI05-OFCI-1260 | MVS (XFMR) - COLO 3 - In storage | Not Started | 02-Oct-24 17:00:00 | 68 | CHI05-PH2-FIT-BL-D5,4,1,9,2 | 02-Oct-24 08:00:00 | COLO3 |
| 1209 | CHI05-OFCI-1270 | MVS (XFMR) - COLO 4 - In storage | Not Started | 02-Oct-24 17:00:00 | 73 | CHI05-PH2-FIT-BL-D5,4,1,9,3 | 02-Oct-24 08:00:00 | COLO4 |
| 1210 | CHI05-OFCI-1280 | MVS (XFMR) - COLO 5 - Start ROJ | Not Started |  | 0 | CHI05-PH2-FIT-BL-D5,4,1,9,5 | 23-Sep-24 08:00:00 | COLO5 |
| 1211 | CHI05-OFCI-1290 | MVS (XFMR) - COLO 5 - ROJ | Not Started | 23-Sep-24 17:00:00 | 65 | CHI05-PH2-FIT-BL-D5,4,1,9,5 | 23-Sep-24 08:00:00 | COLO5 |
| 1212 | CHI05-OFCI-1550 | MVS (XFMR) - COLO 5 - Finish ROJ | Not Started | 23-Sep-24 17:00:00 | 65 | CHI05-PH2-FIT-BL-D5,4,1,9,5 |  | COLO5 |
| 1213 | CHI05-OFCI-1300 | UMS & URS - COLO 2 - In storage, needs modifications | Not Started | 02-Oct-24 17:00:00 | 63 | CHI05-PH2-FIT-BL-D5,4,1,10,1 | 02-Oct-24 08:00:00 | COLO2 |
| 1214 | CHI05-OFCI-1580 | UMS & URS - COLO 3 - In storage, needs modifications | Not Started | 02-Oct-24 17:00:00 | 68 | CHI05-PH2-FIT-BL-D5,4,1,10,2 | 02-Oct-24 08:00:00 | COLO3 |
| 1215 | CHI05-OFCI-1720 | UMS & URS - COLO 4 - In storage, needs modifications | Not Started | 02-Oct-24 17:00:00 | 73 | CHI05-PH2-FIT-BL-D5,4,1,10,3 | 02-Oct-24 08:00:00 | COLO4 |
| 1216 | CHI05-OFCI-1880 | UMS & URS - COLO 5 - In storage, needs modifications | Not Started | 23-Sep-24 17:00:00 | 0 | CHI05-PH2-FIT-BL-D5,4,1,10,5 | 23-Sep-24 08:00:00 | COLO5 |
| 1217 | CHI05-OFCI-1610 | PDU - COLO 2 - Start ROJ | Not Started |  | 0 | CHI05-PH2-FIT-BL-D5,4,1,11,1 | 28-Oct-24 08:00:00 | COLO2 |
| 1218 | CHI05-OFCI-1620 | PDU - COLO 2 - ROJ | Not Started | 11-Nov-24 17:00:00 | 13 | CHI05-PH2-FIT-BL-D5,4,1,11,1 | 28-Oct-24 08:00:00 | COLO2 |
| 1219 | CHI05-OFCI-1820 | PDU - COLO 2 - Finish ROJ | Not Started | 11-Nov-24 17:00:00 | 13 | CHI05-PH2-FIT-BL-D5,4,1,11,1 |  | COLO2 |
| 1220 | CHI05-OFCI-2060 | PDU - COLO 3 - Start ROJ | Not Started |  | 0 | CHI05-PH2-FIT-BL-D5,4,1,11,2 | 02-Dec-24 08:00:00 | COLO3 |
| 1221 | CHI05-OFCI-2070 | PDU - COLO 3 - ROJ | Not Started | 16-Dec-24 17:00:00 | 36 | CHI05-PH2-FIT-BL-D5,4,1,11,2 | 02-Dec-24 08:00:00 | COLO3 |
| 1222 | CHI05-OFCI-2160 | PDU - COLO 3 - Finish ROJ | Not Started | 16-Dec-24 17:00:00 | 36 | CHI05-PH2-FIT-BL-D5,4,1,11,2 |  | COLO3 |
| 1223 | CHI05-OFCI-2080 | PDU - COLO 4 - Start ROJ | Not Started |  | 42 | CHI05-PH2-FIT-BL-D5,4,1,11,3 | 02-Dec-24 08:00:00 | COLO4 |
| 1224 | CHI05-OFCI-2090 | PDU - COLO 4 - ROJ | Not Started | 16-Dec-24 17:00:00 | 42 | CHI05-PH2-FIT-BL-D5,4,1,11,3 | 02-Dec-24 08:00:00 | COLO4 |
| 1225 | CHI05-OFCI-2170 | PDU - COLO 4 - Finish ROJ | Not Started | 16-Dec-24 17:00:00 | 42 | CHI05-PH2-FIT-BL-D5,4,1,11,3 |  | COLO4 |
| 1226 | CHI05-OFCI-1630 | PDU - COLO 5 - Start ROJ | Not Started |  | 69 | CHI05-PH2-FIT-BL-D5,4,1,11,5 | 28-Oct-24 08:00:00 | COLO5 |
| 1227 | CHI05-OFCI-1640 | PDU - COLO 5 - ROJ | Not Started | 11-Nov-24 17:00:00 | 69 | CHI05-PH2-FIT-BL-D5,4,1,11,5 | 28-Oct-24 08:00:00 | COLO5 |
| 1228 | CHI05-OFCI-1830 | PDU - COLO 5 - Finish ROJ | Not Started | 11-Nov-24 17:00:00 | 69 | CHI05-PH2-FIT-BL-D5,4,1,11,5 |  | COLO5 |
| 1229 | CHI05-OFCI-1310 | UPS - COLO 2 - In storage | Not Started | 15-Oct-24 17:00:00 | 89 | CHI05-PH2-FIT-BL-D5,4,1,12,1 | 02-Oct-24 08:00:00 | COLO2 |
| 1230 | CHI05-OFCI-1320 | UPS - COLO 3 - In storage | Not Started | 15-Oct-24 17:00:00 | 99 | CHI05-PH2-FIT-BL-D5,4,1,12,2 | 02-Oct-24 08:00:00 | COLO3 |
| 1231 | CHI05-OFCI-1330 | UPS - COLO 4 - In storage | Not Started | 15-Oct-24 17:00:00 | 100 | CHI05-PH2-FIT-BL-D5,4,1,12,3 | 02-Oct-24 08:00:00 | COLO4 |
| 1232 | CHI05-OFCI-1340 | UPS - COLO 5 - Start ROJ | Not Started |  | 101 | CHI05-PH2-FIT-BL-D5,4,1,12,5 | 02-Oct-24 08:00:00 | COLO5 |
| 1233 | CHI05-OFCI-1350 | UPS - COLO 5 - ROJ | Not Started | 15-Oct-24 17:00:00 | 101 | CHI05-PH2-FIT-BL-D5,4,1,12,5 | 02-Oct-24 08:00:00 | COLO5 |
| 1234 | CHI05-OFCI-1560 | UPS - COLO 5 - Finish ROJ | Not Started | 15-Oct-24 17:00:00 | 101 | CHI05-PH2-FIT-BL-D5,4,1,12,5 |  | COLO5 |
| 1235 | CHI05-OFCI-2000 | UTS - Site - Start ROJ | Not Started |  | 0 | CHI05-PH2-FIT-BL-D5,4,1,13,1 | 29-Nov-24 08:00:00 |  |
| 1236 | CHI05-OFCI-2010 | UTS - Site - ROJ | Not Started | 20-Jan-25 17:00:00 | 28 | CHI05-PH2-FIT-BL-D5,4,1,13,1 | 29-Nov-24 08:00:00 |  |
| 1237 | CHI05-OFCI-2130 | UTS - Site - Finish ROJ | Not Started | 20-Jan-25 17:00:00 | 28 | CHI05-PH2-FIT-BL-D5,4,1,13,1 |  |  |
| 1238 | CHI05-OFCI-1360 | MVS (UPM) Terminators/Lighting Arrestors - COLO 2 - Start ROJ | Not Started |  | 130 | CHI05-PH2-FIT-BL-D5,4,1,14,1 | 02-Oct-24 08:00:00 | COLO2 |
| 1239 | CHI05-OFCI-1370 | MVS (UPM) Terminators/Lighting Arrestors - COLO 2 - ROJ | Not Started | 16-Dec-24 17:00:00 | 130 | CHI05-PH2-FIT-BL-D5,4,1,14,1 | 02-Oct-24 08:00:00 | COLO2 |
| 1240 | CHI05-OFCI-2120 | MVS (UPM) Terminators/Lighting Arrestors - COLO 2 - Finish ROJ | Not Started | 16-Dec-24 17:00:00 | 130 | CHI05-PH2-FIT-BL-D5,4,1,14,1 |  | COLO2 |
| 1241 | CHI05-OFCI-1380 | MVS (UPM) Terminators/Lighting Arrestors - COLO 3 - Start ROJ | Not Started |  | 130 | CHI05-PH2-FIT-BL-D5,4,1,14,2 | 02-Oct-24 08:00:00 | COLO3 |
| 1242 | CHI05-OFCI-1390 | MVS (UPM) Terminators/Lighting Arrestors - COLO 3 - ROJ | Not Started | 16-Dec-24 17:00:00 | 130 | CHI05-PH2-FIT-BL-D5,4,1,14,2 | 02-Oct-24 08:00:00 | COLO3 |
| 1243 | CHI05-OFCI-2200 | MVS (UPM) Terminators/Lighting Arrestors - COLO 3 - Finish ROJ | Not Started | 16-Dec-24 17:00:00 | 130 | CHI05-PH2-FIT-BL-D5,4,1,14,2 |  | COLO3 |
| 1244 | CHI05-OFCI-1400 | MVS (UPM) Terminators/Lighting Arrestors - COLO 4 - Start ROJ | Not Started |  | 135 | CHI05-PH2-FIT-BL-D5,4,1,14,3 | 02-Oct-24 08:00:00 | COLO4 |
| 1245 | CHI05-OFCI-1410 | MVS (UPM) Terminators/Lighting Arrestors - COLO 4 - ROJ | Not Started | 16-Dec-24 17:00:00 | 135 | CHI05-PH2-FIT-BL-D5,4,1,14,3 | 02-Oct-24 08:00:00 | COLO4 |
| 1246 | CHI05-OFCI-2210 | MVS (UPM) Terminators/Lighting Arrestors - COLO 4 - Finish ROJ | Not Started | 16-Dec-24 17:00:00 | 135 | CHI05-PH2-FIT-BL-D5,4,1,14,3 |  | COLO4 |
| 1247 | CHI05-OFCI-1420 | MVS (UPM) Terminators/Lighting Arrestors - COLO 5 - Start ROJ | Not Started |  | 130 | CHI05-PH2-FIT-BL-D5,4,1,14,5 | 02-Oct-24 08:00:00 | COLO5 |
| 1248 | CHI05-OFCI-1430 | MVS (UPM) Terminators/Lighting Arrestors - COLO 5 - ROJ | Not Started | 16-Dec-24 17:00:00 | 130 | CHI05-PH2-FIT-BL-D5,4,1,14,5 | 02-Oct-24 08:00:00 | COLO5 |
| 1249 | CHI05-OFCI-2220 | MVS (UPM) Terminators/Lighting Arrestors - COLO 5 - Finish ROJ | Not Started | 16-Dec-24 17:00:00 | 130 | CHI05-PH2-FIT-BL-D5,4,1,14,5 |  | COLO5 |
| 1250 | CHI05-OFCI-1740 | Mufflers - COLO 2 - Start ROJ | Not Started |  | 47 | CHI05-PH2-FIT-BL-D5,4,1,15,1 | 02-Oct-24 08:00:00 | COLO2 |
| 1251 | CHI05-OFCI-1750 | Mufflers - COLO 2 - ROJ | Not Started | 25-Nov-24 17:00:00 | 82 | CHI05-PH2-FIT-BL-D5,4,1,15,1 | 02-Oct-24 08:00:00 | COLO2 |
| 1252 | CHI05-OFCI-1890 | Mufflers - COLO 2 - Finish ROJ | Not Started | 25-Nov-24 17:00:00 | 82 | CHI05-PH2-FIT-BL-D5,4,1,15,1 |  | COLO2 |
| 1253 | CHI05-OFCI-1760 | Mufflers - COLO 3 - Start ROJ | Not Started |  | 47 | CHI05-PH2-FIT-BL-D5,4,1,15,2 | 02-Oct-24 08:00:00 | COLO3 |
| 1254 | CHI05-OFCI-1770 | Mufflers - COLO 3 - ROJ | Not Started | 02-Dec-24 17:00:00 | 47 | CHI05-PH2-FIT-BL-D5,4,1,15,2 | 02-Oct-24 08:00:00 | COLO3 |
| 1255 | CHI05-OFCI-1900 | Mufflers - COLO 3 - Finish ROJ | Not Started | 02-Dec-24 17:00:00 | 47 | CHI05-PH2-FIT-BL-D5,4,1,15,2 |  | COLO3 |
| 1256 | CHI05-OFCI-1780 | Mufflers - COLO 4 - Start ROJ | Not Started |  | 47 | CHI05-PH2-FIT-BL-D5,4,1,15,3 | 03-Dec-24 08:00:00 | COLO4 |
| 1257 | CHI05-OFCI-1790 | Mufflers - COLO 4 - ROJ | Not Started | 09-Dec-24 17:00:00 | 47 | CHI05-PH2-FIT-BL-D5,4,1,15,3 | 03-Dec-24 08:00:00 | COLO4 |
| 1258 | CHI05-OFCI-1910 | Mufflers - COLO 4 - Finish ROJ | Not Started | 09-Dec-24 17:00:00 | 47 | CHI05-PH2-FIT-BL-D5,4,1,15,3 |  | COLO4 |
| 1259 | CHI05-OFCI-1800 | Mufflers - COLO 5 - Start ROJ | Not Started |  | 51 | CHI05-PH2-FIT-BL-D5,4,1,15,5 | 02-Oct-24 08:00:00 | COLO5 |
| 1260 | CHI05-OFCI-1810 | Mufflers - COLO 5 - ROJ | Not Started | 16-Dec-24 17:00:00 | 51 | CHI05-PH2-FIT-BL-D5,4,1,15,5 | 02-Oct-24 08:00:00 | COLO5 |

| entry | activity_id | activity_name | activity_status | finish | total_float | wbs_code | start | location |
| --- | --- | --- | --- | --- | --- | --- | --- | --- |
| 1261 | CHI05-OFCI-1920 | Mufflers - COLO 5 - Finish ROJ | Not Started | 16-Dec-24 17:00:00 | 51 | CHI05-PH2-FIT-BL-D5,4,1,15,5 |  | COLO5 |
| 1262 | A1000 | MSB - COLO 2 - ROJ | Not Started | 27-Nov-24 17:00:00 | 60 | CHI05-PH2-FIT-BL-D5,4,1,16,1 | 02-Oct-24 08:00:00 | COLO2 |
| 1263 | A1010 | MSB - COLO 3 - ROJ | Not Started | 05-Dec-24 17:00:00 | 60 | CHI05-PH2-FIT-BL-D5,4,1,16,2 | 29-Nov-24 08:00:00 | COLO3 |
| 1264 | A1020 | MSB - COLO 4 - ROJ | Not Started | 06-Jan-25 17:00:00 | 60 | CHI05-PH2-FIT-BL-D5,4,1,16,3 | 06-Dec-24 08:00:00 | COLO4 |
| 1265 | A1040 | MSB - COLO 5 - ROJ | Not Started | 05-Dec-24 17:00:00 | 81 | CHI05-PH2-FIT-BL-D5,4,1,16,5 | 29-Nov-24 08:00:00 | COLO5 |
