| entry | phase | location | trade | activity_code | activity_name | start | finish |
| --- | --- | --- | --- | --- | --- | --- | --- |
| 1 | Framing | 1st Floor | American Contractors | AF | Frame | 30-Dec-2024 | 10-Jan-2025 |
| 2 | Framing | 2nd Floor | American Contractors | AT | Trusses | 13-Jan-2025 | 22-Jan-2025 |
| 3 | Framing | 2nd Floor | American Contractors | AD | Deck | 22-Jan-2025 | 28-Jan-2025 |
| 4 | Framing | 2nd Floor | American Contractors | AF | Frame | 29-Jan-2025 | 11-Feb-2025 |
| 5 | Framing | 3rd Floor | American Contractors | AT | Trusses | 05-Feb-2025 | 14-Feb-2025 |
| 6 | Framing | 3rd Floor | American Contractors | AD | Deck | 14-Feb-2025 | 20-Feb-2025 |
| 7 | Framing | Attic | American Contractors | AT | Trusses | 04-Dec-2024 | 06-Dec-2024 |
| 8 | Framing | Attic | American Contractors | AD | Deck | 09-Dec-2024 | 10-Dec-2024 |
| 9 | Framing | Attic | American Contractors | AC | Frame Corridor | 11-Dec-2024 | 17-Dec-2024 |
| 10 | Framing | Roof | American Contractors | AT | Trusses | 18-Dec-2024 | 02-Jan-2025 |
| 11 | Framing | Roof | American Contractors | AS | Sheath | 01-Jan-2025 | 07-Jan-2025 |
| 12 | Framing | Framing | American Contractors | AC | Frame Elevator, Trash Chute and Stair Tower Roofs | 08-Jan-2025 | 21-Jan-2025 |
| 13 | Framing | Roof | American Contractors | AR | Dry-In | 08-Jan-2025 | 28-Jan-2025 |
| 14 | Fenstrations and Skin | 1st Floor | 84 Lumber | 8S | Sheathing & Windows | 21-Feb-2025 | 10-Apr-2025 |
| 15 | Fenstrations and Skin | 2nd Floor | 84 Lumber | 8S | Sheathing & Windows | 21-Feb-2025 | 10-Apr-2025 |
| 16 | Fenstrations and Skin | 3rd Floor | 84 Lumber | 8S | Sheathing & Windows | 21-Feb-2025 | 10-Apr-2025 |
| 17 | Fenstrations and Skin | 1st Floor | Solid Construction | DS | Siding - All Elevations | 08-May-2025 | 18-Jun-2025 |
| 18 | Fenstrations and Skin | 2nd Floor | Solid Construction | DS | Siding - All Elevations | 08-May-2025 | 18-Jun-2025 |
| 19 | Fenstrations and Skin | 3rd Floor | Solid Construction | DS | Siding - All Elevations | 19-Jun-2025 | 09-Jul-2025 |
| 20 | Fenstrations and Skin | Atic? | Green Air Mechanical | GG | Gutter & Vents | 10-Jul-2025 | 23-Jul-2025 |
| 21 | Fenstrations and Skin | 1st Floor | Solid Construction | DG | Soffit Siding | 10-Jul-2025 | 16-Jul-2025 |
| 22 | Fenstrations and Skin | 1st Floor | Morris Steel | MF | Storefront | 17-Jul-2025 | 23-Jul-2025 |
| 23 | Fenstrations and Skin | 1st Floor? | Morris Steel | MC | Canopy | 24-Jul-2025 | 30-Jul-2025 |
| 24 | Masonry Facades | North | Brick Solutions | ME | Masonry Elevation | 07-Mar-2025 | 20-Mar-2025 |
| 25 | Masonry Facades | East | Brick Solutions | ME | Masonry Elevation | 21-Mar-2025 | 03-Apr-2025 |
| 26 | Masonry Facades | South A | Brick Solutions | ME | Masonry Elevation | 21-Mar-2025 | 25-Mar-2025 |
| 27 | Masonry Facades | West Courtyard | Brick Solutions | ME | Masonry Elevation | 04-Apr-2025 | 15-Apr-2025 |
| 28 | Masonry Facades | North Courtyard | Brick Solutions | ME | Masonry Elevation | 16-Apr-2025 | 25-Apr-2025 |
| 29 | Masonry Facades | East Courtyard | Brick Solutions | ME | Masonry Elevation | 28-Apr-2025 | 07-May-2025 |
| 30 | Masonry Facades | South B | Brick Solutions | ME | Masonry Elevation | 08-May-2025 | 12-May-2025 |
| 31 | Masonry Facades | West | Brick Solutions | ME | Masonry Elevation | 13-May-2025 | 26-May-2025 |
| 32 | Vertical | MEP R/Is | Davishar | PW | Set Water Service & Equipment | 29-Jan-2025 | 04-Feb-2025 |
| 33 | Vertical | MEP R/Is | Otis | OM | Set Elevator Machines 1 & 2 (Protect) | 04-Jul-2024 | 05-Jul-2024 |
| 34 | Vertical | MEP R/Is | Current Electric | EG | Set Electrical Gear | 05-Feb-2025 | 18-Feb-2025 |
| 35 | Vertical | MEP R/Is | Current Electric | EF | Electrical Feeders | 19-Feb-2025 | 04-Mar-2025 |
| 36 | Vertical | MEP R/Is | Green Air Mechanical | GD | HVAC Duct Risers | 29-Jan-2025 | 18-Feb-2025 |
| 37 | Vertical | MEP R/Is | Morris Steel | MS | Set Trash Chute | 29-Jan-2025 | 04-Feb-2025 |
| 38 | Vertical | MEP R/Is | Ranger | SR | Sprinkler Risers | 05-Feb-2025 | 25-Feb-2025 |
| 39 | Vertical | MEP R/Is | Davishar | PS | Plumbing Stacks & Roof Vents | 19-Feb-2025 | 11-Mar-2025 |
| 40 | Vertical | MEP R/Is | Breeden | WI | Shaft Wall Inspections | 19-Feb-2025 | 04-Mar-2025 |
| 41 | Vertical | MEP R/Is | Solid Construction | DR | Set Roof Top Equipment | 12-Mar-2025 | 18-Mar-2025 |
| 42 | Vertical | Transportation | Otis | O2 | Elevator 1 | 05-Mar-2025 | 08-Apr-2025 |
| 43 | Vertical | Transportation | Otis | O1 | Elevator 2 | 09-Apr-2025 | 13-May-2025 |
| 44 | Interiors | 1st Floor | Quality Building Products | QP | Pre-insul & Gyp for Plumbing & Ins | 19-Feb-2025 | 25-Feb-2025 |
| 45 | Interiors | 1st Floor | Green Air Mechanical | GC | Above Ceiling HVAC R/I | 26-Feb-2025 | 04-Mar-2025 |
| 46 | Interiors | 1st Floor | Davishar | PU | Plumbing Unit R/I Domestic, Sanitary, Set Tubs | 05-Mar-2025 | 11-Mar-2025 |
| 47 | Interiors | 1st Floor | Ranger | SS | OH Sprinkler R/I and Hydro Ins | 12-Mar-2025 | 18-Mar-2025 |
| 48 | Interiors | 1st Floor | Current Electric | EW | Electrical Wall R/I | 19-Mar-2025 | 25-Mar-2025 |
| 49 | Interiors | 1st Floor | Current Electric | EL | Electrical Lighting OH R/I | 19-Mar-2025 | 25-Mar-2025 |
| 50 | Interiors | 1st Floor | Current Electric | ER | Low Voltage Wall R/I (Tele/Cable/IT) | 19-Mar-2025 | 25-Mar-2025 |
| 51 | Interiors | 1st Floor | Breeden | CI | R/I Trade Close-in Inspections | 26-Mar-2025 | 27-Mar-2025 |
| 52 | Exteriors | 1st Floor | Quality Building Products | QE | Insulate Exterior Walls | 28-Mar-2025 | 31-Mar-2025 |
| 53 | Interiors | 1st Floor | Quality Building Products | QC | Insulate Ceilings | 31-Mar-2025 | 02-Apr-2025 |
| 54 | Interiors | 1st Floor | Breeden | II | Insulation Inspection | 03-Apr-2025 | 03-Apr-2025 |
| 55 | Interiors | 1st Floor | American Contractors | AP | Framing & R/I Punchlist - Set Unit Entry FMs | 04-Apr-2025 | 09-Apr-2025 |
| 56 | Interiors | 1st Floor | Blue Sky | BS | Stock Drywall | 04-Apr-2025 | 08-Apr-2025 |
| 57 | Interiors | 1st Floor | Blue Sky | BH | Hang Drywall | 09-Apr-2025 | 15-Apr-2025 |
| 58 | Interiors | 1st Floor | ECPF | GY | Gypcrete | 16-Apr-2025 | 17-Apr-2025 |
| 59 | Interiors | 1st Floor | Blue Sky | BP | Prime Paint | 18-Apr-2025 | 23-Apr-2025 |
| 60 | Interiors | 1st Floor | Blue Sky | BU | Point Up Drywall | 22-Apr-2025 | 24-Apr-2025 |
| 61 | Interiors | 1st Floor | Green Air Mechanical | GA | Set AHU | 25-Apr-2025 | 25-Apr-2025 |
| 62 | Interiors | 1st Floor | Davishar | PH | Set HWH and Plumb (Set Submeter) | 28-Apr-2025 | 28-Apr-2025 |
| 63 | Interiors | 1st Floor | Current Electric | EB | Electrical Panel Brkrs and Equipment Terminations | 25-Apr-2025 | 29-Apr-2025 |
| 64 | Interiors | 1st Floor | Current Electric | EP | Low Voltage Panel | 25-Apr-2025 | 28-Apr-2025 |
| 65 | Interiors | 1st Floor | Ranger | SH | Sprinkler Head Escutheons | 25-Apr-2025 | 29-Apr-2025 |
| 66 | Interiors | 1st Floor | Current Electric | ES | Switch and Plug | 30-Apr-2025 | 02-May-2025 |
| 67 | Interiors | 1st Floor | Current Electric | EWT | Wire Thermostats | 30-Apr-2025 | 02-May-2025 |
| 68 | Interiors | 1st Floor | Green Air Mechanical | GS | Start-up HVAC | 05-May-2025 | 06-May-2025 |
| 69 | Interiors | 1st Floor | Heritage Woodworks | HV | Set Cabinets & Vanities | 07-May-2025 | 13-May-2025 |
| 70 | Interiors | 1st Floor | American Contractors | AH | Install Pre-hung Doors | 14-May-2025 | 15-May-2025 |

| entry | phase | location | trade | activity_code | activity_name | start | finish |
| --- | --- | --- | --- | --- | --- | --- | --- |
| 71 | Interiors | 1st Floor | American Contractors | AR | Running Trim and Stools | 16-May-2025 | 20-May-2025 |
| 72 | Interiors | 1st Floor | Heritage Woodworks | HC | Set Countertops | 21-May-2025 | 27-May-2025 |
| 73 | Interiors | 1st Floor | Walkers | WC | Ceramic Tile (Floors & Walls) | 21-May-2025 | 27-May-2025 |
| 74 | Interiors | 1st Floor | Walkers | WB | Ceramic Backsplash | 28-May-2025 | 02-Jun-2025 |
| 75 | Interiors | 1st Floor | Walkers | WL | LVT Flooring | 03-Jun-2025 | 06-Jun-2025 |
| 76 | Interiors | 1st Floor | Current Electric | ET | Electrical Trim (Plates & Lights) | 09-Jun-2025 | 13-Jun-2025 |
| 77 | Interiors | 1st Floor | Current Electric | EV | Trim Low Voltage | 09-Jun-2025 | 11-Jun-2025 |
| 78 | Interiors | 1st Floor | Green Air Mechanical | GT | G/R/Ds HVAC Trim | 16-Jun-2025 | 18-Jun-2025 |
| 79 | Interiors | 1st Floor | Davishar | PT | Trim Plumbing (Disposals/DWs) | 16-Jun-2025 | 18-Jun-2025 |
| 80 | Interiors | 1st Floor | TBD | TA | Install Appliances | 19-Jun-2025 | 23-Jun-2025 |
| 81 | Interiors | 1st Floor | American Contractors | AH | Door Hardware | 19-Jun-2025 | 23-Jun-2025 |
| 82 | Interiors | 1st Floor | Blue Sky | BF | Final Paint | 24-Jun-2025 | 30-Jun-2025 |
| 83 | Interiors | 1st Floor | Blue Sky | BD | Drywall Point Up | 01-Jul-2025 | 02-Jul-2025 |
| 84 | Interiors | 1st Floor | Morris Steel | MM | Mirrors and Toilet Accessories | 03-Jul-2025 | 04-Jul-2025 |
| 85 | Interiors | 1st Floor | American Contractors | AV | Closet Shelving | 07-Jul-2025 | 07-Oct-2025 |
| 86 | Interiors | 1st Floor | Clean | RC | Rough-Clean | 11-Jul-2025 | 16-Jul-2025 |
| 87 | Interiors | 1st Floor | Walkers | WP | Pad and Carpet (Protect) | 17-Jul-2025 | 23-Jul-2025 |
| 88 | Interiors | 1st Floor | Breeden | SI | Trade Final Ins (Sprinkler, Plumbing, HVAC, Electric, LV) | 24-Jul-2025 | 30-Jul-2025 |
| 89 | Interiors | 1st Floor | Blue Sky | BT | Paint Touch-up & Caulk | 24-Jul-2025 | 25-Jul-2025 |
| 90 | Interiors | 1st Floor | Breeden | CP | Contractor Punchlist | 31-Jul-2025 | 06-Aug-2025 |
| 91 | Interiors | 2nd Floor | Quality Building Products | QP | Pre-insul & Gyp for Plumbing & Ins | 26-Feb-2025 | 04-Mar-2025 |
| 92 | Interiors | 2nd Floor | Green Air Mechanical | GC | Above Ceiling HVAC R/I | 05-Mar-2025 | 11-Mar-2025 |
| 93 | Interiors | 2nd Floor | Davishar | PU | Plumbing Unit R/I Domestic, Sanitary, Set Tubs | 12-Mar-2025 | 18-Mar-2025 |
| 94 | Interiors | 2nd Floor | Ranger | SS | OH Sprinkler R/I and Hydro Ins | 19-Mar-2025 | 25-Mar-2025 |
| 95 | Interiors | 2nd Floor | Current Electric | EW | Electrical Wall R/I | 26-Mar-2025 | 01-Apr-2025 |
| 96 | Interiors | 2nd Floor | Current Electric | EL | Electrical Lighting OH R/I | 26-Mar-2025 | 01-Apr-2025 |
| 97 | Interiors | 2nd Floor | Current Electric | ER | Low Voltage Wall R/I (Tele/Cable/IT) | 26-Mar-2025 | 01-Apr-2025 |
| 98 | Interiors | 2nd Floor | Breeden | CI | R/I Trade Close-in Inspections | 02-Apr-2025 | 03-Apr-2025 |
| 99 | Exteriors | 2nd Floor | Quality Building Products | QE | Insulate Exterior Walls | 04-Apr-2025 | 07-Apr-2025 |
| 100 | Interiors | 2nd Floor | Quality Building Products | QC | Insulate Ceilings | 07-Apr-2025 | 09-Apr-2025 |
| 101 | Interiors | 2nd Floor | Breeden | II | Insulation Inspection | 10-Apr-2025 | 10-Apr-2025 |
| 102 | Interiors | 2nd Floor | American Contractors | AP | Framing & R/I Punchlist - Set Unit Entry FMs | 11-Apr-2025 | 16-Apr-2025 |
| 103 | Interiors | 2nd Floor | Blue Sky | BS | Stock Drywall | 11-Apr-2025 | 15-Apr-2025 |
| 104 | Interiors | 2nd Floor | Blue Sky | BH | Hang Drywall | 16-Apr-2025 | 22-Apr-2025 |
| 105 | Interiors | 2nd Floor | ECPF | GY | Gypcrete | 23-Apr-2025 | 24-Apr-2025 |
| 106 | Interiors | 2nd Floor | Blue Sky | BP | Prime Paint | 25-Apr-2025 | 30-Apr-2025 |
| 107 | Interiors | 2nd Floor | Blue Sky | BU | Point Up Drywall | 29-Apr-2025 | 01-May-2025 |
| 108 | Interiors | 2nd Floor | Green Air Mechanical | GA | Set AHU | 02-May-2025 | 02-May-2025 |
| 109 | Interiors | 2nd Floor | Davishar | PH | Set HWH and Plumb (Set Submeter) | 05-May-2025 | 05-May-2025 |
| 110 | Interiors | 2nd Floor | Current Electric | EB | Electrical Panel Brkrs and Equipment Terminations | 02-May-2025 | 06-May-2025 |
| 111 | Interiors | 2nd Floor | Current Electric | EP | Low Voltage Panel | 02-May-2025 | 05-May-2025 |
| 112 | Interiors | 2nd Floor | Ranger | SH | Sprinkler Head Escutheons | 02-May-2025 | 06-May-2025 |
| 113 | Interiors | 2nd Floor | Current Electric | ES | Switch and Plug | 07-May-2025 | 09-May-2025 |
| 114 | Interiors | 2nd Floor | Current Electric | EWT | Wire Thermostats | 07-May-2025 | 09-May-2025 |
| 115 | Interiors | 2nd Floor | Green Air Mechanical | GS | Start-up HVAC | 12-May-2025 | 13-May-2025 |
| 116 | Interiors | 2nd Floor | Heritage Woodworks | HV | Set Cabinets & Vanities | 14-May-2025 | 20-May-2025 |
| 117 | Interiors | 2nd Floor | American Contractors | AH | Install Pre-hung Doors | 21-May-2025 | 22-May-2025 |
| 118 | Interiors | 2nd Floor | American Contractors | AR | Running Trim and Stools | 23-May-2025 | 27-May-2025 |
| 119 | Interiors | 2nd Floor | Heritage Woodworks | HC | Set Countertops | 28-May-2025 | 03-Jun-2025 |
| 120 | Interiors | 2nd Floor | Walkers | WC | Ceramic Tile (Floors & Walls) | 28-May-2025 | 03-Jun-2025 |
| 121 | Interiors | 2nd Floor | Walkers | WB | Ceramic Backsplash | 04-Jun-2025 | 09-Jun-2025 |
| 122 | Interiors | 2nd Floor | Walkers | WL | LVT Flooring | 10-Jun-2025 | 13-Jun-2025 |
| 123 | Interiors | 2nd Floor | Current Electric | ET | Electrical Trim (Plates & Lights) | 16-Jun-2025 | 20-Jun-2025 |
| 124 | Interiors | 2nd Floor | Current Electric | EV | Trim Low Voltage | 16-Jun-2025 | 18-Jun-2025 |
| 125 | Interiors | 2nd Floor | Green Air Mechanical | GT | G/R/Ds HVAC Trim | 23-Jun-2025 | 25-Jun-2025 |
| 126 | Interiors | 2nd Floor | Davishar | PT | Trim Plumbing (Disposals/DWs) | 23-Jun-2025 | 25-Jun-2025 |
| 127 | Interiors | 2nd Floor | TBD | TA | Install Appliances | 26-Jun-2025 | 30-Jun-2025 |
| 128 | Interiors | 2nd Floor | American Contractors | AH | Door Hardware | 26-Jun-2025 | 30-Jun-2025 |
| 129 | Interiors | 2nd Floor | Blue Sky | BF | Final Paint | 01-Jul-2025 | 07-Jul-2025 |
| 130 | Interiors | 2nd Floor | Blue Sky | BD | Drywall Point Up | 08-Jul-2025 | 09-Jul-2025 |
| 131 | Interiors | 2nd Floor | Morris Steel | MM | Mirrors and Toilet Accessories | 10-Jul-2025 | 11-Jul-2025 |
| 132 | Interiors | 2nd Floor | American Contractors | AV | Closet Shelving | 14-Jul-2025 | 17-Jul-2025 |
| 133 | Interiors | 2nd Floor | Clean | RC | Rough-Clean | 18-Jul-2025 | 23-Jul-2025 |
| 134 | Interiors | 2nd Floor | Walkers | WP | Pad and Carpet (Protect) | 24-Jul-2025 | 30-Jul-2025 |
| 135 | Interiors | 2nd Floor | Breeden | SI | Trade Final Ins (Sprinkler, Plumbing, HVAC, Electric, LV) | 31-Jul-2025 | 06-Aug-2025 |
| 136 | Interiors | 2nd Floor | Blue Sky | BT | Paint Touch-up & Caulk | 31-Jul-2025 | 01-Aug-2025 |
| 137 | Interiors | 2nd Floor | Breeden | CP | Contractor Punchlist | 07-Aug-2025 | 13-Aug-2025 |
| 138 | Interiors | 3rd Floor | Quality Building Products | QP | Pre-insul & Gyp for Plumbing & Ins | 05-Mar-2025 | 11-Mar-2025 |
| 139 | Interiors | 3rd Floor | Green Air Mechanical | GC | Above Ceiling HVAC R/I | 12-Mar-2025 | 18-Mar-2025 |
| 140 | Interiors | 3rd Floor | Davishar | PU | Plumbing Unit R/I Domestic, Sanitary, Set Tubs | 19-Mar-2025 | 25-Mar-2025 |

| entry | phase | location | trade | activity_code | activity_name | start | finish |
| --- | --- | --- | --- | --- | --- | --- | --- |
| 141 | Interiors | 3rd Floor | Ranger | SS | OH Sprinkler R/I and Hydro Ins | 26-Mar-2025 | 01-Apr-2025 |
| 142 | Interiors | 3rd Floor | Current Electric | EW | Electrical Wall R/I | 02-Apr-2025 | 08-Apr-2025 |
| 143 | Interiors | 3rd Floor | Current Electric | EL | Electrical Lighting OH R/I | 02-Apr-2025 | 08-Apr-2025 |
| 144 | Interiors | 3rd Floor | Current Electric | ER | Low Voltage Wall R/I (Tele/Cable/IT) | 02-Apr-2025 | 08-Apr-2025 |
| 145 | Interiors | 3rd Floor | Breeden | CI | R/I Trade Close-in Inspections | 09-Apr-2025 | 10-Apr-2025 |
| 146 | Exteriors | 3rd Floor | Quality Building Products | QE | Insulate Exterior Walls | 11-Apr-2025 | 14-Apr-2025 |
| 147 | Interiors | 3rd Floor | Quality Building Products | QC | Insulate Ceilings | 14-Apr-2025 | 16-Apr-2025 |
| 148 | Interiors | 3rd Floor | Breeden | II | Insulation Inspection | 17-Apr-2025 | 17-Apr-2025 |
| 149 | Interiors | 3rd Floor | American Contractors | AP | Framing & R/I Punchlist - Set Unit Entry FMs | 18-Apr-2025 | 23-Apr-2025 |
| 150 | Interiors | 3rd Floor | Blue Sky | BS | Stock Drywall | 18-Apr-2025 | 22-Apr-2025 |
| 151 | Interiors | 3rd Floor | Blue Sky | BH | Hang Drywall | 23-Apr-2025 | 29-Apr-2025 |
| 152 | Interiors | 3rd Floor | ECPF | GY | Gypcrete | 30-Apr-2025 | 01-May-2025 |
| 153 | Interiors | 3rd Floor | Blue Sky | BP | Prime Paint | 02-May-2025 | 07-May-2025 |
| 154 | Interiors | 3rd Floor | Blue Sky | BU | Point Up Drywall | 06-May-2025 | 08-May-2025 |
| 155 | Interiors | 3rd Floor | Green Air Mechanical | GA | Set AHU | 09-May-2025 | 09-May-2025 |
| 156 | Interiors | 3rd Floor | Davishar | PH | Set HWH and Plumb (Set Submeter) | 12-May-2025 | 12-May-2025 |
| 157 | Interiors | 3rd Floor | Current Electric | EB | Electrical Panel Brkrs and Equipment Terminations | 09-May-2025 | 13-May-2025 |
| 158 | Interiors | 3rd Floor | Current Electric | EP | Low Voltage Panel | 09-May-2025 | 12-May-2025 |
| 159 | Interiors | 3rd Floor | Ranger | SH | Sprinkler Head Escutheons | 09-May-2025 | 13-May-2025 |
| 160 | Interiors | 3rd Floor | Current Electric | ES | Switch and Plug | 14-May-2025 | 16-May-2025 |
| 161 | Interiors | 3rd Floor | Current Electric | EWT | Wire Thermostats | 14-May-2025 | 16-May-2025 |
| 162 | Interiors | 3rd Floor | Green Air Mechanical | GS | Start-up HVAC | 19-May-2025 | 20-May-2025 |
| 163 | Interiors | 3rd Floor | Heritage Woodworks | HV | Set Cabinets & Vanities | 21-May-2025 | 27-May-2025 |
| 164 | Interiors | 3rd Floor | American Contractors | AH | Install Pre-hung Doors | 28-May-2025 | 29-May-2025 |
| 165 | Interiors | 3rd Floor | American Contractors | AR | Running Trim and Stools | 30-May-2025 | 03-Jun-2025 |
| 166 | Interiors | 3rd Floor | Heritage Woodworks | HC | Set Countertops | 04-Jun-2025 | 10-Jun-2025 |
| 167 | Interiors | 3rd Floor | Walkers | WC | Ceramic Tile (Floors & Walls) | 04-Jun-2025 | 10-Jun-2025 |
| 168 | Interiors | 3rd Floor | Walkers | WB | Ceramic Backsplash | 11-Jun-2025 | 16-Jun-2025 |
| 169 | Interiors | 3rd Floor | Walkers | WL | LVT Flooring | 17-Jun-2025 | 20-Jun-2025 |
| 170 | Interiors | 3rd Floor | Current Electric | ET | Electrical Trim (Plates & Lights) | 23-Jun-2025 | 27-Jun-2025 |
| 171 | Interiors | 3rd Floor | Current Electric | EV | Trim Low Voltage | 23-Jun-2025 | 25-Jun-2025 |
| 172 | Interiors | 3rd Floor | Green Air Mechanical | GT | G/R/Ds HVAC Trim | 30-Jun-2025 | 02-Jul-2025 |
| 173 | Interiors | 3rd Floor | Davishar | PT | Trim Plumbing (Disposals/DWs) | 30-Jun-2025 | 02-Jul-2025 |
| 174 | Interiors | 3rd Floor | TBD | TA | Install Appliances | 03-Jul-2025 | 07-Jul-2025 |
| 175 | Interiors | 3rd Floor | American Contractors | AH | Door Hardware | 03-Jul-2025 | 07-Jul-2025 |
| 176 | Interiors | 3rd Floor | Blue Sky | BF | Final Paint | 08-Jul-2025 | 14-Jul-2025 |
| 177 | Interiors | 3rd Floor | Blue Sky | BD | Drywall Point Up | 15-Jul-2025 | 16-Jul-2025 |
| 178 | Interiors | 3rd Floor | Morris Steel | MM | Mirrors and Toilet Accessories | 17-Jul-2025 | 18-Jul-2025 |
| 179 | Interiors | 3rd Floor | American Contractors | AV | Closet Shelving | 21-Jul-2025 | 24-Jul-2025 |
| 180 | Interiors | 3rd Floor | Clean | RC | Rough-Clean | 25-Jul-2025 | 30-Jul-2025 |
| 181 | Interiors | 3rd Floor | Walkers | WP | Pad and Carpet (Protect) | 31-Jul-2025 | 06-Aug-2025 |
| 182 | Interiors | 3rd Floor | Breeden | SI | Trade Final Ins (Sprinkler, Plumbing, HVAC, Electric, LV) | 07-Aug-2025 | 13-Aug-2025 |
| 183 | Interiors | 3rd Floor | Blue Sky | BT | Paint Touch-up & Caulk | 07-Aug-2025 | 08-Aug-2025 |
| 184 | Interiors | 3rd Floor | Breeden | CP | Contractor Punchlist | 14-Aug-2025 | 20-Aug-2025 |
| 185 | Vertical | 1st Floor | Otis | OF | Finishes Corridor & Elevator Lobby | 07-May-2025 | 15-Jul-2025 |
| 186 | Vertical | 2nd Floor | Otis | OF | Finishes Corridor & Elevator Lobby | 14-May-2025 | 22-Jul-2025 |
| 187 | Vertical | 3rd Floor | Otis | OF | Finishes Corridor & Elevator Lobby | 21-May-2025 | 29-Jul-2025 |
| 188 | Vertical | Stairs | TBD | TS | Stair 1 | 30-Jul-2025 | 12-Aug-2025 |
| 189 | Vertical | Stairs | TBD | TS | Stair 2 | 30-Jul-2025 | 12-Aug-2025 |
| 190 | Vertical | 1st Floor | Heritage Woodworks | HA | Amenity Finishes | 14-May-2025 | 22-Jul-2025 |
