| entry | phase | location | trade | activity_code | activity_name | start | finish |
| --- | --- | --- | --- | --- | --- | --- | --- |
| 1 | Interiors | Commissioning | All | CX-1 | Commissioning All Systems | 07-Oct-2026 | 03-Mar-2027 |
| 2 | Interiors | Testing | All | CX-2 | Testing All Systems | 25-Aug-2026 | 17-Nov-2026 |
| 3 | Interiors | Weather Days | All | CX-3 | Weather Days (3 days per month) | 25-Sep-2026 | 04-Jan-2027 |
| 4 | Structure/Foundations | Structural Foundations | All Structurals Subs | STRUC-1 | Structural Foundations - Entire Site | 18-Jul-2025 | 12-Sep-2025 |
| 5 | Interiors | Finishes - Zone 1 | Ceiling | C-1 | Ceiling Trim Out - Zone 1 | 22-Jun-2026 | 30-Jun-2026 |
| 6 | Interiors | Finishes - Zone 3 | Ceiling | C-1 | Ceiling Trim Out - Zone 1 | 21-Jul-2026 | 29-Jul-2026 |
| 7 | Interiors | Finishes - Zone 1 | Ceiling | C-2 | Close Ceiling - Zone 1 | 02-Jul-2026 | 07-Jul-2026 |
| 8 | Interiors | Finishes - Zone 3 | Ceiling | C-2 | Close Ceilings - Zone 3 | 31-Jul-2026 | 04-Aug-2026 |
| 9 | Interiors | Finishes - Zone 2 | Ceiling | C-3 | Install ACT Ceilings - Zone 2 | 29-Jun-2026 | 01-Jul-2026 |
| 10 | Interiors | Finishes - Zone 4 | Ceiling | C-3 | Install ACT Ceilings - Zone 4 | 28-Jul-2026 | 30-Jul-2026 |
| 11 | Interiors | Finishes - Zone 5 | Ceiling | C-3 | Install ACT Ceilings - Zone 5 | 11-Aug-2026 | 13-Aug-2026 |
| 12 | Interiors | Finishes - Zone 6 | Ceiling | C-4 | Install Ceilings - Zone 6 | 25-Aug-2026 | 27-Aug-2026 |
| 13 | Interiors | Finishes - Zone 2 | Ceiling | C-5 | Install Hard Ceiling - Zone 2 | 02-Jul-2026 | 28-Jul-2026 |
| 14 | Interiors | Finishes - Zone 4 | Ceiling | C-5 | Install Hard Ceilings - Zone 4 | 31-Jul-2026 | 25-Aug-2026 |
| 15 | Interiors | Finishes - Zone 5 | Ceiling | C-6 | Install Hard Lid Ceilings - Zone 5 | 14-Aug-2026 | 09-Sep-2026 |
| 16 | Interiors | Finishes - Zone 6 | Ceiling | C-6 | Install Hard Lid Ceilings - Zone 6 | 28-Aug-2026 | 23-Sep-2026 |
| 17 | Foundations | Slabs - Zone 1 | Concrete | FOUN-1 | F/R/P Slab on Grade - Zone 1 | 15-Sep-2025 | 03-Oct-2025 |
| 18 | Foundations | Slabs - Zone 2 | Concrete | FOUN-1 | F/R/P Slab on Grade - Zone 2 | 14-Oct-2025 | 03-Nov-2025 |
| 19 | Foundations | Slabs - Zone 3 | Concrete | FOUN-1 | F/R/P Slab on Grade - Zone 3 | 11-Nov-2025 | 24-Nov-2025 |
| 20 | Foundations | Slabs - Zone 4 | Concrete | FOUN-1 | F/R/P Slab on Grade - Zone 4 | 11-Dec-2025 | 29-Dec-2025 |
| 21 | Foundations | Slabs - Zone 5 | Concrete | FOUN-1 | F/R/P Slab on Grade - Zone 5 | 30-Jan-2026 | 19-Feb-2026 |
| 22 | Foundations | Slabs - Zone 6 | Concrete | FOUN-1 | F/R/P Slab on Grade - Zone 6 | 13-Mar-2026 | 02-Apr-2026 |
| 23 | Interiors | Finishes - Mechanical Room | Concrete | CO-1 | Cure Concrete Pad Sally Port - Mechanical Yard | 30-Jan-2026 | 12-Mar-2026 |
| 24 | Interiors | Finishes - Mechanical Room | Concrete | CO-1 | Cure Concrete Pads - Mechanical Yard | 18-Dec-2025 | 29-Dec-2025 |
| 25 | Interiors | Finishes - Mechanical Room | Concrete | CO-2 | F/R/P Concrete Pad Sally Port - Mechanical Yard | 18-Dec-2025 | 29-Jan-2026 |
| 26 | Interiors | Finishes - Mechanical Room | Concrete | CO-2 | F/R/P Concrete Pads - Mechanical Yard | 04-Nov-2025 | 17-Dec-2025 |
| 27 | Interiors | FF&E | Concrete | CO-3 | FF&E | 05-Feb-2027 | 08-Apr-2027 |
| 28 | Interiors | Finishes - Zone 1 | Drywall | F-1 | Frame Walls & Ceilings - Zone 1 | 02-Apr-2026 | 16-Apr-2026 |
| 29 | Interiors | Finishes - Zone 2 | Drywall | F-1 | Frame Walls & Ceilings - Zone 2 | 17-Apr-2026 | 30-Apr-2026 |
| 30 | Interiors | Finishes - Zone 3 | Drywall | F-1 | Frame Walls & Ceilings - Zone 3 | 01-May-2026 | 14-May-2026 |
| 31 | Interiors | Finishes - Zone 4 | Drywall | F-1 | Frame Walls & Ceilings - Zone 4 | 15-May-2026 | 29-May-2026 |
| 32 | Interiors | Finishes - Zone 5 | Drywall | F-1 | Frame Walls & Ceilings - Zone 5 | 01-Jun-2026 | 12-Jun-2026 |
| 33 | Interiors | Finishes - Zone 6 | Drywall | F-1 | Frame Walls & Ceilings - Zone 6 | 15-Jun-2026 | 26-Jun-2026 |
| 34 | Interiors | Finishes - Zone 1 | Drywall | F-2 | Tape & Float - Zone 1 | 01-Jun-2026 | 12-Jun-2026 |
| 35 | Interiors | Finishes - Zone 2 | Drywall | F-2 | Tape & Float - Zone 2 | 15-Jun-2026 | 26-Jun-2026 |
| 36 | Interiors | Finishes - Zone 3 | Drywall | F-2 | Tape & Float - Zone 3 | 29-Jun-2026 | 13-Jul-2026 |
| 37 | Interiors | Finishes - Zone 4 | Drywall | F-2 | Tape & Float - Zone 4 | 14-Jul-2026 | 27-Jul-2026 |
| 38 | Interiors | Finishes - Zone 5 | Drywall | F-2 | Tape & Float - Zone 5 | 28-Jul-2026 | 10-Aug-2026 |
| 39 | Interiors | Finishes - Zone 6 | Drywall | F-2 | Tape & Float - Zone 6 | 11-Aug-2026 | 24-Aug-2026 |
| 40 | Interiors | Finishes - Zone 1 | Drywall | F-3 | Two Side Walls - Zone 1 | 20-May-2026 | 29-May-2026 |
| 41 | Interiors | Finishes - Zone 2 | Drywall | F-3 | Two Side Walls - Zone 2 | 04-Jun-2026 | 12-Jun-2026 |
| 42 | Interiors | Finishes - Zone 3 | Drywall | F-3 | Two Side Walls - Zone 3 | 18-Jun-2026 | 26-Jun-2026 |
| 43 | Interiors | Finishes - Zone 4 | Drywall | F-3 | Two Side Walls - Zone 4 | 02-Jul-2026 | 13-Jul-2026 |
| 44 | Interiors | Finishes - Zone 5 | Drywall | F-3 | Two Side Walls - Zone 5 | 17-Jul-2026 | 27-Jul-2026 |
| 45 | Interiors | Finishes - Zone 6 | Drywall | F-3 | Two Side Walls - Zone 6 | 31-Jul-2026 | 10-Aug-2026 |
| 46 | Interiors | Rough-In - Mechanical Room | Electrical | E-1 | Install Electrical Switchgear - Zone 1 Mechanical Room | 15-Jun-2026 | 06-Jul-2026 |
| 47 | Interiors | Finishes - Mechanical Room | Electrical | E-2 | Set Generator - Mechanical Yard | 14-May-2026 | 15-May-2026 |
| 48 | Interiors | Testing | Electrical | E-3 | Test & Balance | 10-Apr-2026 | 29-Sep-2026 |
| 49 | Exteriors | North Elevation | Exterior Sub | FINISH-1 | Exterior Finishes - North Elevation | 17-Dec-2025 | 25-Feb-2026 |
| 50 | Exteriors | West Elevation | Exterior Sub | FINISH-1 | Exterior Finishes - West Elevation | 17-Dec-2025 | 25-Feb-2026 |
| 51 | Exteriors | South Elevation | Exterior Sub | FINISH-1 | Exterior Finishes - South Elevation | 15-Jan-2026 | 18-Mar-2026 |
| 52 | Exteriors | East Elevation | Exterior Sub | FINISH-1 | Exterior Finishes - East Elevation | 17-Nov-2025 | 28-Jan-2026 |
| 53 | Interiors | Finishes - Zone 1 | Finishes | FI-1 | Finishes - Zone 1 | 08-Jul-2026 | 25-Aug-2026 |
| 54 | Interiors | Finishes - Zone 2 | Finishes | FI-1 | Finishes - Zone 2 | 29-Jul-2026 | 09-Sep-2026 |
| 55 | Interiors | Finishes - Zone 3 | Finishes | FI-1 | Finishes - Zone 3 | 05-Aug-2026 | 23-Sep-2026 |
| 56 | Interiors | Finishes - Zone 4 | Finishes | FI-1 | Finishes - Zone 4 | 26-Aug-2026 | 07-Oct-2026 |
| 57 | Interiors | Finishes - Zone 5 | Finishes | FI-1 | Finishes - Zone 5 | 10-Sep-2026 | 21-Oct-2026 |
| 58 | Interiors | Finishes - Zone 6 | Finishes | FI-1 | Finishes - Zone 6 | 24-Sep-2026 | 04-Nov-2026 |
| 59 | Interiors | Finishes - Zone 7A | Finishes | FI-1 | Finishes In Courtyard - Zone 7A | 12-Aug-2026 | 04-Feb-2027 |
| 60 | Interiors | Finishes - Zone 7B | Finishes | FI-1 | Finishes In Courtyard - Zone 7B | 20-Feb-2026 | 11-Aug-2026 |
| 61 | Interiors | Finishes - Zone 1 | Inspector | IN-1 | Ceiling Inspection - Zone 1 | 01-Jul-2026 | 01-Jul-2026 |
| 62 | Interiors | Finishes - Zone 3 | Inspector | IN-1 | Ceiling Inspection - Zone 1 | 30-Jul-2026 | 30-Jul-2026 |
| 63 | Interiors | Rough-In - Zone 1 | Inspector | IN-2 | In-wall MEP Inspections - Zone 1 | 15-May-2026 | 15-May-2026 |
| 64 | Interiors | Rough-In - Zone 2 | Inspector | IN-2 | In-wall MEP Inspections - Zone 2 | 01-Jun-2026 | 01-Jun-2026 |
| 65 | Interiors | Rough-In - Zone 3 | Inspector | IN-2 | In-wall MEP Inspections - Zone 3 | 15-Jun-2026 | 15-Jun-2026 |
| 66 | Interiors | Rough-In - Zone 4 | Inspector | IN-2 | In-wall MEP Inspections - Zone 4 | 29-Jun-2026 | 29-Jun-2026 |
| 67 | Interiors | Rough-In - Zone 5 | Inspector | IN-2 | In-wall MEP Inspections - Zone 5 | 14-Jul-2026 | 14-Jul-2026 |
| 68 | Interiors | Rough-In - Zone 6 | Inspector | IN-2 | In-wall MEP Inspections - Zone 6 | 28-Jul-2026 | 28-Jul-2026 |
| 69 | Interiors | Rough-In - Zone 1 | Inspector | IN-3 | OH MEPF Inspections - Zone 1 | 15-May-2026 | 15-May-2026 |
| 70 | Interiors | Rough-In - Zone 2 | Inspector | IN-3 | OH MEPF Inspections - Zone 2 | 01-Jun-2026 | 01-Jun-2026 |

| entry | phase | location | trade | activity_code | activity_name | start | finish |
| --- | --- | --- | --- | --- | --- | --- | --- |
| 71 | Interiors | Rough-In - Zone 3 | Inspector | IN-3 | OH MEPF Inspections - Zone 3 | 15-Jun-2026 | 15-Jun-2026 |
| 72 | Interiors | Rough-In - Zone 4 | Inspector | IN-3 | OH MEPF Inspections - Zone 4 | 29-Jun-2026 | 29-Jun-2026 |
| 73 | Interiors | Rough-In - Zone 5 | Inspector | IN-3 | OH MEPF Inspections - Zone 5 | 14-Jul-2026 | 14-Jul-2026 |
| 74 | Interiors | Rough-In - Zone 6 | Inspector | IN-3 | OH MEPF Inspections - Zone 6 | 28-Jul-2026 | 28-Jul-2026 |
| 75 | Interiors | Finishes - Kitchen | Kitchen | K-1 | Install Kitchen Equipment | 01-Jun-2026 | 24-Aug-2026 |
| 76 | Milestones | General Milestone | McGough | SC | Substantial Completion | 08-Apr-2027 | 08-Apr-2027 |
| 77 | Milestones | General Milestone | McGough | GMP | GMP Issued | 04-Mar-2025 | 07-Mar-2025 |
| 78 | Milestones | General Milestone | McGough | MOB | Mobilization | 03-Apr-2025 | 16-Apr-2025 |
| 79 | Design | Design Milestone | McGough | DM-1 | DD 1 Safety & Risk Assessment | 04-Sep-2024 | 05-Sep-2024 |
| 80 | Design | Design Milestone | McGough | DM-2 | DD 2 | 19-Sep-2024 | 19-Sep-2024 |
| 81 | Design | Design Milestone | McGough | DM-3 | DD 3 | 17-Oct-2024 | 17-Oct-2024 |
| 82 | Design | Design Milestone | McGough | DM-4 | DD 4 | 14-Nov-2024 | 14-Nov-2024 |
| 83 | Design | Design Milestone | McGough | DM-5 | DD Package Submission Owner & Cost Estimator | 11-Dec-2024 | 18-Dec-2024 |
| 84 | Design | Design Milestone | McGough | DM-6 | Early Site Utility, Grading, Foundation Package | 19-Dec-2024 | 02-Apr-2025 |
| 85 | Design | Design Milestone | McGough | DM-7 | Start CD Package | 19-Dec-2024 | 19-Dec-2024 |
| 86 | Design | Design Milestone | McGough | DM-8 | DD Cost Estimate Due | 20-Dec-2024 | 29-Jan-2025 |
| 87 | Design | Design Milestone | McGough | DM-9 | DD Final Page Turn & Owner Sign-off | 30-Jan-2025 | 30-Jan-2025 |
| 88 | Design | Design Milestone | McGough | DM-10 | Cost Reconciliation | 30-Jan-2025 | 12-Feb-2025 |
| 89 | Design | Design Milestone | McGough | DM-11 | Owner Comments Due | 30-Jan-2025 | 12-Feb-2025 |
| 90 | Design | Design Milestone | McGough | DM-12 | Owner DD & GMP Signoff | 13-Feb-2025 | 03-Mar-2025 |
| 91 | Design | Design Milestone | McGough | DM-13 | Issue Complete CD Package | 03-Apr-2025 | 02-Jun-2025 |
| 92 | Subcontractor Procurement | Pre-Qual | McGough | PRE-1 | Pre-Qual Curtainwall Sub | 04-Sep-2024 | 10-Sep-2024 |
| 93 | Subcontractor Procurement | Pre-Qual | McGough | PRE-2 | Pre-Qual Store Fronts Sub | 04-Sep-2024 | 10-Sep-2024 |
| 94 | Subcontractor Procurement | Pre-Qual | McGough | PRE-3 | Pre-Qual Structural Steel Sub | 04-Sep-2024 | 10-Sep-2024 |
| 95 | Subcontractor Procurement | Pre-Qual | McGough | PRE-4 | Pre-Qual Security Glazing Sub | 04-Sep-2024 | 10-Sep-2024 |
| 96 | Subcontractor Procurement | Pre-Qual | McGough | PRE-5 | Pre-Qual Overhead Door Sub | 04-Sep-2024 | 10-Sep-2024 |
| 97 | Subcontractor Procurement | Pre-Qual | McGough | PRE-6 | Pre-Qual Mechanical Sub | 04-Sep-2024 | 10-Sep-2024 |
| 98 | Subcontractor Procurement | Pre-Qual | McGough | PRE-7 | Pre-Qual Electrical Sub | 04-Sep-2024 | 10-Sep-2024 |
| 99 | Subcontractor Procurement | Pre-Qual | McGough | PRE-8 | Pre-Qual Kitchen Equipment Sub | 04-Sep-2024 | 10-Sep-2024 |
| 100 | Subcontractor Procurement | Pre-Qual | McGough | PRE-9 | Pre-Qual Antiligature Door Hardware/Kingsway Kits Sub | 04-Sep-2024 | 10-Sep-2024 |
| 101 | Subcontractor Procurement | Contracts | McGough | CONT-1 | Issue Contract to Curtainwall Sub | 10-Mar-2025 | 04-Apr-2025 |
| 102 | Subcontractor Procurement | Contracts | McGough | CONT-2 | Issue Contract to Store Fronts Sub | 10-Mar-2025 | 04-Apr-2025 |
| 103 | Subcontractor Procurement | Contracts | McGough | CONT-3 | Issue Contract to Structural Steel Sub | 10-Mar-2025 | 04-Apr-2025 |
| 104 | Subcontractor Procurement | Contracts | McGough | CONT-4 | Issue Contract to Security Glazing Sub | 10-Mar-2025 | 04-Apr-2025 |
| 105 | Subcontractor Procurement | Contracts | McGough | CONT-5 | Issue Contract to Overhead Door Sub | 10-Mar-2025 | 04-Apr-2025 |
| 106 | Subcontractor Procurement | Contracts | McGough | CONT-6 | Issue Contract to Mechanical Sub | 10-Mar-2025 | 04-Apr-2025 |
| 107 | Subcontractor Procurement | Contracts | McGough | CONT-7 | Issue Contract to Electrical Sub | 10-Mar-2025 | 04-Apr-2025 |
| 108 | Subcontractor Procurement | Contracts | McGough | CONT-8 | Issue Contract to Kitchen Equipment Sub | 10-Mar-2025 | 04-Apr-2025 |
| 109 | Subcontractor Procurement | Contracts | McGough | CONT-9 | Issue Contract to Antiligature Door Hardware/Kingsway Kits Sub | 10-Mar-2025 | 04-Apr-2025 |
| 110 | Material Procurement | Material | McGough | PROCU-1 | Procure Transformer (by others) | 04-Sep-2024 | 25-Apr-2025 |
| 111 | Material Procurement | Material | McGough | PROCU-2 | Procure & Fabricate Generator | 29-Apr-2025 | 13-May-2026 |
| 112 | Material Procurement | Material | McGough | PROCU-3 | Procure & Fabricate Electrical Switchgear | 29-Apr-2025 | 13-May-2026 |
| 113 | Material Procurement | Material | McGough | PROCU-4 | Procure & Fabricate ATS | 29-Apr-2025 | 13-May-2026 |
| 114 | Material Procurement | Material | McGough | PROCU-5 | Procure & Fabricate AHU's | 29-Apr-2025 | 17-Feb-2026 |
| 115 | Material Procurement | Material | McGough | PROCU-6 | Procure & Fabricate Chillers | 29-Apr-2025 | 17-Feb-2026 |
| 116 | Material Procurement | Material | McGough | PROCU-7 | Procure & Fabricate Structural Steel | 29-Apr-2025 | 23-Jul-2025 |
| 117 | Material Procurement | Material | McGough | PROCU-8 | Procure & Fabricate Curtainwall | 29-Apr-2025 | 18-Sep-2025 |
| 118 | Material Procurement | Material | McGough | PROCU-9 | Procure & Fabricate Store Fronts | 29-Apr-2025 | 18-Sep-2025 |
| 119 | Material Procurement | Material | McGough | PROCU-10 | Procure & Fabricate Security Glazing | 03-Jun-2025 | 24-Sep-2025 |
| 120 | Material Procurement | Material | McGough | PROCU-11 | Procure & Fabricate Overhead Door (6) | 03-Jun-2025 | 08-Oct-2025 |
| 121 | Material Procurement | Material | McGough | PROCU-12 | Procure & Fabricate Boilers | 28-Jul-2025 | 15-May-2026 |
| 122 | Material Procurement | Material | McGough | PROCU-13 | Procure & Fabricate Antiligature Door Hardware/Kingsway Kits | 28-Jan-2026 | 18-Jun-2026 |
| 123 | Material Procurement | Material | McGough | PROCU-14 | Procure & Fabricate Kitchen Equipment | 02-Feb-2026 | 27-Apr-2026 |
| 124 | Submittals | Shop Drawings | McGough | SUBM-1 | Submit Curtainwall Shop Drawings | 07-Apr-2025 | 21-Apr-2025 |
| 125 | Submittals | Shop Drawings | McGough | SUBM-2 | Submit Store Front Shop Drawings | 07-Apr-2025 | 21-Apr-2025 |
| 126 | Submittals | Shop Drawings | McGough | SUBM-3 | Submit Security Glazing Shop Drawings | 07-Apr-2025 | 21-Apr-2025 |
| 127 | Submittals | Shop Drawings | McGough | SUBM-4 | Submit Steel Structure Shop Drawings | 07-Apr-2025 | 21-Apr-2025 |
| 128 | Submittals | Shop Drawings | McGough | SUBM-5 | Submit Overhead Door Shop Drawings | 07-Apr-2025 | 21-Apr-2025 |
| 129 | Submittals | Shop Drawings | McGough | SUBM-6 | Submit Chiller Shop Drawings | 07-Apr-2025 | 21-Apr-2025 |
| 130 | Submittals | Shop Drawings | McGough | SUBM-7 | Submit AHU Shop Drawings | 07-Apr-2025 | 21-Apr-2025 |
| 131 | Submittals | Shop Drawings | McGough | SUBM-8 | Submit Generator Shop Drawings | 07-Apr-2025 | 21-Apr-2025 |
| 132 | Submittals | Shop Drawings | McGough | SUBM-9 | Submit Kitchen Equipment Shop Drawings | 07-Apr-2025 | 21-Apr-2025 |
| 133 | Submittals | Shop Drawings | McGough | SUBM-10 | Submit Electrical Switchgear Shop Drawings | 07-Apr-2025 | 21-Apr-2025 |
| 134 | Submittals | Product Data | McGough | SUBM-11 | Submit ATS Shop Drawings | 07-Apr-2025 | 21-Apr-2025 |
| 135 | Submittals | Product Data | McGough | SUBM-12 | Submit Boilers Shop Drawings | 07-Apr-2025 | 21-Apr-2025 |
| 136 | Submittals | Product Data | McGough | SUBM-13 | Submit Antiligature Door Hardware/Kingsway Kits Shop Drawings | 07-Apr-2025 | 21-Apr-2025 |
| 137 | Submittals | Product Data | McGough | SUBM-14 | Owner Approve Curtainwall Shop Drawings | 22-Apr-2025 | 28-Apr-2025 |
| 138 | Submittals | Product Data | McGough | SUBM-15 | Owner Approve Store Front Shop Drawings | 22-Apr-2025 | 28-Apr-2025 |
| 139 | Submittals | Product Data | McGough | SUBM-16 | Owner Approve Security Glazing Shop Drawings | 22-Apr-2025 | 28-Apr-2025 |
| 140 | Submittals | Product Data | McGough | SUBM-17 | Owner Approve Steel Structure Shop Drawings | 22-Apr-2025 | 28-Apr-2025 |

| entry | phase | location | trade | activity_code | activity_name | start | finish |
| --- | --- | --- | --- | --- | --- | --- | --- |
| 141 | Submittals | Product Data | McGough | SUBM-18 | Owner Approve Overhead Door Shop Drawings | 22-Apr-2025 | 28-Apr-2025 |
| 142 | Submittals | Product Data | McGough | SUBM-19 | Owner Approve Chiller Shop Drawings | 22-Apr-2025 | 28-Apr-2025 |
| 143 | Submittals | Product Data | McGough | SUBM-20 | Owner Approve AHU Shop Drawings | 22-Apr-2025 | 28-Apr-2025 |
| 144 | Submittals | Product Data | McGough | SUBM-21 | Owner Approve Generator Shop Drawings | 22-Apr-2025 | 28-Apr-2025 |
| 145 | Submittals | Product Data | McGough | SUBM-22 | Owner Approve Kitchen Equipment Shop Drawings | 22-Apr-2025 | 28-Apr-2025 |
| 146 | Submittals | Product Data | McGough | SUBM-23 | Owner Approve Electrical Switchgear Shop Drawings | 22-Apr-2025 | 28-Apr-2025 |
| 147 | Submittals | Product Data | McGough | SUBM-24 | Owner Approve ATS Shop Drawings | 22-Apr-2025 | 28-Apr-2025 |
| 148 | Submittals | Product Data | McGough | SUBM-25 | Owner Approve Boilers Shop Drawings | 22-Apr-2025 | 28-Apr-2025 |
| 149 | Submittals | Product Data | McGough | SUBM-26 | Owner Approve Antiligature Door Hardware/Kingsway Kits Shop Drawings | 22-Apr-2025 | 28-Apr-2025 |
| 150 | Permitting | Permits | McGough | PERM-1 | Permitting - TXDot | 15-Jan-2025 | 21-May-2025 |
| 151 | Interiors | Finishes - Mechanical Room | Mechanical | M-1 | Hook-up/Final Connections Chillers - Mechanical Yard | 25-Feb-2026 | 17-Mar-2026 |
| 152 | Interiors | Finishes - Mechanical Room | Mechanical | M-2 | Hook-up/Final Connections Generator - Mechanical Yard | 18-May-2026 | 22-May-2026 |
| 153 | Interiors | Finishes - Zone 1 | Mechanical | M-3 | In-wall Blocking - Zone 1 | 18-May-2026 | 19-May-2026 |
| 154 | Interiors | Finishes - Zone 2 | Mechanical | M-3 | In-wall Blocking - Zone 2 | 02-Jun-2026 | 03-Jun-2026 |
| 155 | Interiors | Finishes - Zone 3 | Mechanical | M-3 | In-wall Blocking - Zone 3 | 16-Jun-2026 | 17-Jun-2026 |
| 156 | Interiors | Finishes - Zone 4 | Mechanical | M-3 | In-wall Blocking - Zone 4 | 30-Jun-2026 | 01-Jul-2026 |
| 157 | Interiors | Finishes - Zone 5 | Mechanical | M-3 | In-wall Blocking - Zone 5 | 15-Jul-2026 | 16-Jul-2026 |
| 158 | Interiors | Finishes - Zone 6 | Mechanical | M-3 | In-wall Blocking - Zone 6 | 29-Jul-2026 | 30-Jul-2026 |
| 159 | Interiors | Finishes - Zone 1 | Mechanical | M-4 | Install ACT Grid - Zone 1 | 15-Jun-2026 | 19-Jun-2026 |
| 160 | Interiors | Finishes - Zone 3 | Mechanical | M-4 | Install ACT Grid - Zone 1 | 14-Jul-2026 | 20-Jul-2026 |
| 161 | Interiors | Rough-In - Zone 5 | Mechanical | M-5 | Install AHU 1 (Roof) - Zone 5 | 04-May-2026 | 08-May-2026 |
| 162 | Interiors | Rough-In - Zone 6 | Mechanical | M-5 | Install AHU 2 (Roof) - Zone 6 | 11-May-2026 | 15-May-2026 |
| 163 | Interiors | Rough-In - Zone 4 | Mechanical | M-5 | Install AHU 3 & 4 (Roof) - Zone 4 | 24-Apr-2026 | 01-May-2026 |
| 164 | Interiors | Rough-In - Zone 3 | Mechanical | M-5 | Install AHU 5 (Roof) - Zone 3 | 17-Apr-2026 | 23-Apr-2026 |
| 165 | Interiors | Rough-In - Zone 2 | Mechanical | M-5 | Install AHU 6 (Roof) - Zone 2 | 10-Apr-2026 | 16-Apr-2026 |
| 166 | Interiors | Rough-In - Zone 1 | Mechanical | M-5 | Install AHU 7 (Roof) - Zone 1 | 02-Apr-2026 | 09-Apr-2026 |
| 167 | Interiors | Rough-In - Mechanical Room | Mechanical | M-6 | Install ATS - Zone 1 Mechanical Room | 15-Jun-2026 | 26-Jun-2026 |
| 168 | Interiors | Rough-In - Mechanical Room | Mechanical | M-7 | Install Boilers - Zone 1 Mechanical Room | 15-Jun-2026 | 26-Jun-2026 |
| 169 | Interiors | Finishes - Mechanical Room | Mechanical | M-8 | Install CMU Walls - Mechanical Yard | 19-Mar-2026 | 30-Apr-2026 |
| 170 | Interiors | Rough-In - Mechanical Room | Mechanical | M-9 | Install Housekeeping Pads - Zone 1 Mechanical Room | 29-Sep-2025 | 03-Oct-2025 |
| 171 | Interiors | Finishes - Mechanical Room | Mechanical | M-10 | Set Chillers (3) - Mechanical Yard | 18-Feb-2026 | 24-Feb-2026 |
| 172 | Interiors | Finishes - Mechanical Room | Mechanical | M-11 | Set Fuel Tank - Mechanical Yard | 18-May-2026 | 22-May-2026 |
| 173 | Interiors | Rough-In - Mechanical Room | Mechanical | M-12 | Set/Install CHWP (3) - Zone 1 Mechanical Room | 29-Jun-2026 | 20-Jul-2026 |
| 174 | Interiors | Rough-In - Mechanical Room | Mechanical | M-13 | Set/Install HWP (3) - Zone 1 Mechanical Room | 29-Jun-2026 | 20-Jul-2026 |
| 175 | Interiors | Rough-In - Mechanical Room | Mechanical | M-14 | Set/Install VFD's - Zone 1 Mechanical Room | 21-Jul-2026 | 17-Aug-2026 |
| 176 | Foundations | Underground Structures- Zone 1 | MEP | FOUND-2 | Underground MEP - Zone 1 | 21-Jul-2025 | 29-Aug-2025 |
| 177 | Foundations | Underground Structures- Mechanical Yard | MEP | FOUND-2 | Underground MEP - Mechanical Yard | 21-Jul-2025 | 13-Oct-2025 |
| 178 | Foundations | Underground Structures- Zone 2 | MEP | FOUND-2 | Underground MEP - Zone 2 | 02-Sep-2025 | 13-Oct-2025 |
| 179 | Foundations | Underground Structures- Zone 3 | MEP | FOUND-2 | Underground MEP - Zone 3 | 14-Oct-2025 | 10-Nov-2025 |
| 180 | Foundations | Underground Structures- Zone 4 | MEP | FOUND-2 | Underground MEP - Zone 4 | 11-Nov-2025 | 10-Dec-2025 |
| 181 | Foundations | Underground Structures- Zone 5 | MEP | FOUND-2 | Underground MEP - Zone 5 | 11-Dec-2025 | 29-Jan-2026 |
| 182 | Foundations | Underground Structures- Zone 6 | MEP | FOUND-2 | Underground MEP - Zone 6 | 30-Jan-2026 | 12-Mar-2026 |
| 183 | Foundations | Underground Structures- Zone 7A | MEP | FOUND-2 | Underground MEP - Zone 7A | 13-Mar-2026 | 02-Apr-2026 |
| 184 | Foundations | Underground Structures- Zone 7B | MEP | FOUND-2 | Underground MEP - Zone 7B | 06-Apr-2026 | 24-Apr-2026 |
| 185 | Interiors | Rough-In - Zone 1 | MEP | MEP-1 | In-wall MEP Rough-in - Zone 1 | 17-Apr-2026 | 14-May-2026 |
| 186 | Interiors | Rough-In - Zone 2 | MEP | MEP-1 | In-wall MEP Rough-in - Zone 2 | 01-May-2026 | 29-May-2026 |
| 187 | Interiors | Rough-In - Zone 3 | MEP | MEP-1 | In-wall MEP Rough-in - Zone 3 | 15-May-2026 | 12-Jun-2026 |
| 188 | Interiors | Rough-In - Zone 4 | MEP | MEP-1 | In-wall MEP Rough-in - Zone 4 | 01-Jun-2026 | 26-Jun-2026 |
| 189 | Interiors | Rough-In - Zone 5 | MEP | MEP-1 | In-wall MEP Rough-in - Zone 5 | 15-Jun-2026 | 13-Jul-2026 |
| 190 | Interiors | Rough-In - Zone 6 | MEP | MEP-1 | In-wall MEP Rough-in - Zone 6 | 29-Jun-2026 | 27-Jul-2026 |
| 191 | Interiors | Rough-In - Zone 1 | MEPF | MEPF-1 | OH MEPF Rough-in - Zone 1 | 17-Apr-2026 | 14-May-2026 |
| 192 | Interiors | Rough-In - Zone 2 | MEPF | MEPF-1 | OH MEPF Rough-in - Zone 2 | 01-May-2026 | 29-May-2026 |
| 193 | Interiors | Rough-In - Zone 3 | MEPF | MEPF-1 | OH MEPF Rough-in - Zone 3 | 15-May-2026 | 12-Jun-2026 |
| 194 | Interiors | Rough-In - Zone 4 | MEPF | MEPF-1 | OH MEPF Rough-in - Zone 4 | 01-Jun-2026 | 26-Jun-2026 |
| 195 | Interiors | Rough-In - Zone 5 | MEPF | MEPF-1 | OH MEPF Rough-in - Zone 5 | 15-Jun-2026 | 13-Jul-2026 |
| 196 | Interiors | Rough-In - Zone 6 | MEPF | MEPF-1 | OH MEPF Rough-in - Zone 6 | 29-Jun-2026 | 27-Jul-2026 |
| 197 | Interiors | Testing | Owner | OW-1 | Owner Test & Balance | 09-Apr-2027 | 02-Jul-2027 |
| 198 | Exteriors | Roofing | Roof Sub | FINISH-2 | Install Roofing | 08-Jan-2026 | 01-Apr-2026 |
| 199 | Sitework | Clear & Grub | Site Sub | SITE-1 | Clear & Grub - Building Foot Print | 17-Apr-2025 | 22-May-2025 |
| 200 | Sitework | Excavation | Site Sub | SITE-2 | Excavate - Entire Site | 23-May-2025 | 28-Jul-2025 |
| 201 | Sitework | Site Utilities | Site Sub | SITE-3 | Install All Site Utilities | 03-Apr-2025 | 18-Jul-2025 |
| 202 | Sitework | Site Paving | Site Sub | SITE-4 | Site Paving | 23-May-2025 | 30-Dec-2025 |
| 203 | Sitework | Hardscape/Landscaping | Site Sub | SITE-5 | Hardscape/Landscaping | 06-Jul-2026 | 23-Dec-2026 |
| 204 | Structure | Above Grade Structures- Zone 1 | Steel | STRUC-2 | Steel Framing & Decking - Zone 1 | 06-Oct-2025 | 17-Oct-2025 |
| 205 | Structure | Above Grade Structures- Zone 2 | Steel | STRUC-2 | Steel Framing & Decking - Zone 2 | 20-Oct-2025 | 31-Oct-2025 |
| 206 | Structure | Above Grade Structures- Zone 3 | Steel | STRUC-2 | Steel Framing & Decking - Zone 3 | 03-Nov-2025 | 14-Nov-2025 |
| 207 | Structure | Above Grade Structures- Zone 4 | Steel | STRUC-2 | Steel Framing & Decking - Zone 4 | 17-Nov-2025 | 02-Dec-2025 |
| 208 | Structure | Above Grade Structures- Zone 5 | Steel | STRUC-2 | Steel Framing & Decking - Zone 5 | 03-Dec-2025 | 16-Dec-2025 |
| 209 | Structure | Above Grade Structures- Zone 6 | Steel | STRUC-2 | Steel Framing & Decking - Zone 6 | 17-Dec-2025 | 07-Jan-2026 |
| 210 | McGough Standards | Executive Summary | Exec | MCG-1 | Demolition | 04-Sep-2024 | 04-Sep-2024 |

| entry | phase | location | trade | activity_code | activity_name | start | finish |
| --- | --- | --- | --- | --- | --- | --- | --- |
| 211 | McGough Standards | Executive Summary | Exec | MCG-2 | Earthworks and Support of Excavation | 04-Sep-2024 | 04-Sep-2024 |
| 212 | McGough Standards | Executive Summary | Exec | MCG-3 | Deep Foundations | 04-Sep-2024 | 04-Sep-2024 |
| 213 | McGough Standards | Executive Summary | Exec | MCG-4 | Structural Foundations/Footings | 04-Sep-2024 | 04-Sep-2024 |
| 214 | McGough Standards | Executive Summary | Exec | MCG-5 | Below Grade Structure | 04-Sep-2024 | 04-Sep-2024 |
| 215 | McGough Standards | Executive Summary | Exec | MCG-6 | Above Grade Structure | 04-Sep-2024 | 04-Sep-2024 |
| 216 | McGough Standards | Executive Summary | Exec | MCG-7 | Vertical Transportation | 04-Sep-2024 | 04-Sep-2024 |
| 217 | McGough Standards | Executive Summary | Exec | MCG-8 | Rough-In | 04-Sep-2024 | 04-Sep-2024 |
| 218 | McGough Standards | Executive Summary | Exec | MCG-9 | Finishes | 04-Sep-2024 | 04-Sep-2024 |
| 219 | McGough Standards | Executive Summary | Exec | MCG-10 | Masonry | 04-Sep-2024 | 04-Sep-2024 |
| 220 | McGough Standards | Executive Summary | Exec | MCG-11 | Hardscape and Landscaping | 04-Sep-2024 | 04-Sep-2024 |
| 221 | McGough Standards | Executive Summary | Exec | MCG-12 | Subcontract Procurement | 25-Nov-2024 | 23-May-2025 |
| 222 | McGough Standards | Executive Summary | Exec | MCG-13 | Site Utilities | 03-Apr-2025 | 18-Jul-2025 |
| 223 | McGough Standards | Executive Summary | Exec | MCG-14 | Building Enclosure | 17-Nov-2025 | 01-Apr-2026 |
| 224 | McGough Standards | Executive Summary | Exec | MCG-15 | Testing and Commissioning | 25-Aug-2026 | 03-Mar-2027 |
| 225 | McGough Standards | Key Milestones | McGough | MCG-16 | Notice to Proceed | 10-Feb-2025 | 10-Feb-2025 |
| 226 | McGough Standards | Key Milestones | McGough | MCG-17 | Below Grade Structure Start | 10-Feb-2025 | 10-Feb-2025 |
| 227 | McGough Standards | Key Milestones | McGough | MCG-18 | Below Grade Structure Complete | 10-Feb-2025 | 10-Feb-2025 |
| 228 | McGough Standards | Key Milestones | McGough | MCG-19 | Vertical Transportation Start | 10-Feb-2025 | 10-Feb-2025 |
| 229 | McGough Standards | Key Milestones | McGough | MCG-20 | Temp Power | 12-May-2025 | 12-May-2025 |
| 230 | McGough Standards | Key Milestones | McGough | MCG-21 | Excavation Start | 23-May-2025 | 23-May-2025 |
| 231 | McGough Standards | Key Milestones | McGough | MCG-22 | Excavation Complete | 28-Jul-2025 | 28-Jul-2025 |
| 232 | McGough Standards | Key Milestones | McGough | MCG-23 | Above Grade Structure Start | 20-Oct-2025 | 20-Oct-2025 |
| 233 | McGough Standards | Key Milestones | McGough | MCG-24 | Building Temporarily Enclosed | 27-Oct-2025 | 27-Oct-2025 |
| 234 | McGough Standards | Key Milestones | McGough | MCG-25 | Above Grade Structure Complete | 07-Jan-2026 | 07-Jan-2026 |
| 235 | McGough Standards | Key Milestones | McGough | MCG-26 | Building Envelope Start | 29-Jan-2026 | 29-Jan-2026 |
| 236 | McGough Standards | Key Milestones | McGough | MCG-27 | Building Envelope Complete | 09-Apr-2026 | 09-Apr-2026 |
| 237 | McGough Standards | Key Milestones | McGough | MCG-28 | MEP Rough-In Start | 15-May-2026 | 15-May-2026 |
| 238 | McGough Standards | Key Milestones | McGough | MCG-29 | Permanent Power | 26-May-2026 | 26-May-2026 |
| 239 | McGough Standards | Key Milestones | McGough | MCG-30 | Start Drywall | 01-Jun-2026 | 01-Jun-2026 |
| 240 | McGough Standards | Key Milestones | McGough | MCG-31 | Courtyard Start | 12-Aug-2026 | 12-Aug-2026 |
| 241 | McGough Standards | Key Milestones | McGough | MCG-32 | Building Finishes Start | 26-Aug-2026 | 26-Aug-2026 |
| 242 | McGough Standards | Key Milestones | McGough | MCG-33 | Drywall Complete | 23-Sep-2026 | 23-Sep-2026 |
| 243 | McGough Standards | Key Milestones | McGough | MCG-34 | Courtyard Finish | 04-Feb-2027 | 04-Feb-2027 |
| 244 | McGough Standards | Key Milestones | McGough | MCG-35 | Final Acceptance | 20-May-2027 | 20-May-2027 |
| 245 | McGough Standards | McGough Tracking | Tracking | MCG-36 | Subcontractor Procurement Start | 25-Nov-2024 | 25-Nov-2024 |
| 246 | McGough Standards | McGough Tracking | Tracking | MCG-37 | Material Purchase Start | 25-Nov-2024 | 25-Nov-2024 |
| 247 | McGough Standards | McGough Tracking | Tracking | MCG-38 | Mobilization Key Activity | 10-Feb-2025 | 10-Feb-2025 |
| 248 | McGough Standards | McGough Tracking | Tracking | MCG-39 | Demolition Start | 10-Feb-2025 | 10-Feb-2025 |
| 249 | McGough Standards | McGough Tracking | Tracking | MCG-40 | Demolition Complete | 10-Feb-2025 | 10-Feb-2025 |
| 250 | McGough Standards | McGough Tracking | Tracking | MCG-41 | Deep Structural Foundations Start | 10-Feb-2025 | 10-Feb-2025 |
| 251 | McGough Standards | McGough Tracking | Tracking | MCG-42 | Deep Structural Foundations Complete | 10-Feb-2025 | 10-Feb-2025 |
| 252 | McGough Standards | McGough Tracking | Tracking | MCG-43 | Vertical Transportation Start | 10-Feb-2025 | 10-Feb-2025 |
| 253 | McGough Standards | McGough Tracking | Tracking | MCG-44 | Vertical Transportation Complete | 10-Feb-2025 | 10-Feb-2025 |
| 254 | McGough Standards | McGough Tracking | Tracking | MCG-45 | Site Survey Start | 17-Feb-2025 | 17-Feb-2025 |
| 255 | McGough Standards | McGough Tracking | Tracking | MCG-46 | Utilities Start | 03-Mar-2025 | 03-Mar-2025 |
| 256 | McGough Standards | McGough Tracking | Tracking | MCG-47 | Utilities Start | 03-Mar-2025 | 03-Mar-2025 |
| 257 | McGough Standards | McGough Tracking | Tracking | MCG-48 | Site Survey Finish | 10-Mar-2025 | 10-Mar-2025 |
| 258 | McGough Standards | McGough Tracking | Tracking | MCG-49 | Mobilization Start | 03-Apr-2025 | 03-Apr-2025 |
| 259 | McGough Standards | McGough Tracking | Tracking | MCG-50 | Mobilization Finish | 16-Apr-2025 | 16-Apr-2025 |
| 260 | McGough Standards | McGough Tracking | Tracking | MCG-51 | Utilities Complete | 16-May-2025 | 16-May-2025 |
| 261 | McGough Standards | McGough Tracking | Tracking | MCG-52 | Permitting Finish | 21-May-2025 | 21-May-2025 |
| 262 | McGough Standards | McGough Tracking | Tracking | MCG-53 | Permitting Start | 22-May-2025 | 22-May-2025 |
| 263 | McGough Standards | McGough Tracking | Tracking | MCG-54 | Excavation Start | 23-May-2025 | 23-May-2025 |
| 264 | McGough Standards | McGough Tracking | Tracking | MCG-55 | Subcontractor Procurement Finish | 27-May-2025 | 27-May-2025 |
| 265 | McGough Standards | McGough Tracking | Tracking | MCG-56 | Structural Foundations Start | 18-Jul-2025 | 18-Jul-2025 |
| 266 | McGough Standards | McGough Tracking | Tracking | MCG-57 | Underground Structures Start Rough In | 21-Jul-2025 | 21-Jul-2025 |
| 267 | McGough Standards | McGough Tracking | Tracking | MCG-58 | Excavation Complete | 28-Jul-2025 | 28-Jul-2025 |
| 268 | McGough Standards | McGough Tracking | Tracking | MCG-59 | Structural Foundations Complete | 12-Sep-2025 | 12-Sep-2025 |
| 269 | McGough Standards | McGough Tracking | Tracking | MCG-60 | Above Grade Structures Start | 15-Sep-2025 | 15-Sep-2025 |
| 270 | McGough Standards | McGough Tracking | Tracking | MCG-61 | Building Temporarily Enclosed | 24-Oct-2025 | 24-Oct-2025 |
| 271 | McGough Standards | McGough Tracking | Tracking | MCG-62 | Building Envelope Start | 17-Nov-2025 | 17-Nov-2025 |
| 272 | McGough Standards | McGough Tracking | Tracking | MCG-63 | Masonry Start | 17-Dec-2025 | 17-Dec-2025 |
| 273 | McGough Standards | McGough Tracking | Tracking | MCG-64 | Above Grade Structures Complete | 07-Jan-2026 | 07-Jan-2026 |
| 274 | McGough Standards | McGough Tracking | Tracking | MCG-65 | Material Purchase Finish | 16-Jan-2026 | 16-Jan-2026 |
| 275 | McGough Standards | McGough Tracking | Tracking | MCG-66 | Building Envelope Complete | 01-Apr-2026 | 01-Apr-2026 |
| 276 | McGough Standards | McGough Tracking | Tracking | MCG-67 | Masonry Complete | 09-Apr-2026 | 09-Apr-2026 |
| 277 | McGough Standards | McGough Tracking | Tracking | MCG-68 | Rough-In Start | 17-Apr-2026 | 17-Apr-2026 |
| 278 | McGough Standards | McGough Tracking | Tracking | MCG-69 | Underground Structures Complete Rough In | 24-Apr-2026 | 24-Apr-2026 |
| 279 | McGough Standards | McGough Tracking | Tracking | MCG-70 | Finishes Start | 08-Jul-2026 | 08-Jul-2026 |
| 280 | McGough Standards | McGough Tracking | Tracking | MCG-71 | Rough-In Complete | 27-Jul-2026 | 27-Jul-2026 |

| entry | phase | location | trade | activity_code | activity_name | start | finish |
| --- | --- | --- | --- | --- | --- | --- | --- |
| 281 | McGough Standards | McGough Tracking | Tracking | MCG-72 | Commissioning Start | 07-Oct-2026 | 07-Oct-2026 |
| 282 | McGough Standards | McGough Tracking | Tracking | MCG-73 | Finishes Complete | 04-Nov-2026 | 04-Nov-2026 |
| 283 | McGough Standards | McGough Tracking | Tracking | MCG-74 | Testing Complete | 17-Nov-2026 | 17-Nov-2026 |
| 284 | McGough Standards | McGough Tracking | Tracking | MCG-75 | Building Water Testing | 18-Nov-2026 | 18-Nov-2026 |
| 285 | McGough Standards | McGough Tracking | Tracking | MCG-76 | Testing Start | 20-Nov-2026 | 20-Nov-2026 |
| 286 | McGough Standards | McGough Tracking | Tracking | MCG-77 | Equipment Startup | 20-Nov-2026 | 20-Nov-2026 |
| 287 | McGough Standards | McGough Tracking | Tracking | MCG-78 | Sitework(Land/Hardscape) Start | 30-Nov-2026 | 30-Nov-2026 |
| 288 | McGough Standards | McGough Tracking | Tracking | MCG-79 | Sitework(Land/Hardscape) Complete | 18-Dec-2026 | 18-Dec-2026 |
| 289 | McGough Standards | McGough Tracking | Tracking | MCG-80 | Commissioning Complete | 03-Mar-2027 | 03-Mar-2027 |
