| parent_id | id | name | duration | start | finish | total_float | activities |
| --- | --- | --- | --- | --- | --- | --- | --- |
| 1 | SWA GUB DEN | SWA GUB DEN | 601d | 17-Feb-23 | 16-Jun-25 | 0d |  |
| 2 | GUB | GUB | 601d | 17-Feb-23 | 16-Jun-25 | 0d |  |
| 3 | Summary | Summary | 533d | 08-May-23 | 16-Jun-25 | 0d | Summary SUM-DUR-B Summary - Construction (Calendar Days) 680d 08-May-23 11-Apr-25 -43d, Summary G-MIL-1010 *Milestone: Construction Substantial Completion (68 0 Calendar Days from Mobilization) 0d 11-Apr-25 -31d, Summary G-SUM-DUR-B10 Summary - Construction (Work Days) 472d 08-May-23 11-Apr-25 -31d, Summary G-CON-6870 *Milestone: Beneficial Occupancy 0d 02-May-25 30d, Summary G-CON-6880 *Milestone: Final Completion 0d 16-Jun-25 0d |
| 4 | Milestones | Milestones | 275d | 23-Oct-23 | 20-Nov-24 | 20d | Milestones G-MIL-2000 *Milestone: Building Pad Certified Complete / Ready for Drilled Piers 0d 23-Oct-23 -14d, Milestones G-MIL-3010 *Milestone: Drilled Pier Start 0d 24-Oct-23 -25d, Milestones G-MIL-3020 *Milestone: Grade Beam Start 0d 16-Nov-23 -30d, Milestones G-MIL-3030 *Milestone: SOG Start 0d 19-Dec-23 -24d, Milestones G-MIL-3040 *Milestone: Tilt Wall Start 0d 23-Jan-24 -25d, Milestones G-MIL-2020 *Milestone: Tilt Complete (Last Panel Erection) 0d 10-May-24 -25d, Milestones G-MIL-3050 *Milestone: Structural Steel Start 0d 15-May-24 -27d, Milestones G-MIL-2040 *Milestone: Steel Complete 0d 04-Jun-24 -5d, Milestones G-MIL-3060 *Milestone: Interior Fit-Out Start 0d 17-Jun-24 -1d, Milestones G-MIL-2030 *Milestone: Building Dry-In 0d 27-Aug-24 4d, Milestones G-MIL-2010 *Milestone: SOGs Complete 0d 03-Sep-24 -6d, Milestones G-MIL-2060 *Milestone: Permanent Power Established 0d 20-Nov-24 20d |
| 5 | Preconstruction & Design | Preconstruction & Design | 463d | 17-Feb-23 | 27-Nov-24 | 21d |  |
| 6 | Design | Design | 395d | 02-May-23 | 27-Nov-24 | 21d | Design G-PRECN-1180 Ghafari - Design - 100% (After Permit Review) 10d 09-Oct-23 20-Oct-23 12d |
| 7 | FRAGNET 02 - Drawing Release 07 & 16 | FRAGNET 02 - Drawing Release 07 & 16 | 26d | 22-Sep-23 | 30-Oct-23 | 195d | FRAGNET 02 - Drawing Release 07 & 16 G-FRG-02-1020 Owner Review and Approval - DR 07 & 16 15d 22-Sep-23 26-Sep-23 209d, FRAGNET 02 - Drawing Release 07 & 16 G-FRG-02-1030 Additional Site Storm Drain - DR 07 & 16 10d 17-Oct-23 30-Oct-23 195d |
| 8 | FRAGNET 05 - Drawing Release 11 | FRAGNET 05 - Drawing Release 11 | 313d | 04-May-23 | 02-Aug-24 | -14d | FRAGNET 05 - Drawing Release 11 G-FRG-05-1010 McCarthy Develop Pricing - DR 11 20d 04-May-23 28-Sep-23 160d, FRAGNET 05 - Drawing Release 11 G-FRG-05-1020 Owner Review and Approval - DR 11 15d 29-Sep-23 19-Oct-23 160d, FRAGNET 05 - Drawing Release 11 G-FRG-05-1030 Additional Electrical Overhead Conduit - DR 11 5d 09-Jul-24 15-Jul-24 -21d, FRAGNET 05 - Drawing Release 11 G-FRG-05-1040 Additional Electrical In-Wall Conduit - DR 11 5d 29-Jul-24 02-Aug-24 -14d |
| 9 | FRAGNET 04 - Drawing Release 10 | FRAGNET 04 - Drawing Release 10 | 113d | 02-May-23 | 19-Oct-23 | -5d | FRAGNET 04 - Drawing Release 10 G-FRG-04-1010 McCarthy Develop Pricing - DR 10 20d 02-May-23 28-Sep-23 -5d, FRAGNET 04 - Drawing Release 10 G-FRG-04-1020 Owner Review and Approval - DR 10 15d 29-Sep-23 19-Oct-23 -5d |
| 10 | FRAGNET 06 - Drawing Release 12 | FRAGNET 06 - Drawing Release 12 | 393d | 15-May-23 | 27-Nov-24 | 21d | FRAGNET 06 - Drawing Release 12 G-FRG-06-1010 McCarthy Develop Pricing - DR 12 20d 15-May-23 03-Oct-23 -10d, FRAGNET 06 - Drawing Release 12 G-FRG-06-1020 Owner Review and Approval - DR 12 15d 04-Oct-23 24-Oct-23 -10d, FRAGNET 06 - Drawing Release 12 G-FRG-06-1030 Additional Tilt Panel Shop Drawings - DR 12 15d 25-Oct-23 14-Nov-23 -10d, FRAGNET 06 - Drawing Release 12 G-FRG-06-1040 Additional Tilt Panel Embeds - DR 12 2d 23-Feb-24 26-Feb-24 8d, FRAGNET 06 - Drawing Release 12 G-FRG-06-1050 Additional Steel Erection - DR 12 2d 22-May-24 23-May-24 -29d, FRAGNET 06 - Drawing Release 12 G-FRG-06-1080 Additional Framing in Adim / Entry - DR 12 3d 29-Jul-24 31-Jul-24 -23d, FRAGNET 06 - Drawing Release 12 G-FRG-06-1060 Additional Time for Exterior Doors - DR 12 2d 18-Sep-24 19-Sep-24 35d, FRAGNET 06 - Drawing Release 12 G-FRG-06-1070 Additional Time for Stair Erection - DR 12 2d 26-Nov-24 27-Nov-24 21d |
