Schedule from MS Project XML, 2023-09-28 to 2025-05-05, A marks actual dates.

## Calendars

- Standard: Mon-Fri 08:00-12:00, 13:00-17:00; Sat-Sun off.

## Resources

| Resource |
| --- |
| Jignesh Parikh |
| David Neufeld |
| Francois Allaire |
| Rainer Neu |
| Jeremy Belbek |
| Brian Wimmer |
| Thomas Grimm |
| Andy Poirier |
| Steve Pauls |
| Anita Hartman |
| Karen Van Riesen |
| Devender Singh |
| Ailyn Sambrano |
| Colton Short |
| Kevin Farr-Jones |
| Fabian Gracia |
| Jhun Piala |
| Steve Ulrich |
| Andrei Baractari |
| Gheorghi Baractari |
| Jason Zwilling |
| Kieth Yung |
| Dean Lucier |
| Jennifer Friesen |
| Jemma Mendoza |
| Matilda Blackburn |

## Schedule

| ID | WBS | Task | Type | Duration | Start | Finish | Complete | Baseline start | Baseline finish | Baseline duration | Resources | Work | Actual work |
| --- | --- | --- | --- | --- | --- | --- | --- | --- | --- | --- | --- | --- | --- |
| 1 | 1 | **3.0, 4.0. 5.0 pre, during and post construction total job** |  | 409d | 2023-09-28 | 2025-05-05 |  | 2023-09-28 | 2025-05-09 | 413d |  |  |  |
| 2 | 2 | **3.0 Pre construction and mobilization** |  | 60d | 2023-09-28 | 2023-12-20 |  | 2023-09-28 | 2023-12-20 | 60d |  |  |  |
| 3 | 2.1 | Assign Permits check list | manual | 60d | 2023-09-28 A | 2023-12-20 | 100% | 2023-09-28 | 2023-12-20 | 60d |  | 480h | 480h |
| 4 | 2.2 | Assign Health and Safety checklist | manual | 60d | 2023-09-28 A | 2023-12-20 | 100% | 2023-09-28 | 2023-12-20 | 60d | Jignesh Parikh | 480h | 480h |
| 5 | 2.3 | Assign Mobilization check list | manual | 60d | 2023-09-28 A | 2023-12-20 | 100% | 2023-09-28 | 2023-12-20 | 60d | Jignesh Parikh | 480h | 480h |
| 6 | 2.4 | Assign Equipment & Tools check list | manual | 60d | 2023-09-28 A | 2023-12-20 | 100% | 2023-09-28 | 2023-12-20 | 60d | Jignesh Parikh | 480h | 480h |
| 7 | 2.5 | Assign Safety Equipment and Materials checklist | manual | 60d | 2023-09-28 A | 2023-12-20 | 100% | 2023-09-28 | 2023-12-20 | 60d | Jignesh Parikh | 480h | 480h |
| 8 | 2.6 | Assign Procurement Plan check list | manual | 60d | 2023-09-28 A | 2023-12-20 | 100% | 2023-09-28 | 2023-12-20 | 60d | Jignesh Parikh | 480h | 480h |
| 9 | 2.7 | Assign Site Services Planning check list | manual | 60d | 2023-09-28 A | 2023-12-20 | 100% | 2023-09-28 | 2023-12-20 | 60d |  | 480h | 480h |
| 10 | 2.8 | Assign Sub Contractor planning checklist | manual | 60d | 2023-09-28 A | 2023-12-20 | 100% | 2023-09-28 | 2023-12-20 | 60d |  | 480h | 480h |
| 11 | 2.9 | Assign Project Team | manual | 60d | 2023-09-28 A | 2023-12-20 | 100% | 2023-09-28 | 2023-12-20 | 60d | Jignesh Parikh; David Neufeld | 480h | 480h |
| 12 | 2.10 | Hold Pre Kick-Off meeting with Engineers and Trades people | manual | 3d | 2023-09-28 A | 2023-10-02 | 100% | 2023-09-28 | 2023-10-02 | 3d | Jignesh Parikh; David Neufeld | 24h | 24h |
| 13 | 2.11 | Assign hollow core ordering checklist | manual | 1d | 2023-09-28 A | 2023-09-28 | 100% | 2023-09-28 | 2023-09-28 | 1d | Jignesh Parikh | 8h | 8h |
| 14 | 2.12 | Organize site team to have training and certificates | manual | 1d | 2023-09-28 A | 2023-09-28 | 100% | 2023-09-28 | 2023-09-28 | 1d |  | 8h | 8h |
| 15 | 2.13 | Order Rebar (30 days before site delivery date required) | manual | 1d | 2023-12-08 A | 2023-12-08 | 100% | 2023-12-08 | 2023-12-08 | 1d | Jignesh Parikh | 8h | 8h |
| 16 | 3 | **4.1 Site Services & Foundation Work** |  | 65d | 2023-12-21 | 2024-03-25 |  | 2023-12-21 | 2024-03-25 | 65d |  |  |  |
| 17 | 4 | **Site Preparation** |  | 9d | 2023-12-21 | 2024-01-05 |  | 2023-12-21 | 2024-01-05 | 9d |  |  |  |
| 18 | 4.1 | 18. Assign site prep check list (First) | manual | 1d | 2023-12-28 A | 2023-12-28 | 100% | 2023-12-28 | 2023-12-28 | 1d | Jignesh Parikh | 8h | 8h |
| 19 | 4.2 | deliver rebar (footings and gradebeam only) | manual | 1d | 2023-12-21 A | 2023-12-21 | 100% | 2023-12-21 | 2023-12-21 | 1d | Jignesh Parikh | 8h | 8h |
| 20 | 4.3 | Order all Anchor bolts | manual | 1d | 2023-12-21 A | 2023-12-21 | 100% | 2023-12-21 | 2023-12-21 | 1d | Jignesh Parikh | 8h | 8h |
| 21 | 4.4 | Schedule locates to be done | manual | 3d | 2023-12-21 A | 2023-12-27 | 100% | 2023-12-21 | 2023-12-27 | 3d | Jignesh Parikh | 24h | 24h |
| 22 | 4.5 | Survey for balcony piles | manual | 2d | 2023-12-21 A | 2023-12-22 | 100% | 2023-12-21 | 2023-12-22 | 2d | Jignesh Parikh | 16h | 16h |
| 23 | 4.6 | Schedule Pile contractor | manual | 1d | 2023-12-21 A | 2023-12-21 | 100% | 2023-12-21 | 2023-12-21 | 1d | Jignesh Parikh | 8h | 8h |
| 24 | 4.7 | Install balcony piles | manual | 1d | 2023-12-25 A | 2023-12-27 | 100% | 2023-12-25 | 2023-12-27 | 1d | Jignesh Parikh | 8h | 8h |
| 25 | 4.8 | Strip site | manual | 4d | 2023-12-29 A | 2024-01-04 | 100% | 2023-12-29 | 2024-01-04 | 4d | Jignesh Parikh | 32h | 32h |
| 26 | 4.9 | Measure corner offsets for excavation | manual | 1d | 2024-01-05 A | 2024-01-05 | 100% | 2024-01-05 | 2024-01-05 | 1d | Jignesh Parikh | 8h | 8h |

Notes:
- 3: ---- Task Notes ---- / 3. Assign Permits check list / ---- Field Notes ---- / 3. Assign Permits check list / ---- Sub Notes ---- / 3. Assign Permits check list
- 24: Are these screw piles? / Why are we installing these before the foundation?

| ID | WBS | Task | Type | Duration | Start | Finish | Predecessors | Complete | Baseline start | Baseline finish | Baseline duration | Resources | Work | Actual work |
| --- | --- | --- | --- | --- | --- | --- | --- | --- | --- | --- | --- | --- | --- | --- |
| 27 | 5 | **Excavation** |  | 9d | 2024-01-08 | 2024-01-18 |  |  | 2024-01-08 | 2024-01-18 | 9d |  |  |  |
| 28 | 5.1 | 28. Assign Pre excavation checklist | manual | 1d | 2024-01-08 A | 2024-01-08 | 26 | 100% | 2024-01-08 | 2024-01-08 | 1d | Jignesh Parikh | 8h | 8h |
| 29 | 5.2 | Dig footing and parkade foot print | manual | 7d | 2024-01-08 A | 2024-01-16 | 26 | 100% | 2024-01-08 | 2024-01-16 | 7d | Jignesh Parikh | 56h | 56h |
| 30 | 5.3 | Survey offsets, and footings | manual | 1d | 2024-01-17 A | 2024-01-17 | 29 | 100% | 2024-01-17 | 2024-01-17 | 1d | Jignesh Parikh | 8h | 8h |
| 31 | 5.4 | Geo Tech Engineer inspection | manual | 1d | 2024-01-18 A | 2024-01-18 | 30 | 100% | 2024-01-18 | 2024-01-18 | 1d | Jignesh Parikh | 8h | 8h |
| 32 | 6 | **Foundation** |  | 30d | 2024-01-19 | 2024-02-29 |  |  | 2024-01-19 | 2024-02-29 | 30d |  |  |  |
| 33 | 6.1 | Form footings | manual | 4d | 2024-01-19 A | 2024-01-24 | 31 | 100% | 2024-01-19 | 2024-01-24 | 4d | Jignesh Parikh | 32h | 32h |
| 34 | 6.2 | Tie footing rebar | manual | 5d | 2024-01-25 A | 2024-01-31 | 33 | 100% | 2024-01-25 | 2024-01-31 | 5d | Jignesh Parikh | 40h | 40h |
| 35 | 6.3 | Rebar Inspection Structural Engineer | manual | 1d | 2024-02-01 A | 2024-02-01 | 34 | 100% | 2024-02-01 | 2024-02-01 | 1d | Jignesh Parikh | 8h | 8h |
| 36 | 6.4 | Assign pre-pour checklist | manual | 1d | 2024-02-02 A | 2024-02-02 | 35 | 100% | 2024-02-02 | 2024-02-02 | 1d | Jignesh Parikh | 8h | 8h |
| 37 | 6.5 | Pour footings | manual | 1d | 2024-02-05 A | 2024-02-05 | 36 | 100% | 2024-02-05 | 2024-02-05 | 1d | Jignesh Parikh | 8h | 8h |
| 38 | 6.6 | Form grade beam | manual | 7d | 2024-02-06 A | 2024-02-14 | 37 | 100% | 2024-02-06 | 2024-02-14 | 7d | Jignesh Parikh | 56h | 56h |
| 39 | 6.7 | Build templates for Anchor bolts | manual | 1d | 2024-02-15 A | 2024-02-15 | 38 | 100% | 2024-02-15 | 2024-02-15 | 1d | Jignesh Parikh | 8h | 8h |
| 40 | 6.8 | Tie Grade beam rebar | manual | 7d | 2024-02-16 A | 2024-02-26 | 39 | 100% | 2024-02-16 | 2024-02-26 | 7d | Jignesh Parikh | 56h | 56h |
| 41 | 6.9 | Ensure Sleeves for electrical are run in the grade beam prior to pouring | manual | 1d | 2024-02-06 A | 2024-02-06 | 37 | 100% | 2024-02-06 | 2024-02-06 | 1d | Jignesh Parikh | 8h | 8h |
| 42 | 6.10 | Assign pre concrete pour checklist | manual | 1d | 2024-02-27 A | 2024-02-27 | 40 | 100% | 2024-02-27 | 2024-02-27 | 1d | Jignesh Parikh | 8h | 8h |
| 43 | 6.11 | Rebar inspection Structural Engineer | manual | 1d | 2024-02-28 A | 2024-02-28 | 42 | 100% | 2024-02-28 | 2024-02-28 | 1d | Jignesh Parikh | 8h | 8h |
| 44 | 6.12 | Pour grade beam | manual | 1d | 2024-02-29 A | 2024-02-29 | 43 | 100% | 2024-02-29 | 2024-02-29 | 1d | Jignesh Parikh | 8h | 8h |
| 45 | 7 | **Back fill foundation** |  | 10d | 2024-03-01 | 2024-03-14 |  |  | 2024-03-01 | 2024-03-14 | 10d |  |  |  |
| 46 | 7.1 | Assign pre back fill check list | manual | 1d | 2024-03-01 A | 2024-03-01 | 44 | 100% | 2024-03-01 | 2024-03-01 | 1d | Jignesh Parikh | 8h | 8h |
| 47 | 7.2 | Install underground insulation | manual | 2d | 2024-03-04 A | 2024-03-05 | 46 | 100% | 2024-03-04 | 2024-03-05 | 2d | Francois Allaire; Rainer Neu | 16h | 16h |
| 48 | 7.3 | Back fill exterior grade beam | manual | 2d | 2024-03-06 A | 2024-03-07 | 47 | 100% | 2024-03-06 | 2024-03-07 | 2d |  | 16h | 16h |
| 49 | 7.4 | Back fill interior parkade | manual | 5d | 2024-03-08 A | 2024-03-14 | 48 | 100% | 2024-03-08 | 2024-03-14 | 5d | Francois Allaire | 40h | 40h |
| 50 | 8 | **Site services W/S/S install** |  | 7d | 2024-03-15 | 2024-03-25 |  |  | 2024-03-15 | 2024-03-25 | 7d |  |  |  |
| 51 | 8.1 | Assign water and sewer and storm checklist | manual | 1d | 2024-03-15 A | 2024-03-15 | 49 | 100% | 2024-03-15 | 2024-03-15 | 1d |  | 8h | 8h |
| 52 | 8.2 | Install water and sewer | manual | 5d | 2024-03-18 A | 2024-03-22 | 51 | 100% | 2024-03-18 | 2024-03-22 | 5d |  | 40h | 40h |
| 53 | 8.3 | Assign water and sewer commissioning checklist | manual | 1d | 2024-03-25 A | 2024-03-25 | 52 | 100% | 2024-03-25 | 2024-03-25 | 1d |  | 8h | 8h |
| 54 | 8.4 | Commision Water/sewer/storm | manual | 1d | 2024-03-25 A | 2024-03-25 | 52 | 100% | 2024-03-25 | 2024-03-25 | 1d |  | 8h | 8h |

| ID | WBS | Task | Type | Duration | Start | Finish | Predecessors | Complete | Baseline start | Baseline finish | Baseline duration | Resources | Work | Actual work |
| --- | --- | --- | --- | --- | --- | --- | --- | --- | --- | --- | --- | --- | --- | --- |
| 55 | 9 | **Strucutral Steel** |  | 5d | 2024-03-15 | 2024-03-21 |  |  | 2024-03-15 | 2024-03-20 | 4d |  |  |  |
| 56 | 9.1 | Assign structural steel checklist | manual | 1d | 2024-03-15 A | 2024-03-15 | 49 | 100% | 2024-03-15 | 2024-03-15 | 1d | Francois Allaire; Jignesh Parikh | 8h | 8h |
| 57 | 9.2 | Structural steel delivered and sorted onsite | manual | 1d | 2024-03-18 A | 2024-03-18 | 56 | 100% | 2024-03-18 | 2024-03-18 | 1d | Francois Allaire; Jeremy Belbek | 8h | 8h |
| 58 | 9.3 | Structural steel erection | manual | 2d | 2024-03-20 A | 2024-03-21 | 57 | 100% | 2024-03-19 | 2024-03-20 | 2d | Jeremy Belbek | 16h | 16h |
| 59 | 10 | **4.2 Framing** |  | 186d | 2024-04-11 | 2025-01-03 |  |  | 2024-03-21 | 2024-07-16 | 83d |  |  |  |
| 60 | 11 | **Rough in parkade slab** |  | 11d | 2024-06-12 | 2024-06-26 |  |  | 2024-03-21 | 2024-04-03 | 10d |  |  |  |
| 61 | 11.1 | Mechanical rough in in slab | manual | 5d | 2024-06-12 A | 2024-06-18 | 83FS+10d | 100% | 2024-03-21 | 2024-03-27 | 5d | Brian Wimmer | 40h | 40h |
| 62 | 11.2 | Electrical rough in in slab | manual | 5d | 2024-06-12 A | 2024-06-18 | 83FS+10d | 100% | 2024-03-21 | 2024-03-27 | 5d |  | 40h | 40h |
| 63 | 11.3 | Deliver pakade slab rebar | manual | 1d | 2024-06-19 A | 2024-06-19 | 62 | 100% | 2024-03-21 | 2024-03-21 | 1d |  | 8h | 8h |
| 64 | 11.4 | Back fill and level parkade | manual | 5d | 2024-06-20 A | 2024-06-26 | 63 | 100% | 2024-03-28 | 2024-04-03 | 5d |  | 40h | 40h |
| 65 | 12 | **Pour parakde slab** |  | 9d | 2024-06-27 | 2024-07-10 |  |  | 2024-04-04 | 2024-04-17 | 10d |  |  |  |
| 66 | 12.1 | Assign parkade slab rough in checklist | manual | 1d | 2024-06-27 A | 2024-06-27 | 64 | 100% | 2024-04-04 | 2024-04-04 | 1d |  | 8h | 8h |
| 67 | 12.2 | Radon rock install | manual | 1d | 2024-06-28 A | 2024-07-01 | 66 | 100% | 2024-04-05 | 2024-04-08 | 2d |  | 8h | 8h |
| 68 | 12.3 | Install poly | manual | 1d | 2024-07-02 A | 2024-07-02 | 67 | 100% | 2024-04-09 | 2024-04-09 | 1d |  | 8h | 8h |
| 69 | 12.4 | Tie parkade rebar | manual | 3d | 2024-07-03 A | 2024-07-05 | 68 | 100% | 2024-04-10 | 2024-04-12 | 3d |  | 24h | 24h |
| 70 | 12.5 | Assign pre concrete pour checklist | manual | 1d | 2024-07-08 A | 2024-07-08 | 69 | 100% | 2024-04-15 | 2024-04-15 | 1d |  | 8h | 8h |
| 71 | 12.6 | Pour parkade floor | manual | 2d | 2024-07-09 A | 2024-07-10 | 70 | 100% | 2024-04-16 | 2024-04-17 | 2d |  | 16h | 16h |
| 72 | 13 | **Framing parkade** |  | 4d | 2024-04-11 | 2024-04-16 |  |  | 2024-03-21 | 2024-03-28 | 6d |  |  |  |
| 73 | 13.1 | Frame parkade level | manual | 3d | 2024-04-11 A | 2024-04-15 | 58 | 100% | 2024-03-21 | 2024-03-27 | 5d | Rainer Neu | 24h | 24h |
| 74 | 13.2 | Assign framing checklist | manual | 1d | 2024-04-16 A | 2024-04-16 | 73 | 100% | 2024-03-28 | 2024-03-28 | 1d | Jignesh Parikh | 8h | 8h |
| 75 | 14 | **Hollowcore 2nd floor** |  | 45d | 2024-04-16 | 2024-06-17 |  |  | 2024-03-28 | 2024-04-02 | 4d |  |  |  |
| 76 | 14.1 | Install hollowcore 2nd floor , Install backer rod & Grout 2nd floor | manual | 3d | 2024-04-16 A | 2024-04-18 | 73 | 100% | 2024-03-28 | 2024-04-01 | 3d | Francois Allaire; Rainer Neu; Thomas Grimm | 24h | 24h |
| 77 | 14.2 | Assign hollow core erection checklist | manual | 1d | 2024-04-19 A | 2024-04-19 | 76 | 100% | 2024-03-28 | 2024-03-28 | 1d | Francois Allaire; Jignesh Parikh | 8h | 8h |
| 78 | 14.3 | Paint underside of ceiling in parkade | manual | 1d | 2024-06-17 A | 2024-06-17 | 76FS+7d | 100% | 2024-04-02 | 2024-04-02 | 1d | Andy Poirier | 8h | 8h |

Notes:
- 58: ---- Field Notes ---- / Started on schedule but missed the west beam; had to return on March 28 to finish. Snowstorm delayed the framer so this mishap did not affect other trades. - 10/04/2024 20:07:37 by David Neufeld
- 73: ---- Field Notes ---- / Framed walls were delivered on April 9 with installation beginning on April 10th. / Josh altered the 4th floor from 7 to 8 units and the Framed walls were already pre-built leaving framer to build additional walls on site. - 10/04/2024 20:14:41 by David Neufeld

| ID | WBS | Task | Type | Duration | Start | Finish | Predecessors | Complete | Baseline start | Baseline finish | Baseline duration | Resources | Work | Actual work |
| --- | --- | --- | --- | --- | --- | --- | --- | --- | --- | --- | --- | --- | --- | --- |
| 79 | 15 | **Framing 2nd floor** |  | 18d | 2024-04-19 | 2024-05-14 |  |  | 2024-04-02 | 2024-04-10 | 7d |  |  |  |
| 80 | 15.1 | Frame 2nd floor | manual | 17d | 2024-04-19 A | 2024-05-13 | 76 | 100% | 2024-04-02 | 2024-04-10 | 7d | Rainer Neu | 136h | 136h |
| 81 | 15.2 | Assign framing check list | manual | 1d | 2024-05-14 A | 2024-05-14 | 80 | 100% | 2024-04-02 | 2024-04-02 | 1d | Francois Allaire; Jignesh Parikh | 8h | 8h |
| 82 | 16 | **Hollowcore 3rd floor** |  | 4d | 2024-05-23 | 2024-05-28 |  |  | 2024-04-11 | 2024-04-15 | 3d |  |  |  |
| 83 | 16.1 | Install hollow core 3rd floor, Install backer rod & grout | manual | 4d | 2024-05-23 A | 2024-05-28 | 80 | 100% | 2024-04-11 | 2024-04-15 | 3d | Rainer Neu | 32h | 32h |
| 84 | 16.2 | Assign hollow core erection checklist | manual | 1d | 2024-05-27 A | 2024-05-27 |  | 100% | 2024-04-11 | 2024-04-11 | 1d | Francois Allaire; Jignesh Parikh | 8h | 8h |
| 85 | 17 | **Framing 3rd floor** |  | 43d | 2024-05-28 | 2024-07-26 |  |  | 2024-04-16 | 2024-06-12 | 42d |  |  |  |
| 86 | 17.1 | Frame 3rd floor | manual | 9d | 2024-05-28 A | 2024-06-07 | 84 | 100% | 2024-04-16 | 2024-04-24 | 7d | Rainer Neu | 72h | 72h |
| 87 | 17.2 | Assign framing checklist | manual | 1d | 2024-06-10 A | 2024-06-10 | 86 | 100% | 2024-04-25 | 2024-04-25 | 1d | Francois Allaire; Jignesh Parikh | 8h | 8h |
| 88 | 17.3 | Layout suites on 2nd floor | manual | 3d | 2024-07-18 A | 2024-07-22 | 95FS+7d | 100% | 2024-04-16 | 2024-04-22 | 5d | Steve Pauls | 24h | 24h |
| 89 | 17.4 | Core floors begin at 2nd | manual | 3d | 2024-07-24 A | 2024-07-26 | 88FS+1d | 100% | 2024-05-30 | 2024-06-12 | 10d | Brian Wimmer | 24h | 24h |
| 90 | 18 | **Hollowcore 4th floor** |  | 3d | 2024-06-11 | 2024-06-13 |  |  | 2024-04-25 | 2024-04-29 | 3d |  |  |  |
| 91 | 18.1 | Install hollow core 4th floor and grout | manual | 2d | 2024-06-11 A | 2024-06-12 | 87 | 100% | 2024-04-25 | 2024-04-29 | 3d | Francois Allaire; Rainer Neu; Thomas Grimm | 16h | 16h |
| 92 | 18.2 | Assign hollow core checklist | manual | 1d | 2024-06-13 A | 2024-06-13 | 91 | 100% | 2024-04-25 | 2024-04-25 | 1d | Francois Allaire; Jignesh Parikh | 8h | 8h |
| 93 | 19 | **Framing 4th floor** |  | 30d | 2024-06-19 | 2024-07-31 |  |  | 2024-04-30 | 2024-05-09 | 8d |  |  |  |
| 94 | 19.1 | Frame 4th floor | manual | 12d | 2024-06-19 A | 2024-07-05 | 92FS+3d | 100% | 2024-04-30 | 2024-05-08 | 7d | Rainer Neu | 96h | 96h |
| 95 | 19.2 | Assign framing checklist | manual | 1d | 2024-07-08 A | 2024-07-08 | 94 | 100% | 2024-05-09 | 2024-05-09 | 1d | Francois Allaire; Jignesh Parikh | 8h | 8h |
| 96 | 19.3 | Layout suites on 3rd floor | manual | 4d | 2024-07-23 A | 2024-07-26 | 88 | 100% | 2024-04-30 | 2024-05-06 | 5d | Steve Pauls | 32h | 32h |
| 97 | 19.4 | Core floor beings at 3rd floor | manual | 3d | 2024-07-29 A | 2024-07-31 | 88SS, 89 | 100% |  |  |  | Brian Wimmer | 24h | 24h |
| 98 | 20 | **Roof trusses install** |  | 31d | 2024-07-09 | 2024-08-20 |  |  | 2024-05-09 | 2024-05-29 | 15d |  |  |  |
| 99 | 20.1 | Install roof trusses and sheeting and towers | manual | 21d | 2024-07-09 A | 2024-08-06 | 95 | 100% | 2024-05-09 | 2024-05-22 | 10d | Rainer Neu | 168h | 168h |
| 100 | 20.2 | Assign roof trusses framing checklist | manual | 1d | 2024-08-07 A | 2024-08-07 | 99 | 100% | 2024-05-23 | 2024-05-23 | 1d | Francois Allaire; Jignesh Parikh | 8h | 8h |
| 101 | 20.3 | Call for structural inspection | manual | 1d | 2024-08-20 A | 2024-08-20 | 100FS+8d | 100% | 2024-05-23 | 2024-05-23 | 1d | Jignesh Parikh | 8h | 8h |
| 102 | 20.4 | Layout suites 4th floor | manual | 4d | 2024-07-29 A | 2024-08-01 | 96 | 100% | 2024-05-23 | 2024-05-29 | 5d | Steve Pauls | 32h | 32h |
| 103 | 20.5 | Core floor beings at 4th floor | manual | 2d | 2024-08-01 A | 2024-08-02 | 102SS+3d | 100% |  |  |  | Brian Wimmer | 16h | 16h |

| ID | WBS | Task | Type | Duration | Start | Finish | Predecessors | Complete | Remaining | Baseline start | Baseline finish | Baseline duration | Resources | Work | Actual work |
| --- | --- | --- | --- | --- | --- | --- | --- | --- | --- | --- | --- | --- | --- | --- | --- |
| 104 | 21 | **install windows and doors** |  | 101d | 2024-07-08 | 2024-11-26 |  |  |  | 2024-06-13 | 2024-07-05 | 16d |  |  |  |
| 105 | 21.1 | Deliver tubs & showers to suites / checklist | manual | 2d | 2024-07-17 A | 2024-07-18 | 94FS+7d | 100% |  | 2024-06-13 | 2024-06-14 | 2d | Anita Hartman | 16h | 16h |
| 106 | 21.2 | Assign window & door installation checklist | manual | 1d | 2024-07-08 A | 2024-07-08 | 94 | 100% |  | 2024-07-05 | 2024-07-05 | 1d | Francois Allaire; Jignesh Parikh | 8h | 8h |
| 107 | 21.3 | Install windows & doors all floors | manual | 9d | 2024-08-01 A | 2024-08-13 | 99FF+5d | 100% |  | 2024-06-17 | 2024-07-04 | 13d | Francois Allaire; Rainer Neu | 72h | 72h |
| 108 | 21.4 | Install stairs | manual | 1d | 2024-07-30 A | 2024-07-30 | 91FF+1d | 100% |  | 2024-07-05 | 2024-07-05 | 1d | Rainer Neu | 8h | 8h |
| 109 | 21.5 | Call for envelope reviewer inspection | manual | 1d | 2024-11-26 A | 2024-11-26 | 107, 112, 114 |  | 1d | 2024-07-05 | 2024-07-05 | 1d | Jignesh Parikh | 8h |  |
| 110 | 22 | **Roofing and water proofing** |  | 13d | 2024-08-07 | 2024-08-23 |  |  |  | 2024-05-23 | 2024-06-12 | 15d |  |  |  |
| 111 | 22.1 | Assign roofing and water proofing checklist | manual | 1d | 2024-08-07 A | 2024-08-07 | 100SS | 100% |  | 2024-06-12 | 2024-06-12 | 1d | Francois Allaire; Jignesh Parikh | 8h | 8h |
| 112 | 22.2 | Install roofing and water proofing | manual | 10d | 2024-08-12 A | 2024-08-23 | 111SS+3d | 100% |  | 2024-05-23 | 2024-06-11 | 14d | Karen Van Riesen | 80h | 80h |
| 113 | 23 | **Soffit & Tower Siding** |  | 84d | 2024-09-03 | 2025-01-03 |  |  |  | 2024-06-12 | 2024-07-02 | 14d |  |  |  |
| 114 | 23.1 | Building paper the whole building | manual | 59d | 2024-09-03 A | 2024-11-25 | 112FS+6d | 75% | 14.75d | 2024-06-12 | 2024-06-18 | 5d | Devender Singh | 472h | 354h |
| 115 | 23.2 | Install fascia and soffit 4th floor | manual | 7d | 2024-11-15 A | 2024-11-25 | 114FF | 90% | 0.7d | 2024-06-12 | 2024-06-14 | 3d | Devender Singh | 56h | 50.4h |
| 116 | 23.3 | Assign tower siding checklist | manual | 1d | 2024-11-26 A | 2024-11-26 | 114, 115 |  | 1d | 2024-07-02 | 2024-07-02 | 1d | Francois Allaire; Jignesh Parikh | 8h |  |
| 117 | 23.4 | Siding towers | manual | 14d | 2024-11-27 A | 2024-12-16 | 116 |  | 14d | 2024-06-12 | 2024-07-01 | 13d | Devender Singh | 112h |  |
| 118 | 23.5 | Delivery of Elevator & Install | manual | 55d | 2024-10-14 A | 2025-01-03 | 100FS+7d, 112SS+45d | 25% | 41.25d | 2024-07-01 | 2024-07-01 |  | Ailyn Sambrano | 440h | 110h |
| 119 | 24 | **Exterior concrete works** |  | 83d | 2024-08-26 | 2024-12-19 |  |  |  | 2024-06-12 | 2024-07-16 | 24d |  |  |  |
| 120 | 24.1 | Excavate areas | manual | 2d | 2024-08-26 A | 2024-08-27 | 112 | 100% |  | 2024-06-12 | 2024-06-13 | 2d |  | 16h | 16h |
| 121 | 24.2 | Form exterior pads | manual | 5d | 2024-08-28 A | 2024-09-03 | 120 | 100% |  | 2024-06-14 | 2024-06-20 | 5d |  | 40h | 40h |
| 122 | 24.3 | Tie rebar exterior pads | manual | 3d | 2024-09-04 A | 2024-09-06 | 121 | 100% |  | 2024-06-21 | 2024-06-25 | 3d |  | 24h | 24h |
| 123 | 24.4 | Assign conrete pour checklist | manual | 1d | 2024-09-09 A | 2024-09-09 | 122 | 100% |  | 2024-06-26 | 2024-06-26 | 1d |  | 8h | 8h |
| 124 | 24.5 | Pour exterior pads | manual | 1d | 2024-09-10 A | 2024-09-10 | 123 | 100% |  | 2024-06-27 | 2024-06-27 | 1d |  | 8h | 8h |
| 125 | 24.6 | Excatae exterior sidewalks | manual | 59d | 2024-09-11 A | 2024-12-03 | 124 | 70% | 17.7d | 2024-06-28 | 2024-07-04 | 4d | Colton Short | 472h | 330.4h |
| 126 | 24.7 | Form exterior sidewalks | manual | 3d | 2024-12-04 A | 2024-12-06 | 125 | 70% | 0.9d | 2024-07-05 | 2024-07-09 | 3d | Colton Short | 24h | 16.8h |
| 127 | 24.8 | Rebar exterior sidewalks | manual | 3d | 2024-12-09 A | 2024-12-11 | 126 | 70% | 0.9d | 2024-07-10 | 2024-07-12 | 3d | Colton Short | 24h | 16.8h |
| 128 | 24.9 | Assign pre concrete pour checklist | manual | 3d | 2024-12-12 A | 2024-12-16 | 127 | 70% | 0.9d | 2024-07-15 | 2024-07-15 | 1d | Colton Short | 24h | 16.8h |
| 129 | 24.10 | Pour exterior sidewalks | manual | 3d | 2024-12-17 A | 2024-12-19 | 128 | 70% | 0.9d | 2024-07-16 | 2024-07-16 | 1d | Colton Short | 24h | 16.8h |

| ID | WBS | Task | Type | Duration | Start | Finish | Predecessors | Complete | Remaining | Baseline start | Baseline finish | Baseline duration | Resources | Work | Actual work |
| --- | --- | --- | --- | --- | --- | --- | --- | --- | --- | --- | --- | --- | --- | --- | --- |
| 130 | 25 | **4.3 Rough In, Steel Stud Drywall** |  | 119d | 2024-08-05 | 2025-01-23 |  |  |  | 2024-03-28 | 2025-03-19 | 249d |  |  |  |
| 131 | 26 | **Rough in Parkade** |  | 109d | 2024-08-19 | 2025-01-23 |  |  |  | 2024-03-28 | 2024-05-31 | 47d |  |  |  |
| 132 | 26.1 | Frame interior parkade walls | manual | 5d | 2024-08-19 A | 2024-08-23 | 112FF | 100% |  | 2024-04-22 | 2024-04-26 | 5d | Rainer Neu; Steve Pauls | 40h | 40h |
| 133 | 26.2 | Rough in interior walls | manual | 10d | 2024-11-21 A | 2024-12-04 | 132, 227, 228, 229, 230, 232, 234 | 50% | 5d | 2024-04-29 | 2024-05-03 | 5d | Brian Wimmer; Kevin Farr-Jones | 80h | 40h |
| 134 | 26.3 | Rough in exterior walls - parkade and sheds | manual | 15d | 2024-11-18 A | 2024-12-06 | 171, 227, 228, 229, 230, 232, 234 | 50% | 7.5d | 2024-03-28 | 2024-04-03 | 5d | Brian Wimmer; Kevin Farr-Jones | 120h | 60h |
| 135 | 26.4 | Board and prepare electrical/mechanical room | manual | 3d | 2024-12-06 A | 2024-12-10 | 133FS-1d, 134FS-1d |  | 3d | 2024-05-06 | 2024-05-08 | 3d | Steve Pauls | 24h |  |
| 136 | 26.5 | Main service electrical room install | manual | 18d | 2024-11-28 A | 2024-12-26 | 134FS-7d, 135FF+7d |  | 18d | 2024-05-09 | 2024-05-29 | 15d | Kevin Farr-Jones | 144h |  |
| 137 | 26.6 | Main service mechanical room install | manual | 36d | 2024-11-28 A | 2025-01-22 | 134FS-7d, 135FF+7d |  | 36d | 2024-05-09 | 2024-05-29 | 15d | Brian Wimmer | 288h |  |
| 138 | 26.7 | Call for Electrical and Mechanical Inspection | manual | 1d | 2025-01-23 A | 2025-01-23 | 136, 137 |  | 1d |  |  |  | Francois Allaire; Jignesh Parikh; Kevin Farr-Jones | 8h |  |
| 139 | 26.8 | Siding parkade level | manual | 10d | 2024-12-10 A | 2024-12-23 | 174 |  | 10d | 2024-04-05 | 2024-04-18 | 10d | Devender Singh | 80h |  |
| 140 | 26.9 | Assign siding checklist | manual | 0d | 2024-12-24 A | 2024-12-24 | 139 |  |  | 2024-04-19 | 2024-04-19 | 1d | Francois Allaire; Jignesh Parikh |  |  |
| 141 | 26.10 | Poly and insulate parkade exterior walls | manual | 2d | 2024-08-22 A | 2024-08-23 | 112FF | 100% |  | 2024-04-04 | 2024-04-05 | 2d | Fabian Gracia | 16h | 16h |
| 142 | 26.11 | Assign pre board inspection checklist | manual | 1d | 2025-01-22 A | 2025-01-22 | 138FS-2d | 100% |  | 2024-04-04 | 2024-04-04 | 1d | Francois Allaire; Jignesh Parikh | 8h | 8h |
| 143 | 26.12 | Board parkade exterior walls and sheds | manual | 1d | 2024-12-09 A | 2024-12-09 | 134 | 80% | 0.2d | 2024-04-08 | 2024-04-12 | 5d | Steve Pauls | 8h | 6.4h |
| 144 | 26.13 | Assign pre board inspection checklist | manual | 1d | 2025-01-22 A | 2025-01-22 | 142SS | 100% |  | 2024-05-09 | 2024-05-09 | 1d | Francois Allaire; Jignesh Parikh | 8h | 8h |
| 145 | 26.14 | Board Parkade interior walls | manual | 4d | 2024-12-10 A | 2024-12-13 | 143 |  | 4d | 2024-05-10 | 2024-05-16 | 5d | Steve Pauls | 32h |  |
| 146 | 26.15 | Frame and board Parkade beams | manual | 5d | 2024-12-16 A | 2024-12-20 | 143, 145 | 100% |  | 2024-04-15 | 2024-04-19 | 5d | Steve Pauls | 40h | 40h |
| 147 | 26.16 | Tape parkade interior and exterior walls | manual | 7d | 2024-12-13 A | 2024-12-23 | 143FS-1d, 145FS-1d |  | 7d | 2024-05-17 | 2024-05-23 | 5d | Steve Pauls | 56h |  |
| 148 | 26.17 | Assign taping inspection checklist | manual | 1d | 2024-12-23 A | 2024-12-23 | 147FF |  | 1d | 2024-05-24 | 2024-05-24 | 1d | Francois Allaire; Jignesh Parikh | 8h |  |
| 149 | 26.18 | Install metal doors and frames | manual | 6d | 2024-12-24 A | 2025-01-06 | 148 |  | 6d | 2024-05-27 | 2024-05-31 | 5d | Francois Allaire; Jhun Piala | 48h |  |
| 150 | 27 | **Rough in 4th floor ceiling** |  | 46d | 2024-08-05 | 2024-10-07 |  |  |  | 2024-06-13 | 2024-07-29 | 32d |  |  |  |
| 151 | 27.1 | Electrical rough in in ceiling | manual | 7d | 2024-08-26 A | 2024-09-03 | 99, 112 | 100% |  | 2024-06-13 | 2024-06-26 | 10d | Kevin Farr-Jones | 56h | 56h |
| 152 | 27.2 | Mechanical rough in in ceiling | manual | 8d | 2024-08-05 A | 2024-08-14 | 103 | 100% |  | 2024-06-13 | 2024-06-19 | 5d | Brian Wimmer | 64h | 64h |
| 153 | 27.3 | Sprinkler install in attic | manual | 11d | 2024-08-07 A | 2024-08-21 | 99 | 100% |  | 2024-06-13 | 2024-06-26 | 10d | Steve Ulrich | 88h | 88h |
| 154 | 27.4 | Call for Mechanical & Electrical inspection of attic | manual | 1d | 2024-09-04 A | 2024-09-04 | 151, 152, 153 | 100% |  |  |  |  | Jignesh Parikh; Kevin Farr-Jones | 8h | 8h |
| 155 | 27.5 | Poly 4th floor ceiling | manual | 2d | 2024-09-05 A | 2024-09-06 | 151, 152, 153, 154 | 100% |  | 2024-06-27 | 2024-06-28 | 2d | Fabian Gracia | 16h | 16h |
| 156 | 27.6 | Install sound bar 4th floor | manual | 2d | 2024-09-09 A | 2024-09-10 | 155 | 100% |  | 2024-07-01 | 2024-07-03 | 2d | Steve Pauls | 16h | 16h |
| 157 | 27.7 | Install drywall on 4th floor ceiling | manual | 5d | 2024-09-11 A | 2024-09-17 | 156 | 100% |  | 2024-07-04 | 2024-07-10 | 5d | Steve Pauls | 40h | 40h |
| 158 | 27.8 | Blow in attic insulation | manual | 3d | 2024-09-18 A | 2024-09-20 | 157 | 100% |  | 2024-07-11 | 2024-07-12 | 2d | Fabian Gracia | 24h | 24h |
| 159 | 27.9 | Tape 4th floor ceiling | manual | 10d | 2024-09-23 A | 2024-10-04 | 158 |  | 10d | 2024-07-15 | 2024-07-26 | 10d | Steve Pauls | 80h |  |
| 160 | 27.10 | Assign taping inspection checklist | manual | 1d | 2024-10-07 A | 2024-10-07 | 159 |  | 1d | 2024-07-29 | 2024-07-29 | 1d | Francois Allaire; Jignesh Parikh | 8h |  |

| ID | WBS | Task | Type | Duration | Start | Finish | Predecessors | Complete | Remaining | Baseline start | Baseline finish | Baseline duration | Resources | Work | Actual work |
| --- | --- | --- | --- | --- | --- | --- | --- | --- | --- | --- | --- | --- | --- | --- | --- |
| 161 | 28 | **Rough in 2nd floor** |  | 100d | 2024-08-12 | 2025-01-03 |  |  |  | 2024-06-13 | 2024-11-12 | 107d |  |  |  |
| 162 | 28.1 | Steel stud install on 2nd & drywall behind the tubs including fire wall taping if it is a fire wall | manual | 14d | 2024-08-12 A | 2024-08-29 | 88FS+14d | 100% |  | 2024-07-04 | 2024-07-10 | 5d | Steve Ulrich | 112h | 112h |
| 163 | 28.2 | Install pocket foor frame | manual | 5d | 2024-08-28 A | 2024-09-03 | 162SS+12d | 100% |  |  |  |  |  | 40h | 40h |
| 164 | 28.3 | Install tubs and showers | manual | 4d | 2024-08-30 A | 2024-09-04 | 162 | 100% |  | 2024-07-11 | 2024-07-12 | 2d | Francois Allaire | 32h | 32h |
| 165 | 28.4 | Water dams 2nd floor | manual | 5d | 2024-08-19 A | 2024-08-23 | 112FF | 100% |  | 2024-06-27 | 2024-07-03 | 4d | Francois Allaire | 40h | 40h |
| 166 | 28.5 | Rough in exterior walls on 2nd and sheds | manual | 9d | 2024-11-08 A | 2024-11-21 | 151SS | 80% | 1.8d | 2024-06-13 | 2024-06-26 | 10d | Brian Wimmer; Kevin Farr-Jones | 72h | 57.6h |
| 167 | 28.6 | Electrical rough in on 2nd | manual | 10d | 2024-11-08 A | 2024-11-22 | 112, 162SS+10d |  | 10d | 2024-07-11 | 2024-07-24 | 10d | Kevin Farr-Jones | 80h |  |
| 168 | 28.7 | Electrical rough in hallways & stairwells on 2nd | manual | 10d | 2024-11-08 A | 2024-11-22 | 112, 162SS+10d |  | 10d | 2024-09-23 | 2024-10-01 | 7d | Kevin Farr-Jones | 80h |  |
| 169 | 28.8 | Sprinkler rough in on 2nd | manual | 10d | 2024-08-26 A | 2024-09-06 | 153FS+2d, 162SS+10d | 100% |  | 2024-07-11 | 2024-07-24 | 10d | Steve Ulrich | 80h | 80h |
| 170 | 28.9 | Sprinkler rough in corridor & stairwells on 2nd | manual | 10d | 2024-08-26 A | 2024-09-06 | 153FS+2d, 162SS+10d | 100% |  | 2024-10-11 | 2024-10-21 | 7d | Steve Ulrich | 80h | 80h |
| 171 | 28.10 | Mechanical rough in on 2nd | manual | 10d | 2024-11-01 A | 2024-11-15 | 112, 162FS+6d | 80% | 2d | 2024-07-11 | 2024-07-24 | 10d | Brian Wimmer | 80h | 64h |
| 172 | 28.11 | Mechanical rough in hallways & stairwells on 2nd | manual | 10d | 2024-11-01 A | 2024-11-15 | 112, 162FS+6d | 80% | 2d | 2024-10-02 | 2024-10-10 | 7d | Brian Wimmer | 80h | 64h |
| 173 | 28.12 | Call for Mechanical and Electrical inspection | manual | 1d | 2024-11-25 A | 2024-11-25 | 166, 167, 168, 169, 170, 171, 172 |  | 1d |  |  |  | Brian Wimmer; Kevin Farr-Jones; Steve Ulrich | 8h |  |
| 174 | 28.13 | Siding 2nd floor | manual | 12d | 2024-11-22 A | 2024-12-09 | 205 |  | 12d | 2024-07-04 | 2024-07-24 | 15d | Devender Singh | 96h |  |
| 175 | 28.14 | Assign siding checklist | manual | 1d | 2024-12-10 A | 2024-12-10 | 174 |  | 1d | 2024-07-25 | 2024-07-25 | 1d | Francois Allaire; Jignesh Parikh | 8h |  |
| 176 | 28.15 | Poly and insulate on 2nd exterior walls | manual | 4d | 2024-11-25 A | 2024-11-28 | 173FS-1d |  | 4d | 2024-06-27 | 2024-07-01 | 2d | Fabian Gracia | 32h |  |
| 177 | 28.16 | Board upper 16" strips in common area and all suites on 2nd | manual | 4d | 2024-08-30 A | 2024-09-04 | 162 | 100% |  | 2024-07-11 | 2024-07-16 | 4d | Steve Ulrich | 32h | 32h |
| 178 | 28.17 | Fire tape / Fire caulk upper strips on 2nd | manual | 1d | 2024-11-25 A | 2024-11-25 | 166, 167, 168, 169, 170, 171, 172, 177 | 100% |  | 2024-07-17 | 2024-07-17 | 1d |  | 8h | 8h |
| 179 | 28.18 | Frame drops on 2nd | manual | 5d | 2024-11-26 A | 2024-12-02 | 178 | 100% |  | 2024-07-18 | 2024-07-24 | 5d | Steve Pauls | 40h | 40h |
| 180 | 28.19 | Back framing on 2nd | manual | 5d | 2024-08-21 A | 2024-08-27 | 162SS+7d | 100% |  | 2024-07-11 | 2024-07-17 | 5d | Francois Allaire | 40h | 40h |
| 181 | 28.20 | Assign pre board interior walls checklist | manual | 1d | 2024-11-28 A | 2024-11-28 | 176FF |  | 1d | 2024-07-25 | 2024-07-25 | 1d | Francois Allaire; Jignesh Parikh | 8h |  |
| 182 | 28.21 | Board 2nd floor walls | manual | 5d | 2024-11-28 A | 2024-12-04 | 176FS-1d |  | 5d | 2024-07-26 | 2024-08-01 | 5d | Steve Pauls | 40h |  |
| 183 | 28.22 | Assign pre board inspection check list | manual | 1d | 2024-11-28 A | 2024-11-28 | 181SS |  | 1d | 2024-06-27 | 2024-06-27 | 1d | Francois Allaire; Jignesh Parikh | 8h |  |
| 184 | 28.23 | Board exterior walls on 2nd and sheds | manual | 5d | 2024-11-28 A | 2024-12-04 | 176FS-1d |  | 5d | 2024-06-27 | 2024-07-03 | 4d | Steve Ulrich | 40h |  |
| 185 | 28.24 | Tape suites on 2nd | manual | 11d | 2024-12-05 A | 2024-12-19 | 182, 184 |  | 11d | 2024-09-05 | 2024-09-18 | 10d | Steve Pauls | 88h |  |
| 186 | 28.25 | Assign taping inspection checklist for suites | manual | 1d | 2024-12-19 A | 2024-12-19 | 185FF |  | 1d | 2024-09-19 | 2024-09-19 | 1d | Francois Allaire; Jignesh Parikh | 8h |  |
| 187 | 28.26 | Assign Corridor & Stairwell pre board inspection checklist | manual | 1d | 2024-11-28 A | 2024-11-28 | 181SS |  | 1d | 2024-10-22 | 2024-10-22 | 1d | Francois Allaire; Jignesh Parikh | 8h |  |
| 188 | 28.27 | Board 2nd floor hallways and stairwells | manual | 5d | 2024-11-28 A | 2024-12-04 | 176FS-1d |  | 5d | 2024-10-23 | 2024-10-28 | 4d | Steve Pauls | 40h |  |
| 189 | 28.28 | Tape 2nd floor hallways and stair wells | manual | 11d | 2024-12-05 A | 2024-12-19 | 185SS |  | 11d | 2024-10-29 | 2024-11-04 | 5d | Steve Pauls | 88h |  |
| 190 | 28.29 | Assign taping inspection checklist | manual | 1d | 2024-12-19 A | 2024-12-19 | 189FF |  | 1d | 2024-11-05 | 2024-11-05 | 1d | Francois Allaire; Jignesh Parikh | 8h |  |
| 191 | 28.30 | Install suite entry doors and frames and Interior doors, trims and jambs | manual | 6d | 2024-12-23 A | 2025-01-03 | 185FS+1d |  | 6d | 2024-11-06 | 2024-11-12 | 4d | Andrei Baractari; Gheorghi Baractari | 48h |  |

| ID | WBS | Task | Type | Duration | Start | Finish | Predecessors | Complete | Remaining | Baseline start | Baseline finish | Baseline duration | Resources | Work | Actual work |
| --- | --- | --- | --- | --- | --- | --- | --- | --- | --- | --- | --- | --- | --- | --- | --- |
| 192 | 29 | **Rough in 3rd floor** |  | 84d | 2024-08-19 | 2024-12-13 |  |  |  | 2024-07-31 | 2024-11-13 | 75d |  |  |  |
| 193 | 29.1 | Steel stud install on 3rd & drywall behind the tubs including fire wall taping if it is a fire wall | manual | 5d | 2024-08-30 A | 2024-09-05 | 96, 162 | 100% |  | 2024-07-31 | 2024-08-06 | 5d | Steve Pauls | 40h | 40h |
| 194 | 29.2 | Install pocket door frames | manual | 5d | 2024-09-06 A | 2024-09-12 | 163, 164, 193 | 100% |  |  |  |  | Francois Allaire | 40h | 40h |
| 195 | 29.3 | Install tubs and showers | manual | 4d | 2024-09-06 A | 2024-09-11 | 164, 193 | 100% |  | 2024-08-07 | 2024-08-09 | 3d | Francois Allaire | 32h | 32h |
| 196 | 29.4 | Water dams 3rd floor | manual | 5d | 2024-08-19 A | 2024-08-23 | 112FF | 100% |  | 2024-10-16 | 2024-10-22 | 5d | Francois Allaire | 40h | 40h |
| 197 | 29.5 | Rough in exterior walls on 3rd and sheds | manual | 10d | 2024-10-28 A | 2024-11-08 |  | 100% |  | 2024-10-02 | 2024-10-15 | 10d | Brian Wimmer; Kevin Farr-Jones | 80h | 80h |
| 198 | 29.6 | Electrical rough in on 3rd | manual | 10d | 2024-10-28 A | 2024-11-08 | 193SS+3d | 80% | 2d | 2024-08-07 | 2024-08-20 | 10d | Kevin Farr-Jones | 80h | 64h |
| 199 | 29.7 | Electrical rough in hallways & stairwells on 3rd | manual | 10d | 2024-10-28 A | 2024-11-08 | 198FF | 80% | 2d | 2024-10-09 | 2024-10-15 | 5d | Kevin Farr-Jones | 80h | 64h |
| 200 | 29.8 | Sprinkler rough in on 3rd | manual | 10d | 2024-09-09 A | 2024-09-20 | 169, 170, 193 | 100% |  | 2024-08-07 | 2024-08-20 | 10d | Steve Ulrich | 80h | 80h |
| 201 | 29.9 | Sprinkler rough in hallways & stairwells on 3rd | manual | 10d | 2024-09-09 A | 2024-09-20 | 169, 170, 193 | 100% |  | 2024-10-09 | 2024-10-15 | 5d | Steve Ulrich | 80h | 80h |
| 202 | 29.10 | Mechanical rough in on 3rd | manual | 9d | 2024-10-28 A | 2024-11-07 | 193SS+3d | 99% | 0.09d | 2024-08-07 | 2024-08-20 | 10d | Brian Wimmer | 72h | 71.28h |
| 203 | 29.11 | Mechanical rough in hallways & stairwells on 3rd | manual | 9d | 2024-10-28 A | 2024-11-07 | 202FF | 99% | 0.09d | 2024-10-09 | 2024-10-15 | 5d | Brian Wimmer | 72h | 71.28h |
| 204 | 29.12 | Call for Mechanical and Electrical Inspection | manual | 1d | 2024-11-12 A | 2024-11-12 | 197FF, 198FF+2d, 199FF, 200FF, 201FF, 202FF, 203FF |  | 1d |  |  |  | Brian Wimmer; Kevin Farr-Jones; Steve Ulrich | 8h |  |
| 205 | 29.13 | Siding 3rd floor | manual | 11d | 2024-11-06 A | 2024-11-21 | 237 |  | 11d | 2024-10-23 | 2024-11-12 | 14d | Devender Singh | 88h |  |
| 206 | 29.14 | Assign siding checklist | manual | 1d | 2024-11-22 A | 2024-11-22 | 205 |  | 1d | 2024-11-13 | 2024-11-13 | 1d | Francois Allaire; Jignesh Parikh | 8h |  |
| 207 | 29.15 | Poly and insulate on 3rd exterior walls | manual | 4d | 2024-11-12 A | 2024-11-15 | 204FS-1d |  | 4d | 2024-10-16 | 2024-10-17 | 2d | Fabian Gracia | 32h |  |
| 208 | 29.16 | Board upper 16" strips in common area & all suites on 3rd | manual | 4d | 2024-09-11 A | 2024-09-16 | 193FS+3d | 100% |  | 2024-08-07 | 2024-08-07 | 1d | Steve Pauls | 32h | 32h |
| 209 | 29.17 | Fire tape / Fire caulk upper strips on 3rd | manual | 0d | 2024-11-11 A | 2024-11-11 | 197, 198, 199, 200, 201, 202, 203, 208 | 100% |  | 2024-08-08 | 2024-08-08 | 1d |  |  |  |
| 210 | 29.18 | Frame drops on 3rd | manual | 5d | 2024-11-12 A | 2024-11-18 | 209 | 100% |  | 2024-08-09 | 2024-08-09 | 1d | Steve Pauls | 40h | 40h |
| 211 | 29.19 | Back framing on 3rd | manual | 5d | 2024-09-10 A | 2024-09-16 | 193SS+7d | 100% |  | 2024-08-07 | 2024-08-13 | 5d | Francois Allaire | 40h | 40h |
| 212 | 29.20 | Assign pre board interior walls checklist | manual | 1d | 2024-11-15 A | 2024-11-15 | 207FF |  | 1d | 2024-08-21 | 2024-08-21 | 1d | Francois Allaire; Jignesh Parikh | 8h |  |
| 213 | 29.21 | Load boards on floor and Board 3rd floor walls | manual | 6d | 2024-11-15 A | 2024-11-22 | 212SS |  | 6d | 2024-08-22 | 2024-08-28 | 5d | Steve Pauls | 48h |  |
| 214 | 29.22 | Assign pre board inspection check list | manual | 1d | 2024-11-15 A | 2024-11-15 | 212SS |  | 1d | 2024-10-16 | 2024-10-16 | 1d | Francois Allaire; Jignesh Parikh | 8h |  |
| 215 | 29.23 | Load boards on floor and Board exterior walls on 3rd and sheds | manual | 6d | 2024-11-15 A | 2024-11-22 | 212SS |  | 6d | 2024-10-18 | 2024-10-24 | 5d | Steve Pauls | 48h |  |
| 216 | 29.24 | Tape suites on 3rd | manual | 10d | 2024-11-22 A | 2024-12-05 | 213FS-1d |  | 10d | 2024-09-20 | 2024-10-03 | 10d | Steve Pauls | 80h |  |
| 217 | 29.25 | Assign taping inspection checklist for suites | manual | 1d | 2024-12-05 A | 2024-12-05 | 216FF |  | 1d | 2024-10-04 | 2024-10-04 | 1d | Francois Allaire; Jignesh Parikh | 8h |  |
| 218 | 29.26 | Assign corridor & stairwell pre board inspection checklist | manual | 1d | 2024-11-12 A | 2024-11-12 | 207SS |  | 1d | 2024-10-16 | 2024-10-16 | 1d | Francois Allaire; Jignesh Parikh | 8h |  |
| 219 | 29.27 | Load the board on floor and Board 3rd floor hallways and stairwells | manual | 6d | 2024-11-15 A | 2024-11-22 | 212SS |  | 6d | 2024-10-17 | 2024-10-23 | 5d | Steve Pauls | 48h |  |
| 220 | 29.28 | Tape 3rd floor hallways and stair wells | manual | 10d | 2024-11-22 A | 2024-12-05 | 216SS |  | 10d | 2024-10-24 | 2024-10-30 | 5d | Steve Pauls | 80h |  |
| 221 | 29.29 | Assign taping inspection checklist | manual | 1d | 2024-12-05 A | 2024-12-05 | 217SS |  | 1d | 2024-10-31 | 2024-10-31 | 1d | Francois Allaire; Jignesh Parikh | 8h |  |
| 222 | 29.30 | Install suite entry doors and frames and Interior doors, trims and jambs | manual | 5d | 2024-12-09 A | 2024-12-13 | 220FS+1d |  | 5d | 2024-11-01 | 2024-11-07 | 5d | Andrei Baractari; Gheorghi Baractari | 40h |  |

| ID | WBS | Task | Type | Duration | Start | Finish | Predecessors | Complete | Remaining | Baseline start | Baseline finish | Baseline duration | Resources | Work | Actual work |
| --- | --- | --- | --- | --- | --- | --- | --- | --- | --- | --- | --- | --- | --- | --- | --- |
| 223 | 30 | **Rough in 4th floor** |  | 79d | 2024-08-19 | 2024-12-06 |  |  |  | 2024-10-16 | 2025-03-19 | 106d |  |  |  |
| 224 | 30.1 | Steel stud install on 4th & drywall behind the tubs including fire wall taping if it is a fire wall | manual | 7d | 2024-09-18 A | 2024-09-26 | 102, 103, 157, 162SS+10d, 193 | 100% |  | 2024-12-04 | 2024-12-10 | 5d | Steve Pauls | 56h | 56h |
| 225 | 30.2 | Install pocket door frames | manual | 5d | 2024-09-20 A | 2024-09-26 | 194, 224SS+2d | 100% |  |  |  |  | Francois Allaire | 40h | 40h |
| 226 | 30.3 | Call the surveyor to measure for condo plan | manual | 3d | 2024-10-29 A | 2024-10-31 | 224 |  | 3d |  |  |  |  | 24h |  |
| 227 | 30.4 | Install tubs and showers | manual | 2d | 2024-09-26 A | 2024-09-27 | 195, 224SS+6d | 100% |  | 2024-12-11 | 2024-12-13 | 3d | Francois Allaire | 16h | 16h |
| 228 | 30.5 | Water dams 4th floor | manual | 5d | 2024-08-19 A | 2024-08-23 | 112FF | 100% |  | 2024-10-23 | 2024-10-29 | 5d | Francois Allaire | 40h | 40h |
| 229 | 30.6 | Rough in exterior walls on 4th and sheds | manual | 9d | 2024-10-21 A | 2024-10-31 | 224SS+3d | 100% |  | 2024-10-16 | 2024-10-22 | 5d | Brian Wimmer; Kevin Farr-Jones | 72h | 72h |
| 230 | 30.7 | Electrical rough in on 4th | manual | 9d | 2024-10-21 A | 2024-10-31 | 224SS+3d | 100% |  | 2024-12-11 | 2024-12-24 | 9d | Kevin Farr-Jones | 72h | 72h |
| 231 | 30.8 | Electrical rough in hallways stairwells on 4th | manual | 9d | 2024-10-21 A | 2024-10-31 | 224SS+3d | 100% |  | 2025-02-20 | 2025-02-26 | 5d | Kevin Farr-Jones | 72h | 72h |
| 232 | 30.9 | Sprinkler rough in on 4th | manual | 6d | 2024-09-23 A | 2024-09-30 | 224SS+3d | 100% |  | 2024-12-11 | 2024-12-24 | 9d | Steve Ulrich | 48h | 48h |
| 233 | 30.10 | Sprinkler rough in hallways stairwells on 4th | manual | 6d | 2024-09-23 A | 2024-09-30 | 224SS+3d | 100% |  | 2025-02-20 | 2025-02-26 | 5d | Steve Ulrich | 48h | 48h |
| 234 | 30.11 | Mechanical rough in on 4th | manual | 5d | 2024-10-21 A | 2024-10-25 |  | 100% |  | 2024-12-11 | 2024-12-24 | 9d | Brian Wimmer | 40h | 40h |
| 235 | 30.12 | Mechanical rough in hallways stairwells on 4th | manual | 5d | 2024-10-21 A | 2024-10-25 |  | 100% |  | 2025-02-20 | 2025-02-26 | 5d | Brian Wimmer | 40h | 40h |
| 236 | 30.13 | Call for Electrical and Mechanical inspection | manual | 1d | 2024-10-31 A | 2024-10-31 | 230FF, 231FF, 232FF, 233FF, 234FF, 235FF | 100% |  |  |  |  | Brian Wimmer; Kevin Farr-Jones; Steve Ulrich | 8h | 8h |
| 237 | 30.14 | Siding 4th floor | manual | 12d | 2024-10-21 A | 2024-11-05 |  |  | 12d | 2024-10-30 | 2024-11-19 | 14d | Devender Singh | 96h |  |
| 238 | 30.15 | Assign siding checklist | manual | 1d | 2024-11-06 A | 2024-11-06 | 237 |  | 1d | 2024-11-20 | 2024-11-20 | 1d | Francois Allaire; Jignesh Parikh | 8h |  |
| 239 | 30.16 | 4th floor framing inspection | manual | 1d | 2024-11-04 A | 2024-11-04 |  | 100% |  |  |  |  |  | 8h | 8h |
| 240 | 30.17 | Poly and insulate on 4th exterior walls | manual | 3d | 2024-11-05 A | 2024-11-07 | 239 |  | 3d | 2024-10-23 | 2024-10-24 | 2d | Fabian Gracia | 24h |  |
| 241 | 30.18 | Board upper 16" strips in common area and all suites on 4th | manual | 4d | 2024-09-27 A | 2024-10-02 | 224 | 100% |  | 2024-12-12 | 2024-12-12 | 1d | Steve Pauls | 32h | 32h |
| 242 | 30.19 | Fire tape / Fire caulk upper strips on 4th | manual | 1d | 2024-11-01 A | 2024-11-01 | 230, 231, 232, 233, 234, 235 | 100% |  | 2024-12-12 | 2024-12-12 | 1d |  | 8h | 8h |
| 243 | 30.20 | Frame drops on 4th | manual | 5d | 2024-11-29 A | 2024-12-05 | 242, 258FS+2d | 100% |  | 2024-12-12 | 2024-12-12 | 1d | Steve Pauls | 40h | 40h |
| 244 | 30.21 | Back framing on 4th | manual | 5d | 2024-09-23 A | 2024-09-27 | 224SS+3d | 100% |  | 2024-12-11 | 2024-12-17 | 5d | Francois Allaire | 40h | 40h |
| 245 | 30.22 | Assign pre board interior walls checklist | manual | 1d | 2024-11-08 A | 2024-11-08 | 240FF+1d |  | 1d | 2024-12-25 | 2024-12-25 |  | Francois Allaire; Jignesh Parikh | 8h |  |
| 246 | 30.23 | Load the board on floor and Board 4th floor walls | manual | 5d | 2024-11-08 A | 2024-11-15 | 245FS-1d |  | 5d | 2024-12-26 | 2025-01-08 | 8d | Steve Pauls | 40h |  |
| 247 | 30.24 | Assign exterior wall pre board inspection check list | manual | 1d | 2024-11-08 A | 2024-11-08 | 245SS |  | 1d | 2024-10-23 | 2024-10-23 | 1d | Francois Allaire; Jignesh Parikh | 8h |  |
| 248 | 30.25 | Load the board on floor and Board exterior walls on 4th and sheds | manual | 5d | 2024-11-08 A | 2024-11-15 | 245FS-1d |  | 5d | 2024-10-25 | 2024-10-31 | 5d | Steve Pauls | 40h |  |
| 249 | 30.26 | Tape suites on 4th | manual | 10d | 2024-11-15 A | 2024-11-28 | 248FS-1d |  | 10d | 2025-02-03 | 2025-02-14 | 10d | Steve Pauls | 80h |  |
| 250 | 30.27 | Assign taping inspection checklist | manual | 1d | 2024-11-15 A | 2024-11-15 | 248FF |  | 1d | 2025-02-17 | 2025-02-17 | 1d | Francois Allaire; Jignesh Parikh | 8h |  |
| 251 | 30.28 | Assign Corridor & Stairwell pre board inspection checklist | manual | 1d | 2024-11-08 A | 2024-11-08 | 247SS |  | 1d | 2025-02-27 | 2025-02-27 | 1d | Francois Allaire; Jignesh Parikh | 8h |  |
| 252 | 30.29 | Load the board on floor and Board 4th floor hallways and stairwells | manual | 5d | 2024-11-08 A | 2024-11-15 | 251FS-1d |  | 5d | 2025-02-28 | 2025-03-06 | 5d | Steve Pauls | 40h |  |
| 253 | 30.30 | Tape 4th floor hallways and stair wells | manual | 10d | 2024-11-15 A | 2024-11-28 | 249SS |  | 10d | 2025-03-07 | 2025-03-13 | 5d | Steve Pauls | 80h |  |
| 254 | 30.31 | Assign taping inspection checklist | manual | 1d | 2024-11-28 A | 2024-11-28 | 253FF |  | 1d | 2025-03-14 | 2025-03-14 | 1d | Francois Allaire; Jignesh Parikh | 8h |  |
| 255 | 30.32 | Install suite entry doors and frames and Interior doors, trims and jambs | manual | 5d | 2024-12-02 A | 2024-12-06 | 254FS+1d |  | 5d | 2025-03-17 | 2025-03-19 | 3d | Andrei Baractari; Gheorghi Baractari | 40h |  |

| ID | WBS | Task | Type | Duration | Start | Finish | Predecessors | Complete | Remaining | Baseline start | Baseline finish | Baseline duration | Resources | Work | Actual work |
| --- | --- | --- | --- | --- | --- | --- | --- | --- | --- | --- | --- | --- | --- | --- | --- |
| 256 | 31 | **Gypcrete** |  | 2d | 2024-11-25 | 2024-11-26 |  |  |  |  |  |  |  |  |  |
| 257 | 31.1 | Assign gypcrete pour checklist | manual | 1d | 2024-11-25 A | 2024-11-25 | 162, 167, 168, 169, 170, 171, 172, 193, 198, 199, 200, 201, 202, 203, 224, 230, 231, 232, 233, 234, 235 | 100% |  |  |  |  | Francois Allaire; Jignesh Parikh | 8h | 8h |
| 258 | 31.2 | Pour Gypcrete | manual | 2d | 2024-11-25 A | 2024-11-26 | 257SS | 100% |  |  |  |  | Jason Zwilling | 16h | 16h |
| 259 | 32 | **4.4 Finishing** |  | 187d | 2024-08-09 | 2025-05-05 |  |  |  | 2024-09-19 | 2025-05-09 | 162d |  |  |  |
| 260 | 33 | **2nd floor finishing** |  | 51d | 2024-12-16 | 2025-02-28 |  |  |  | 2024-09-19 | 2025-01-03 | 72d |  |  |  |
| 261 | 33.1 | Ceiling texture on 2nd | manual | 2d | 2024-12-16 A | 2024-12-17 | 185SS+7d |  | 2d | 2024-09-26 | 2024-10-02 | 5d | Steve Pauls | 16h |  |
| 262 | 33.2 | Prime paint on 2nd | manual | 4d | 2024-12-18 A | 2024-12-23 | 185FS-2d, 189FS-2d |  | 4d | 2024-09-19 | 2024-09-25 | 5d | Kieth Yung | 32h |  |
| 263 | 33.3 | 2nd floor - Taper do the rectification of deficiences | manual | 1d | 2024-12-23 A | 2024-12-23 | 262FF |  | 1d |  |  |  | Steve Pauls | 8h |  |
| 264 | 33.4 | Install interior doors and case on 2nd | manual | 6d | 2024-12-23 A | 2025-01-03 | 262FS-1d |  | 6d | 2024-10-03 | 2024-10-16 | 10d | Andrei Baractari; Gheorghi Baractari | 48h |  |
| 265 | 33.5 | Paint 1st coat of color 2nd floor | manual | 5d | 2024-12-27 A | 2025-01-03 | 264FS-6d |  | 5d | 2024-10-22 | 2024-11-04 | 10d | Kieth Yung | 40h |  |
| 266 | 33.6 | Install flooring 2nd floor | manual | 7d | 2025-01-08 A | 2025-01-16 | 265FS-1d, 285 |  | 7d | 2024-11-05 | 2024-11-11 | 4d | Dean Lucier | 56h |  |
| 267 | 33.7 | Install cabinets 2nd floor | manual | 5d | 2025-01-13 A | 2025-01-17 | 266FS-6d, 286 |  | 5d | 2024-11-12 | 2024-11-18 | 5d | Jennifer Friesen | 40h |  |
| 268 | 33.8 | 2nd floor counter top measurement for template | manual | 3d | 2025-01-16 A | 2025-01-20 | 267FS-2d |  | 3d |  |  |  |  | 24h |  |
| 269 | 33.9 | Manufacturing and Install countertops 2nd floor | manual | 14d | 2025-01-21 A | 2025-02-07 | 268 |  | 14d | 2024-11-19 | 2024-11-25 | 5d | Jemma Mendoza | 112h |  |
| 270 | 33.10 | Install base and hardware 2nd floor | manual | 6d | 2025-01-17 A | 2025-01-24 | 268SS+1d |  | 6d | 2024-11-26 | 2024-12-09 | 10d | Andrei Baractari; Gheorghi Baractari | 48h |  |
| 271 | 33.11 | Mechanical finishing 2nd floor | manual | 5d | 2025-02-07 A | 2025-02-13 | 269FS-1d |  | 5d | 2024-12-10 | 2024-12-23 | 10d | Brian Wimmer | 40h |  |
| 272 | 33.12 | Electrical finishing 2nd floor | manual | 5d | 2025-02-07 A | 2025-02-13 | 269FS-1d |  | 5d | 2024-12-10 | 2024-12-23 | 10d | Kevin Farr-Jones | 40h |  |
| 273 | 33.13 | Sprinkler finishing 2nd floor | manual | 5d | 2025-02-07 A | 2025-02-13 | 269FS-1d |  | 5d | 2024-12-10 | 2024-12-23 | 10d | Steve Pauls | 40h |  |
| 274 | 33.14 | Final coat of paint | manual | 9d | 2025-02-13 A | 2025-02-25 | 271FS-1d, 272FS-1d, 273FS-1d |  | 9d |  |  |  |  | 72h |  |
| 275 | 33.15 | Construction clean 2nd floor | manual | 4d | 2025-02-24 A | 2025-02-27 | 274FS-2d |  | 4d | 2024-12-24 | 2024-12-30 | 2d |  | 32h |  |
| 276 | 33.16 | Assign Unit Commissioning Inspection list 2nd floor | manual | 1d | 2025-02-27 A | 2025-02-27 | 275FF |  | 1d | 2024-12-31 | 2024-12-31 | 1d | Francois Allaire; Jignesh Parikh | 8h |  |
| 277 | 33.17 | Final suite clean | manual | 2d | 2025-02-27 A | 2025-02-28 | 276FS-1d |  | 2d | 2025-01-01 | 2025-01-03 | 2d |  | 16h |  |
| 278 | 34 | **3rd floor finishing** |  | 53d | 2024-12-02 | 2025-02-18 |  |  |  | 2024-10-04 | 2025-01-02 | 60d |  |  |  |
| 279 | 34.1 | Ceiling texture on 3rd | manual | 2d | 2024-12-02 A | 2024-12-03 | 216SS+6d |  | 2d | 2024-10-11 | 2024-10-15 | 3d | Steve Pauls | 16h |  |
| 280 | 34.2 | Prime paint on 3rd | manual | 4d | 2024-12-05 A | 2024-12-10 | 216FS-1d |  | 4d | 2024-10-04 | 2024-10-10 | 5d | Kieth Yung | 32h |  |
| 281 | 34.3 | 3rd floor - Taper do the rectification of deficiencies | manual | 1d | 2024-12-10 A | 2024-12-10 | 280FF |  | 1d |  |  |  | Steve Pauls | 8h |  |
| 282 | 34.4 | Install interior doors and case on 3rd | manual | 5d | 2024-12-09 A | 2024-12-13 | 280FS-2d |  | 5d | 2024-10-16 | 2024-10-29 | 10d | Andrei Baractari; Gheorghi Baractari | 40h |  |
| 283 | 34.5 | Paint 1st coat of color on 3rd | manual | 4d | 2024-12-12 A | 2024-12-17 | 282FS-2d |  | 4d | 2024-11-06 | 2024-11-19 | 9d | Kieth Yung | 32h |  |
| 284 | 34.6 | Spray out closet interiors and trim on 3rd | manual | 4d | 2024-12-12 A | 2024-12-17 | 282FS-2d |  | 4d | 2024-10-30 | 2024-11-05 | 5d | Kieth Yung | 32h |  |
| 285 | 34.7 | Install flooring on 3rd | manual | 12d | 2024-12-17 A | 2025-01-07 | 283FS-3d, 304 |  | 12d | 2024-11-20 | 2024-11-26 | 5d | Dean Lucier | 96h |  |
| 286 | 34.8 | Install cabinets on 3rd | manual | 14d | 2024-12-18 A | 2025-01-10 | 285SS+1d |  | 14d | 2024-11-27 | 2024-12-03 | 5d | Jennifer Friesen | 112h |  |
| 287 | 34.9 | 3rd floor counter top measurement for template | manual | 3d | 2025-01-08 A | 2025-01-10 | 286FF |  | 3d |  |  |  | Jemma Mendoza; Matilda Blackburn | 24h |  |
| 288 | 34.10 | Manufacturing and Install countertops on 3rd | manual | 14d | 2025-01-10 A | 2025-01-29 | 287FS-1d |  | 14d | 2024-12-04 | 2024-12-06 | 3d | Jemma Mendoza | 112h |  |
| 289 | 34.11 | Install base and hardware on 3rd | manual | 4d | 2025-01-08 A | 2025-01-13 | 287FS-3d |  | 4d | 2024-12-09 | 2024-12-20 | 10d | Andrei Baractari; Gheorghi Baractari | 32h |  |
| 290 | 34.12 | Mechanical finishing on 3rd | manual | 5d | 2025-01-29 A | 2025-02-04 | 288FS-1d |  | 5d | 2024-12-09 | 2024-12-20 | 10d | Brian Wimmer | 40h |  |
| 291 | 34.13 | Electrical finishing on 3rd | manual | 5d | 2025-01-29 A | 2025-02-04 | 288FS-1d |  | 5d | 2024-12-09 | 2024-12-20 | 10d | Kevin Farr-Jones | 40h |  |
| 292 | 34.14 | Sprinkler finishing on 3rd | manual | 5d | 2025-01-29 A | 2025-02-04 | 288FS-1d |  | 5d | 2024-12-09 | 2024-12-20 | 10d | Steve Ulrich | 40h |  |
| 293 | 34.15 | Final coat of paint | manual | 9d | 2025-02-03 A | 2025-02-13 | 290FS-2d, 291FS-2d |  | 9d |  |  |  | Kieth Yung | 72h |  |
| 294 | 34.16 | Construction clean on 3rd | manual | 5d | 2025-02-11 A | 2025-02-17 | 293FS-3d |  | 5d | 2024-12-23 | 2024-12-27 | 2d |  | 40h |  |
| 295 | 34.17 | Assign Unit Commissioning Inspection list on 3rd | manual | 1d | 2025-02-17 A | 2025-02-17 | 294FF |  | 1d | 2024-12-30 | 2024-12-30 | 1d | Francois Allaire; Jignesh Parikh | 8h |  |
| 296 | 34.18 | Final suite clean on 3rd | manual | 2d | 2025-02-17 A | 2025-02-18 | 294FS-1d |  | 2d | 2024-12-31 | 2025-01-02 | 2d |  | 16h |  |

Notes:
- 276: Go to

| ID | WBS | Task | Type | Duration | Start | Finish | Predecessors | Remaining | Baseline start | Baseline finish | Baseline duration | Resources | Work |
| --- | --- | --- | --- | --- | --- | --- | --- | --- | --- | --- | --- | --- | --- |
| 297 | 35 | **finishing on 4th** |  | 51d | 2024-11-26 | 2025-02-10 |  |  | 2025-02-17 | 2025-05-09 | 60d |  |  |
| 298 | 35.1 | Ceiling texture on 4th | manual | 2d | 2024-11-26 A | 2024-11-27 | 249SS+7d | 2d | 2025-02-24 | 2025-02-28 | 5d | Steve Pauls | 16h |
| 299 | 35.2 | Prime paint on 4th | manual | 4d | 2024-11-28 A | 2024-12-03 | 249FS-1d, 298 | 4d | 2025-02-17 | 2025-02-21 | 5d | Kieth Yung | 32h |
| 300 | 35.3 | 4th floor - Taper do the rectification of deficiencies | manual | 2d | 2024-12-02 A | 2024-12-03 | 299FF | 2d |  |  |  | Steve Pauls | 16h |
| 301 | 35.4 | Install interior doors and case on 4th | manual | 5d | 2024-12-02 A | 2024-12-06 | 300FS-2d | 5d | 2025-03-03 | 2025-03-14 | 10d | Andrei Baractari; Gheorghi Baractari | 40h |
| 302 | 35.5 | Paint 1st coat of color on 4th | manual | 4d | 2024-12-05 A | 2024-12-10 | 255FS-2d | 4d | 2025-03-20 | 2025-03-26 | 5d | Kieth Yung | 32h |
| 303 | 35.6 | Spray out closet interiors and trim on 4th | manual | 4d | 2024-12-05 A | 2024-12-10 | 302SS | 4d | 2025-03-17 | 2025-03-19 | 3d | Kieth Yung | 32h |
| 304 | 35.7 | Install flooring on 4th | manual | 6d | 2024-12-09 A | 2024-12-16 | 303FS-2d | 6d | 2025-03-27 | 2025-04-02 | 5d | Dean Lucier | 48h |
| 305 | 35.8 | Install cabinets on 4th | manual | 6d | 2024-12-11 A | 2024-12-18 | 304FS-4d | 6d | 2025-04-03 | 2025-04-09 | 5d | Jennifer Friesen | 48h |
| 306 | 35.9 | 4th floor counter top measurements for template | manual | 3d | 2024-12-17 A | 2024-12-19 | 305FF+1d | 3d |  |  |  | Jemma Mendoza | 24h |
| 307 | 35.10 | Install base and hardware on 4th | manual | 7d | 2024-12-20 A | 2025-01-03 | 306 | 7d | 2025-04-15 | 2025-04-28 | 10d | Andrei Baractari; Gheorghi Baractari | 56h |
| 308 | 35.11 | manufacturing and Install countertops on 4th | manual | 14d | 2025-01-02 A | 2025-01-21 | 306FS+9d | 14d | 2025-04-10 | 2025-04-14 | 3d | Jemma Mendoza | 112h |
| 309 | 35.12 | Mechanical finishing on 4th | manual | 5d | 2025-01-21 A | 2025-01-27 | 308FS-1d | 5d | 2025-04-15 | 2025-04-28 | 10d | Brian Wimmer | 40h |
| 310 | 35.13 | Electrical finishing on 4th | manual | 5d | 2025-01-21 A | 2025-01-27 | 308FS-1d | 5d | 2025-04-15 | 2025-04-28 | 10d | Kevin Farr-Jones | 40h |
| 311 | 35.14 | Sprinkler finishing on 4th | manual | 5d | 2025-01-21 A | 2025-01-27 | 308FS-1d | 5d | 2025-04-15 | 2025-04-28 | 10d | Steve Ulrich | 40h |
| 312 | 35.15 | Final coat of paint | manual | 9d | 2025-01-24 A | 2025-02-05 | 309FS-2d, 310FS-2d, 311FS-2d | 9d |  |  |  | Kieth Yung | 72h |
| 313 | 35.16 | Construction clean on 4th | manual | 5d | 2025-02-03 A | 2025-02-07 | 312FS-3d | 5d | 2025-04-29 | 2025-05-05 | 5d |  | 40h |
| 314 | 35.17 | Assign Unit Commissioning Inspection list on 4th | manual | 1d | 2025-02-07 A | 2025-02-07 | 313FS-1d | 1d | 2025-05-06 | 2025-05-06 | 1d | Francois Allaire; Jignesh Parikh | 8h |
| 315 | 35.18 | Final suite clean on 4th | manual | 2d | 2025-02-07 A | 2025-02-10 | 313FS-1d | 2d | 2025-05-07 | 2025-05-09 | 3d |  | 16h |
| 316 | 36 | **finishing parkade level 1** |  | 38d | 2025-01-02 | 2025-02-24 |  |  | 2025-02-24 | 2025-03-31 | 26d |  |  |
| 317 | 36.1 | Ceiling texture on 1 | manual | 2d | 2025-01-02 A | 2025-01-03 | 147FS+7d | 2d | 2025-02-27 | 2025-03-03 | 3d | Steve Pauls | 16h |
| 318 | 36.2 | Prime paint on 1 | manual | 3d | 2025-01-03 A | 2025-01-07 | 317FS-1d | 3d | 2025-02-24 | 2025-02-26 | 3d |  | 24h |
| 319 | 36.3 | Parkade - Taper to rectify deficiencies | manual | 1d | 2025-01-07 A | 2025-01-07 | 318FS-1d | 1d |  |  |  |  | 8h |
| 320 | 36.4 | Install interior doors and case on 1 | manual | 2d | 2025-01-08 A | 2025-01-09 | 318 | 2d | 2025-03-04 | 2025-03-05 | 2d |  | 16h |
| 321 | 36.5 | Paint 1rst coat of color on 1 | manual | 5d | 2025-01-10 A | 2025-01-16 | 320 | 5d | 2025-03-07 | 2025-03-11 | 3d |  | 40h |
| 322 | 36.6 | Spray out closet interiors and trim on 1 | manual | 1d | 2025-01-10 A | 2025-01-10 | 321SS | 1d | 2025-03-06 | 2025-03-06 | 1d |  | 8h |
| 323 | 36.7 | Install flooring on 1 | manual | 2d | 2025-01-15 A | 2025-01-16 | 321FS-2d | 2d | 2025-03-12 | 2025-03-13 | 2d | Dean Lucier | 16h |
| 324 | 36.8 | Install cabinets on 1 | manual | 2d | 2025-01-17 A | 2025-01-20 | 323 | 2d | 2025-03-14 | 2025-03-14 | 1d | Jennifer Friesen | 16h |
| 325 | 36.9 | Parkade - Measurement for template | manual | 1d | 2025-01-21 A | 2025-01-21 | 324 | 1d |  |  |  |  | 8h |
| 326 | 36.10 | Install countertops on 1 | manual | 1d | 2025-02-10 A | 2025-02-10 | 324FS+14d | 1d | 2025-03-17 | 2025-03-17 | 1d | Jemma Mendoza | 8h |
| 327 | 36.11 | Mechanical finishing on 1 | manual | 3d | 2025-02-11 A | 2025-02-13 | 326 | 3d | 2025-03-18 | 2025-03-20 | 3d | Brian Wimmer | 24h |
| 328 | 36.12 | Electrical finishing on 1 | manual | 3d | 2025-02-11 A | 2025-02-13 | 326 | 3d | 2025-03-18 | 2025-03-20 | 3d | Kevin Farr-Jones | 24h |
| 329 | 36.13 | Sprinkler finishing on 1 | manual | 3d | 2025-02-11 A | 2025-02-13 | 326 | 3d | 2025-03-18 | 2025-03-20 | 3d | Steve Ulrich | 24h |
| 330 | 36.14 | Construction clean on 1 | manual | 3d | 2025-02-14 A | 2025-02-18 | 329 | 3d | 2025-03-21 | 2025-03-25 | 3d |  | 24h |
| 331 | 36.15 | Assign Unit Commissioning Inspection list on 1 | manual | 1d | 2025-02-19 A | 2025-02-19 | 330 | 1d | 2025-03-26 | 2025-03-26 | 1d | Francois Allaire; Jignesh Parikh | 8h |
| 332 | 36.16 | Final suite clean on 1 | manual | 3d | 2025-02-20 A | 2025-02-24 | 331 | 3d | 2025-03-27 | 2025-03-31 | 3d |  | 24h |

| ID | WBS | Task | Type | Duration | Start | Finish | Predecessors | Complete | Remaining | Baseline start | Baseline finish | Baseline duration | Resources | Work | Actual work |
| --- | --- | --- | --- | --- | --- | --- | --- | --- | --- | --- | --- | --- | --- | --- | --- |
| 333 | 37 | **Exterior** |  | 187d | 2024-08-09 | 2025-05-05 |  |  |  | 2024-10-03 | 2024-12-09 | 47d |  |  |  |
| 334 | 37.1 | Grind all balconys smooth | manual | 10d | 2024-08-09 A | 2024-08-22 |  | 100% |  | 2024-10-03 | 2024-10-09 | 5d | Francois Allaire | 80h | 80h |
| 335 | 37.2 | Install exterior decking all floors | manual | 10d | 2024-09-03 A | 2024-09-16 | 334FS+7d | 100% |  | 2024-10-10 | 2024-10-23 | 10d | Dean Lucier | 80h | 80h |
| 336 | 37.3 | Assign post decking install check list | manual | 1d | 2024-09-17 A | 2024-09-17 | 335 | 100% |  | 2024-10-24 | 2024-10-24 | 1d | Francois Allaire; Jignesh Parikh | 8h | 8h |
| 337 | 37.4 | Install railings on all floors | manual | 14d | 2025-01-20 A | 2025-02-06 | 267 |  | 14d | 2024-10-24 | 2024-11-06 | 10d |  | 112h |  |
| 338 | 37.5 | Rough grade landscaping | manual | 5d | 2025-04-04 A | 2025-04-10 | 337FS+40d |  | 5d | 2024-11-07 | 2024-11-13 | 4d |  | 40h |  |
| 339 | 37.6 | Install underground sprinklers | manual | 5d | 2025-04-11 A | 2025-04-17 | 338 |  | 5d | 2024-11-14 | 2024-11-20 | 5d |  | 40h |  |
| 340 | 37.7 | Install landscaping | manual | 10d | 2025-04-18 A | 2025-05-01 | 339 |  | 10d | 2024-11-21 | 2024-12-04 | 10d |  | 80h |  |
| 341 | 37.8 | Commision landscaping | manual | 2d | 2025-05-02 A | 2025-05-05 | 340 |  | 2d | 2024-12-05 | 2024-12-06 | 2d |  | 16h |  |
| 342 | 37.9 | Install building signage | manual | 1d | 2025-02-28 A | 2025-02-28 | 277FF |  | 1d | 2024-12-09 | 2024-12-09 | 1d |  | 8h |  |
| 343 | 37.10 | Assign post landscaping checklist | manual | 1d | 2025-05-02 A | 2025-05-02 | 340 |  | 1d |  |  |  |  | 8h |  |
| 344 | 38 | **Final commissioning and deficiency** |  | 12d | 2025-02-14 | 2025-03-03 |  |  |  | 2025-03-21 | 2025-04-10 | 15d |  |  |  |
| 345 | 38.1 | Fire alarm verification | manual | 2d | 2025-02-14 A | 2025-02-17 | 272, 291, 310, 328 |  | 2d | 2025-03-21 | 2025-03-24 | 2d |  | 16h |  |
| 346 | 38.2 | Contact Canada Post to get the address's created | manual | 1d | 2025-02-14 A | 2025-02-14 | 328 |  | 1d | 2025-03-21 | 2025-03-21 | 1d |  | 8h |  |
| 347 | 38.3 | Enginering walk throughs | manual | 2d | 2025-02-19 A | 2025-02-20 | 290, 291, 292, 309, 310, 311, 328, 329, 330, 345 |  | 2d | 2025-03-21 | 2025-03-26 | 4d |  | 16h |  |
| 348 | 38.4 | Organize 3rd party building exterior review, including roof, siding and flashings | manual | 1d | 2025-02-19 A | 2025-02-19 | 347SS |  | 1d | 2025-03-21 | 2025-03-21 | 1d |  | 8h |  |
| 349 | 38.5 | Sprinkler testing | manual | 2d | 2025-02-14 A | 2025-02-17 | 345SS |  | 2d | 2025-03-21 | 2025-03-24 | 2d | Steve Ulrich | 16h |  |
| 350 | 38.6 | Archetectural walk throughs | manual | 2d | 2025-02-19 A | 2025-02-20 | 347SS |  | 2d | 2025-03-21 | 2025-03-24 | 2d |  | 16h |  |
| 351 | 38.7 | Building inspector walk throughs | manual | 2d | 2025-02-21 A | 2025-02-24 | 347, 350 |  | 2d | 2025-03-21 | 2025-03-24 | 2d |  | 16h |  |
| 352 | 38.8 | Elevator commissioning | manual | 2d | 2025-02-14 A | 2025-02-17 | 328 |  | 2d | 2025-03-21 | 2025-03-24 | 2d | Ailyn Sambrano | 16h |  |
| 353 | 38.9 | Prepare occupancy paperwork | manual | 2d | 2025-02-25 A | 2025-02-26 | 351 |  | 2d | 2025-03-21 | 2025-03-31 | 7d |  | 16h |  |
| 354 | 38.10 | Receive occupancy | manual | 2d | 2025-02-27 A | 2025-02-28 | 353 |  | 2d | 2025-04-01 | 2025-04-09 | 7d |  | 16h |  |
| 355 | 38.11 | Move in dates confirmed | manual | 1d | 2025-03-03 A | 2025-03-03 | 277, 332, 354 |  | 1d | 2025-04-10 | 2025-04-10 | 1d |  | 8h |  |
| 356 | 38.12 | Assign Final Building Checklist | manual | 1d | 2025-03-03 A | 2025-03-03 | 354 |  | 1d | 2025-04-10 | 2025-04-10 | 1d |  | 8h |  |

| ID | WBS | Task | Type | Duration | Start | Finish | Predecessors | Remaining | Baseline start | Baseline finish | Baseline duration | Work |
| --- | --- | --- | --- | --- | --- | --- | --- | --- | --- | --- | --- | --- |
| 357 | 39 | **5.0 Sales, Occupancy, Closings** |  | 44d | 2025-03-03 | 2025-05-01 |  |  | 2024-09-13 | 2025-05-05 | 162d |  |
| 358 | 39.1 | Pre sale move in dates confirmed | manual | 1d | 2025-03-03 A | 2025-03-03 | 354 | 1d | 2024-09-13 | 2024-09-13 | 1d | 8h |
| 359 | 39.2 | Finalize home owner extras | manual | 5d | 2025-03-04 A | 2025-03-10 | 358 | 5d | 2024-09-16 | 2024-09-20 | 5d | 40h |
| 360 | 39.3 | Load home owners into copper | manual | 1d | 2025-03-04 A | 2025-03-04 | 358 | 1d | 2024-09-16 | 2024-09-16 | 1d | 8h |
| 361 | 39.4 | Move in binders created | manual | 5d | 2025-03-04 A | 2025-03-10 | 358 | 5d | 2024-09-16 | 2024-09-20 | 5d | 40h |
| 362 | 39.5 | Update home owner permissions in Construction online | manual | 1d | 2025-03-04 A | 2025-03-04 | 358 | 1d | 2024-09-16 | 2024-09-16 | 1d | 8h |
| 363 | 39.6 | Unit Commissioning Inspection list | manual | 5d | 2025-03-04 A | 2025-03-10 | 358 | 5d | 2024-09-16 | 2024-09-20 | 5d | 40h |
| 364 | 39.7 | Unit Commissioning deficiency clean up confirmed | manual | 5d | 2025-03-11 A | 2025-03-17 | 363 | 5d | 2024-09-23 | 2024-09-27 | 5d | 40h |
| 365 | 39.8 | Building close out check list | manual | 1d | 2025-03-04 A | 2025-03-04 | 358 | 1d | 2024-09-16 | 2024-09-16 | 1d | 8h |
| 366 | 39.9 | Building close out cleanup deficiencies confirmed | manual | 5d | 2025-03-05 A | 2025-03-11 | 365 | 5d | 2024-09-17 | 2024-09-23 | 5d | 40h |
| 367 | 39.10 | Building handover (PM to SM) checklist | manual | 5d | 2025-03-04 A | 2025-03-10 | 358 | 5d | 2024-09-16 | 2024-09-20 | 5d | 40h |
| 368 | 39.11 | De mobilization (checklist) | manual | 5d | 2025-03-05 A | 2025-03-11 | 365 | 5d | 2024-09-17 | 2024-09-23 | 5d | 40h |
| 369 | 39.12 | Keys and gift cards and welcome package created | manual | 5d | 2025-03-04 A | 2025-03-10 | 358 | 5d | 2024-09-16 | 2024-09-20 | 5d | 40h |
| 370 | 39.13 | Home owner walk through and punch list | manual | 1d | 2025-03-11 A | 2025-03-11 | 363 | 1d | 2024-09-23 | 2024-09-23 | 1d | 8h |
| 371 | 39.14 | Home owner walk through punch list clean up | manual | 5d | 2025-03-12 A | 2025-03-18 | 370 | 5d | 2024-09-24 | 2024-09-30 | 5d | 40h |
| 372 | 39.15 | New move ins and warranty through service manager | manual | 43d | 2025-03-04 A | 2025-05-01 | 358 | 43d | 2024-09-16 | 2024-12-06 | 59d | 344h |
| 373 | 39.16 | Send out contractor surveys | manual | 1d | 2025-03-05 A | 2025-03-05 | 365 | 1d | 2025-04-25 | 2025-04-25 | 1d | 8h |
| 374 | 39.17 | Schedule 1 on 1 contractor review meetings | manual | 5d | 2025-03-06 A | 2025-03-12 | 373 | 5d | 2025-04-28 | 2025-05-02 | 5d | 40h |
| 375 | 39.18 | Schedule contractor group meeting to review survey results | manual | 5d | 2025-03-06 A | 2025-03-12 | 373 | 5d | 2025-04-28 | 2025-05-02 | 5d | 40h |
| 376 | 39.19 | Project post mordem internal | manual | 1d | 2025-03-13 A | 2025-03-13 | 375 | 1d | 2025-05-05 | 2025-05-05 | 1d | 8h |
| 377 | 39.20 | Move info to Dev co work flow 1.0, 2.0, 6.0 | manual | 1d | 2025-03-18 A | 2025-03-18 | 364, 367 | 1d | 2024-12-09 | 2024-12-09 | 1d | 8h |
